# 1_Projeto Votorantim_Gestão de Metas e Competências_v4

Schedule from MS Project, 2015-02-09 to 2015-07-24, status date 2015-04-02, costs in R$, A marks actual dates.
CPM Braxis

## Calendars

- Padrão: Mon-Fri 09:00-12:00, 13:00-18:00; Sat-Sun off. Exceptions (off unless hours are given): 2015-03-09 to 2015-03-20 (Congelamento das Instâncias), 2015-04-03 (Sexta-feira da Paixão), 2015-04-20 (Ponte Tiradentes), 2015-04-21 (Tiradentes), 2015-05-01 (Dia do Trabalho), 2015-06-04 (Corpus Christi), 2015-06-05 (Ponte Corpus Christi).

## Resources

| Resource | Rate |
| --- | --- |
| Leonardo | 1 |
| Rodney | 1 |
| HRST 1 | 1 |
| HRST 2 | 1 |
| HRST 3 | 1 |
| HRST 4 | 1 |
| ABAP 1 | 1 |
| ABAP 2 | 1 |
| Juraci Silva | 1 |
| VS | 1 |
| VM | 1 |
| VID São Paulo | 1 |
| VID Curitiba | 1 |
| VE | 1 |
| TI Votorantim | 1 |
| HRST | 1 |
| ABAP | 1 |

## Schedule

| ID | WBS | Task | Type | Duration | Start | Finish | Predecessors | Complete | Remaining | Baseline start | Baseline finish | Baseline duration | Total slack | Free slack | Constraint | Resources | Work | Actual work | Cost | Baseline cost | Actual cost | % Planejado | % Realizado | .SPI. |
| --- | --- | --- | --- | --- | --- | --- | --- | --- | --- | --- | --- | --- | --- | --- | --- | --- | --- | --- | --- | --- | --- | --- | --- | --- |
| 1 | 1 | **Projeto Metas e Competência SuccessFactors** |  | 104d | 2015-02-09 A | 2015-07-24 |  | 13% | 90.77d | 2015-02-09 | 2015-07-24 | 104d | 0d |  |  |  | 4972h | 481.2h | 4,972 | 4,972 | 481.2 | 12% | 10% | 0,78 |
| 2 | 1.1 | **Fase 1 - Preparação do Projeto** |  | 10d | 2015-02-09 A | 2015-02-20 A |  | 100% |  | 2015-02-09 | 2015-02-20 | 10d |  |  |  |  | 120h | 120h | 120 | 120 | 120 | 100% | 100% |  |
| 3 | 1.1.1 | Confirmação e Mobilização de Equipe |  | 8d | 2015-02-09 A | 2015-02-18 A |  | 100% |  | 2015-02-09 | 2015-02-18 | 8d |  |  | start no earlier than 2015-02-09 | Rodney | 64h | 64h | 64 | 64 | 64 | 100% | 100% |  |
| 4 | 1.1.2 | Reunião Pré Kick-off |  | 1d | 2015-02-19 A | 2015-02-19 A | 3 | 100% |  | 2015-02-19 | 2015-02-19 | 1d |  |  |  | Leonardo; Rodney | 16h | 16h | 16 | 16 | 16 | 100% | 100% |  |
| 5 | 1.1.3 | Kick-Off |  | 1d | 2015-02-20 A | 2015-02-20 A | 4 | 100% |  | 2015-02-20 | 2015-02-20 | 1d |  |  |  | TI Votorantim | 8h | 8h | 8 | 8 | 8 | 100% | 100% |  |
| 6 | 1.1.4 | Identificação dos Usuários |  | 2d | 2015-02-19 A | 2015-02-20 A | 3 | 100% |  | 2015-02-19 | 2015-02-20 | 2d |  |  |  | Leonardo; Rodney | 32h | 32h | 32 | 32 | 32 | 100% | 100% |  |
| 7 | 1.1.5 | **Termo de Aceite Fase 1** |  | 0d | 2015-02-20 A | 2015-02-20 A |  | 100% |  | 2015-02-20 | 2015-02-20 | 0d |  |  |  |  |  |  |  |  |  | 100% | 100% |  |
| 8 | 1.1.5.1 | Assinatura Fase 1 - Preparação do Projeto | milestone | 0d | 2015-02-20 A | 2015-02-20 A | 6 | 100% |  | 2015-02-20 | 2015-02-20 | 0d |  |  |  |  |  |  |  |  |  | 100% | 100% |  |
| 9 | 1.2 | **Fase 2 - Business Blueprint** |  | 10d | 2015-02-23 A | 2015-03-06 |  | 93% | 0.67d | 2015-02-23 | 2015-03-06 | 10d | 84d |  |  |  | 256h | 244h | 256 | 256 | 244 | 100% | 95% | 0,95 |
| 10 | 1.2.1 | **Levantamento Gestão de Metas** |  | 5d | 2015-02-23 A | 2015-02-27 |  | 95% | 0.25d | 2015-02-23 | 2015-02-27 | 5d | 89d |  |  |  | 112h | 106h | 112 | 112 | 106 | 100% | 95% | 0,95 |
| 11 | 1.2.1.1 | Mapeamento dos Processos |  | 3d | 2015-02-23 A | 2015-02-25 A | 6 | 100% |  | 2015-02-23 | 2015-02-25 | 3d |  |  |  | HRST 1; HRST 2; Rodney | 72h | 72h | 72 | 72 | 72 | 100% | 100% |  |
| 12 | 1.2.1.2 | Elaboração dos BBPs |  | 1d | 2015-02-26 A | 2015-02-26 A | 11 | 100% |  | 2015-02-26 | 2015-02-26 | 1d |  |  |  | HRST 1; HRST 2 | 16h | 16h | 16 | 16 | 16 | 100% | 100% |  |
| 13 | 1.2.1.3 | Ajustes / Aprovação dos BBPs |  | 1d | 2015-02-27 A | 2015-02-27 | 12 | 75% | 0.25d | 2015-02-27 | 2015-02-27 | 1d | 89d |  |  | HRST 1; HRST 2; Rodney | 24h | 18h | 24 | 24 | 18 | 100% | 75% | 0,75 |
| 14 | 1.2.2 | **Levantamento Gestão de Competência** |  | 7d | 2015-02-26 A | 2015-03-06 |  | 93% | 0.53d | 2015-02-26 | 2015-03-06 | 7d | 84d |  |  |  | 144h | 138h | 144 | 144 | 138 | 100% | 96% | 0,96 |
| 15 | 1.2.2.1 | Mapeamento dos Processos |  | 4d | 2015-02-26 A | 2015-03-03 A | 11 | 100% |  | 2015-02-26 | 2015-03-03 | 4d |  |  |  | HRST 1; HRST 2; Rodney | 96h | 96h | 96 | 96 | 96 | 100% | 100% |  |
| 16 | 1.2.2.2 | **Elaboração dos BBPs** |  | 1d | 2015-03-04 A | 2015-03-04 A |  | 100% |  | 2015-03-04 | 2015-03-04 | 1d |  |  |  |  | 16h | 16h | 16 | 16 | 16 | 100% | 100% |  |
| 17 | 1.2.2.2.1 | EP |  | 0.5d | 2015-03-04 A | 2015-03-04 A | 15 | 100% |  | 2015-03-04 | 2015-03-04 | 0.5d |  |  |  | HRST 1 | 4h | 4h | 4 | 4 | 4 | 100% | 100% |  |
| 18 | 1.2.2.2.2 | PDI |  | 0.5d | 2015-03-04 A | 2015-03-04 A | 17 | 100% |  | 2015-03-04 | 2015-03-04 | 0.5d |  |  |  | HRST 1 | 4h | 4h | 4 | 4 | 4 | 100% | 100% |  |
| 19 | 1.2.2.2.3 | Competência |  | 0.5d | 2015-03-04 A | 2015-03-04 A | 15 | 100% |  | 2015-03-04 | 2015-03-04 | 0.5d |  |  | start no earlier than 2015-03-04 | HRST 2 | 4h | 4h | 4 | 4 | 4 | 100% | 100% |  |
| 20 | 1.2.2.2.4 | Sucessão |  | 0.5d | 2015-03-04 A | 2015-03-04 A | 19 | 100% |  | 2015-03-04 | 2015-03-04 | 0.5d |  |  |  | HRST 2 | 4h | 4h | 4 | 4 | 4 | 100% | 100% |  |
| 21 | 1.2.2.3 | **Ajustes / Aprovação dos BBPs** |  | 2d | 2015-03-05 A | 2015-03-06 |  | 81% | 0.38d | 2015-03-05 | 2015-03-06 | 2d | 84d |  |  |  | 32h | 26h | 32 | 32 | 26 | 100% | 81% | 0,81 |
| 22 | 1.2.2.3.1 | EP |  | 1d | 2015-03-05 A | 2015-03-05 A | 20 | 100% |  | 2015-03-05 | 2015-03-05 | 1d |  |  | start no earlier than 2015-03-05 | HRST 1 | 8h | 8h | 8 | 8 | 8 | 100% | 100% |  |
| 23 | 1.2.2.3.2 | PDI |  | 1d | 2015-03-06 A | 2015-03-06 | 22 | 75% | 0.25d | 2015-03-06 | 2015-03-06 | 1d | 84d |  |  | HRST 1 | 8h | 6h | 8 | 8 | 6 | 100% | 75% | 0,75 |
| 24 | 1.2.2.3.3 | Competência |  | 1d | 2015-03-05 A | 2015-03-05 | 20 | 75% | 0.25d | 2015-03-05 | 2015-03-05 | 1d | 0.75d | 0d | start no earlier than 2015-03-05 | HRST 2 | 8h | 6h | 8 | 8 | 6 | 100% | 75% | 0,75 |
| 25 | 1.2.2.3.4 | Sucesão |  | 1d | 2015-03-06 A | 2015-03-06 | 24 | 75% | 0.25d | 2015-03-06 | 2015-03-06 | 1d | 84d | 0d |  | HRST 2 | 8h | 6h | 8 | 8 | 6 | 100% | 75% | 0,75 |

| ID | WBS | Task | Type | Duration | Start | Finish | Predecessors | Complete | Remaining | Baseline start | Baseline finish | Baseline duration | Total slack | Free slack | Constraint | Resources | Work | Actual work | Cost | Baseline cost | Actual cost | % Planejado | % Realizado | .SPI. |
| --- | --- | --- | --- | --- | --- | --- | --- | --- | --- | --- | --- | --- | --- | --- | --- | --- | --- | --- | --- | --- | --- | --- | --- | --- |
| 26 | 1.2.2.4 | **Termo de Aceite Fase 2** |  | 0d | 2015-03-06 | 2015-03-06 |  |  |  | 2015-03-06 | 2015-03-06 | 0d | 84d |  |  |  |  |  |  |  |  | 100% | 0% |  |
| 27 | 1.2.2.4.1 | Assinatura Fase 2 - Business Blueprint | milestone | 0d | 2015-03-06 | 2015-03-06 | 25 |  |  | 2015-03-06 | 2015-03-06 | 0d | 84d |  |  |  |  |  |  |  |  | 100% | 0% |  |
| 28 | 1.3 | **Fase 3 - Realização** |  | 49d | 2015-03-23 A | 2015-06-03 |  | 17% | 40.5d | 2015-03-23 | 2015-06-03 | 49d | 35d |  |  |  | 748h | 117.2h | 748 | 748 | 117.2 | 32% | 16% | 0,49 |
| 29 | 1.3.1 | **Gestão de Competência** |  | 14d | 2015-03-23 A | 2015-04-10 |  | 34% | 9.23d | 2015-03-23 | 2015-04-10 | 14d | 70d |  |  |  | 416h | 117.2h | 416 | 416 | 117.2 | 58% | 28% | 0,49 |
| 30 | 1.3.1.1 | **EP** |  | 5d | 2015-03-23 A | 2015-03-27 A |  | 100% |  | 2015-03-23 | 2015-03-27 | 5d |  |  |  |  | 40h | 40h | 40 | 40 | 40 | 100% | 100% |  |
| 31 | 1.3.1.1.1 | Configurar EP (Employee Profile) - VE |  | 2d | 2015-03-23 A | 2015-03-24 A |  | 100% |  | 2015-03-23 | 2015-03-24 | 2d |  |  | start no earlier than 2015-03-23 | HRST 1 | 16h | 16h | 16 | 16 | 16 | 100% | 100% |  |
| 32 | 1.3.1.1.2 | Configurar EP (Employee Profile) - VS |  | 1d | 2015-03-25 A | 2015-03-25 A | 31 | 100% |  | 2015-03-25 | 2015-03-25 | 1d |  |  |  | HRST 1 | 8h | 8h | 8 | 8 | 8 | 100% | 100% |  |
| 33 | 1.3.1.1.3 | Configurar EP (Employee Profile) - VM |  | 1d | 2015-03-26 A | 2015-03-26 A | 32 | 100% |  | 2015-03-26 | 2015-03-26 | 1d |  |  |  | HRST 1 | 8h | 8h | 8 | 8 | 8 | 100% | 100% |  |
| 34 | 1.3.1.1.4 | Configurar EP (Employee Profile) - VID São Paulo e Curitiba |  | 1d | 2015-03-27 A | 2015-03-27 A | 33 | 100% |  | 2015-03-27 | 2015-03-27 | 1d |  |  |  | HRST 1 | 8h | 8h | 8 | 8 | 8 | 100% | 100% |  |
| 35 | 1.3.1.1.5 | Onda 1 - Entrega Fase 3 - Realização - EP | milestone | 0d | 2015-03-27 A | 2015-03-27 A | 34 | 100% |  | 2015-03-27 | 2015-03-27 | 0d |  |  |  |  |  |  |  |  |  | 100% | 100% |  |
| 36 | 1.3.1.2 | **PDI** |  | 5d | 2015-03-23 A | 2015-03-27 |  | 98% | 0.1d | 2015-03-23 | 2015-03-27 | 5d | 0.8d |  |  |  | 40h | 39.2h | 40 | 40 | 39.2 | 100% | 98% | 0,98 |
| 37 | 1.3.1.2.1 | Configurar PDI (Palno de Desenvolvimento Individual) - VS |  | 2d | 2015-03-23 A | 2015-03-24 A |  | 100% |  | 2015-03-23 | 2015-03-24 | 2d |  |  | start no earlier than 2015-03-23 | HRST 2 | 16h | 16h | 16 | 16 | 16 | 100% | 100% |  |
| 38 | 1.3.1.2.2 | Configurar PDI (Palno de Desenvolvimento Individual) - VE |  | 1d | 2015-03-25 A | 2015-03-25 A | 31 | 100% |  | 2015-03-25 | 2015-03-25 | 1d |  |  |  | HRST 2 | 8h | 8h | 8 | 8 | 8 | 100% | 100% |  |
| 39 | 1.3.1.2.3 | Configurar PDI (Palno de Desenvolvimento Individual) - VM |  | 1d | 2015-03-26 A | 2015-03-26 A | 32 | 100% |  | 2015-03-26 | 2015-03-26 | 1d |  |  |  | HRST 2 | 8h | 8h | 8 | 8 | 8 | 100% | 100% |  |
| 40 | 1.3.1.2.4 | Configurar PDI (Palno de Desenvolvimento Individual) - VID São Paulo e Curitiba |  | 1d | 2015-03-27 A | 2015-03-27 | 33 | 90% | 0.1d | 2015-03-27 | 2015-03-27 | 1d | 0.8d | 0d |  | HRST 2 | 8h | 7.2h | 8 | 8 | 7.2 | 100% | 90% | 0,9 |
| 41 | 1.3.1.2.5 | Onda 1 - Entrega Fase 3 - Realização - PDI | milestone | 0d | 2015-03-27 A | 2015-03-27 A | 40 | 100% |  | 2015-03-27 | 2015-03-27 | 0d |  |  |  |  |  |  |  |  |  | 100% | 100% |  |
| 42 | 1.3.1.3 | **Sucessão** |  | 5d | 2015-03-30 A | 2015-04-06 |  | 55% | 2.25d | 2015-03-30 | 2015-04-06 | 5d | 74d |  |  |  | 40h | 22h | 40 | 40 | 22 | 80% | 55% | 0,69 |
| 43 | 1.3.1.3.1 | Configurar Sucessão - VS |  | 2d | 2015-03-30 A | 2015-03-31 | 34 | 50% | 1d | 2015-03-30 | 2015-03-31 | 2d | 0.5d | 0d | start no earlier than 2015-03-30 | HRST 3 | 16h | 8h | 16 | 16 | 8 | 100% | 50% | 0,5 |
| 44 | 1.3.1.3.2 | Configurar Sucessão - VM |  | 1d | 2015-04-01 A | 2015-04-01 | 43 | 50% | 0.5d | 2015-04-01 | 2015-04-01 | 1d | 0.75d | 0d |  | HRST 3 | 8h | 4h | 8 | 8 | 4 | 100% | 50% | 0,5 |
| 45 | 1.3.1.3.3 | Configurar Sucessão - VID São Paulo e Curitiba |  | 1d | 2015-04-02 A | 2015-04-02 | 44 | 75% | 0.25d | 2015-04-02 | 2015-04-02 | 1d | 0.5d | 0d |  | HRST 3 | 8h | 6h | 8 | 8 | 6 | 100% | 75% | 0,75 |
| 46 | 1.3.1.3.4 | Configurar Sucessão - VE |  | 1d | 2015-04-06 A | 2015-04-06 | 45 | 50% | 0.5d | 2015-04-06 | 2015-04-06 | 1d | 71d | 0d |  | HRST 3 | 8h | 4h | 8 | 8 | 4 | 0% | 50% | 1,5 |
| 47 | 1.3.1.3.5 | Onda 1 - Entrega Fase 3 - Realização - Sucessão | milestone | 0d | 2015-04-06 | 2015-04-06 | 46 |  |  | 2015-04-06 | 2015-04-06 | 0d | 74d |  |  |  |  |  |  |  |  | 0% | 0% |  |
| 48 | 1.3.1.4 | **PM** |  | 8d | 2015-03-30 A | 2015-04-09 |  | 14% | 6.86d | 2015-03-30 | 2015-04-09 | 8d | 71d |  |  |  | 112h | 16h | 112 | 112 | 16 | 57% | 14% | 0,25 |
| 49 | 1.3.1.4.1 | Configurar PM - VS |  | 4d | 2015-03-30 A | 2015-04-02 | 34 | 30% | 2.8d | 2015-03-30 | 2015-04-02 | 4d | 70d | 0d | start no earlier than 2015-03-30 | HRST 1 | 32h | 9.6h | 32 | 32 | 9.6 | 100% | 30% | 0,3 |
| 50 | 1.3.1.4.2 | Configurar PM - VM |  | 4d | 2015-03-30 A | 2015-04-02 | 40 | 20% | 3.2d | 2015-03-30 | 2015-04-02 | 4d | 72d | 0d |  | HRST 2 | 32h | 6.4h | 32 | 32 | 6.4 | 100% | 20% | 0,2 |
| 51 | 1.3.1.4.3 | Configurar PM - VID São Paulo e Curitiba |  | 3d | 2015-04-07 | 2015-04-09 | 46 |  |  | 2015-04-07 | 2015-04-09 | 3d | 71d |  |  | HRST 3 | 24h |  | 24 | 24 |  | 0% | 0% |  |
| 52 | 1.3.1.4.4 | Configurar PM - VE |  | 3d | 2015-04-06 | 2015-04-08 | 50 |  |  | 2015-04-06 | 2015-04-08 | 3d | 72d | 0d |  | HRST 2 | 24h |  | 24 | 24 |  | 0% | 0% |  |
| 53 | 1.3.1.4.5 | Onda 1 - Entrega Fase 3 - Realização - PM | milestone | 0d | 2015-04-08 | 2015-04-08 | 52 |  |  | 2015-04-08 | 2015-04-08 | 0d | 72d |  |  |  |  |  |  |  |  | 0% | 0% |  |

| ID | WBS | Task | Type | Duration | Start | Finish | Predecessors | Baseline start | Baseline finish | Baseline duration | Total slack | Free slack | Resources | Work | Cost | Baseline cost | % Planejado | % Realizado |
| --- | --- | --- | --- | --- | --- | --- | --- | --- | --- | --- | --- | --- | --- | --- | --- | --- | --- | --- |
| 54 | 1.3.1.5 | **Relatórios** |  | 5d | 2015-04-06 | 2015-04-10 |  | 2015-04-06 | 2015-04-10 | 5d | 70d |  |  | 40h | 40 | 40 | 0% | 0% |
| 55 | 1.3.1.5.1 | Configurar Relatórios - VS |  | 2d | 2015-04-06 | 2015-04-07 | 49 | 2015-04-06 | 2015-04-07 | 2d | 70d | 0d | HRST 1 | 16h | 16 | 16 | 0% | 0% |
| 56 | 1.3.1.5.2 | Configurar Relatórios - VM |  | 1d | 2015-04-08 | 2015-04-08 | 55 | 2015-04-08 | 2015-04-08 | 1d | 70d | 0d | HRST 1 | 8h | 8 | 8 | 0% | 0% |
| 57 | 1.3.1.5.3 | Configurar Relatórios - VID São Paulo e Curitiba |  | 1d | 2015-04-09 | 2015-04-09 | 56 | 2015-04-09 | 2015-04-09 | 1d | 70d | 0d | HRST 1 | 8h | 8 | 8 | 0% | 0% |
| 58 | 1.3.1.5.4 | Configurar Relatórios - VE |  | 1d | 2015-04-10 | 2015-04-10 | 57 | 2015-04-10 | 2015-04-10 | 1d | 70d | 0d | HRST 1 | 8h | 8 | 8 | 0% | 0% |
| 59 | 1.3.1.5.5 | Onda 1 - Entrega Fase 3 - Realização - Relatórios | milestone | 0d | 2015-04-10 | 2015-04-10 | 58 | 2015-04-10 | 2015-04-10 | 0d | 70d |  |  |  |  |  | 0% | 0% |
| 60 | 1.3.1.6 | Desenvolvimento Abap - Ajustes Integração |  | 9d | 2015-03-30 | 2015-04-10 | 34 | 2015-03-30 | 2015-04-10 | 9d | 0d |  | ABAP 1; ABAP 2 | 144h | 144 | 144 | 44% | 0% |
| 61 | 1.3.1.7 | **Onda 1 - Termo de Aceite Fase 3 - Realização** |  | 0d | 2015-04-10 | 2015-04-10 |  | 2015-04-10 | 2015-04-10 | 0d | 70d |  |  |  |  |  | 0% | 0% |
| 62 | 1.3.1.7.1 | Onda 1 - Assinatura Fase 3 - Realização | milestone | 0d | 2015-04-10 | 2015-04-10 | 60 | 2015-04-10 | 2015-04-10 | 0d | 70d |  |  |  |  |  | 0% | 0% |
| 63 | 1.3.2 | **Gestão de Metas** |  | 18d | 2015-05-11 | 2015-06-03 |  | 2015-05-11 | 2015-06-03 | 18d | 5d |  |  | 332h | 332 | 332 | 0% | 0% |
| 64 | 1.3.2.1 | **VS** |  | 11d | 2015-05-11 | 2015-05-25 |  | 2015-05-11 | 2015-05-25 | 11d | 10.5d |  |  | 88h | 88 | 88 | 0% | 0% |
| 65 | 1.3.2.1.1 | Alteração de label na instância |  | 1d | 2015-05-11 | 2015-05-11 | 186 | 2015-05-11 | 2015-05-11 | 1d | 10.5d | 0d | HRST 2 | 8h | 8 | 8 | 0% | 0% |
| 66 | 1.3.2.1.2 | Configurar o mapa de rota |  | 1d | 2015-05-12 | 2015-05-12 | 65 | 2015-05-12 | 2015-05-12 | 1d | 10.5d | 0d | HRST 2 | 8h | 8 | 8 | 0% | 0% |
| 67 | 1.3.2.1.3 | Configurar Formulários |  | 1d | 2015-05-13 | 2015-05-13 | 66 | 2015-05-13 | 2015-05-13 | 1d | 10.5d | 0d | HRST 2 | 8h | 8 | 8 | 0% | 0% |
| 68 | 1.3.2.1.4 | Configurar permissões |  | 1d | 2015-05-14 | 2015-05-14 | 67 | 2015-05-14 | 2015-05-14 | 1d | 10.5d | 0d | HRST 2 | 8h | 8 | 8 | 0% | 0% |
| 69 | 1.3.2.1.5 | Definir layout para importar a Biblioteca de Metas |  | 1d | 2015-05-15 | 2015-05-15 | 68 | 2015-05-15 | 2015-05-15 | 1d | 10.5d | 0d | HRST 2 | 8h | 8 | 8 | 0% | 0% |
| 70 | 1.3.2.1.6 | Definir layout para carga de empregados |  | 1d | 2015-05-18 | 2015-05-18 | 69 | 2015-05-18 | 2015-05-18 | 1d | 10.5d | 0d | HRST 2 | 8h | 8 | 8 | 0% | 0% |
| 71 | 1.3.2.1.7 | Passar para Votorantim informações para carga de fotos |  | 1d | 2015-05-19 | 2015-05-19 | 70 | 2015-05-19 | 2015-05-19 | 1d | 10.5d | 0d | HRST 2 | 8h | 8 | 8 | 0% | 0% |
| 72 | 1.3.2.1.8 | Fazer a carga de metas |  | 1d | 2015-05-20 | 2015-05-20 | 71 | 2015-05-20 | 2015-05-20 | 1d | 10.5d | 0d | HRST 2 | 8h | 8 | 8 | 0% | 0% |
| 73 | 1.3.2.1.9 | Fazer a carga de empregados |  | 1d | 2015-05-21 | 2015-05-21 | 72 | 2015-05-21 | 2015-05-21 | 1d | 10.5d | 0d | HRST 2 | 8h | 8 | 8 | 0% | 0% |
| 74 | 1.3.2.1.10 | Agendar job para carga de fotos |  | 1d | 2015-05-22 | 2015-05-22 | 73 | 2015-05-22 | 2015-05-22 | 1d | 10.5d | 0d | HRST 2 | 8h | 8 | 8 | 0% | 0% |
| 75 | 1.3.2.1.11 | Configurar Relatórios |  | 1d | 2015-05-25 | 2015-05-25 | 74 | 2015-05-25 | 2015-05-25 | 1d | 10.5d | 0d | HRST 2 | 8h | 8 | 8 | 0% | 0% |
| 76 | 1.3.2.1.12 | Onda 2 - Entrega Fase 3 - Realização - VS | milestone | 0d | 2015-05-25 | 2015-05-25 | 75 | 2015-05-25 | 2015-05-25 | 0d | 42d |  |  |  |  |  | 0% | 0% |
| 77 | 1.3.2.2 | **VM** |  | 11d | 2015-05-11 | 2015-05-25 |  | 2015-05-11 | 2015-05-25 | 11d | 42d |  |  | 88h | 88 | 88 | 0% | 0% |
| 78 | 1.3.2.2.1 | Alteração de label na instância |  | 1d | 2015-05-11 | 2015-05-11 | 186 | 2015-05-11 | 2015-05-11 | 1d | 42d | 0d | HRST 3 | 8h | 8 | 8 | 0% | 0% |
| 79 | 1.3.2.2.2 | Configurar o mapa de rota |  | 1d | 2015-05-12 | 2015-05-12 | 78 | 2015-05-12 | 2015-05-12 | 1d | 42d | 0d | HRST 3 | 8h | 8 | 8 | 0% | 0% |
| 80 | 1.3.2.2.3 | Configurar Formulários |  | 1d | 2015-05-13 | 2015-05-13 | 79 | 2015-05-13 | 2015-05-13 | 1d | 42d | 0d | HRST 3 | 8h | 8 | 8 | 0% | 0% |
| 81 | 1.3.2.2.4 | Configurar permissões |  | 1d | 2015-05-14 | 2015-05-14 | 80 | 2015-05-14 | 2015-05-14 | 1d | 42d | 0d | HRST 3 | 8h | 8 | 8 | 0% | 0% |
| 82 | 1.3.2.2.5 | Definir layout para importar a Biblioteca de Metas |  | 1d | 2015-05-15 | 2015-05-15 | 81 | 2015-05-15 | 2015-05-15 | 1d | 42d | 0d | HRST 3 | 8h | 8 | 8 | 0% | 0% |
| 83 | 1.3.2.2.6 | Definir layout para carga de empregados |  | 1d | 2015-05-18 | 2015-05-18 | 82 | 2015-05-18 | 2015-05-18 | 1d | 42d | 0d | HRST 3 | 8h | 8 | 8 | 0% | 0% |
| 84 | 1.3.2.2.7 | Passar para Votorantim informações para carga de fotos |  | 1d | 2015-05-19 | 2015-05-19 | 83 | 2015-05-19 | 2015-05-19 | 1d | 42d | 0d | HRST 3 | 8h | 8 | 8 | 0% | 0% |
| 85 | 1.3.2.2.8 | Fazer a carga de metas |  | 1d | 2015-05-20 | 2015-05-20 | 84 | 2015-05-20 | 2015-05-20 | 1d | 42d | 0d | HRST 3 | 8h | 8 | 8 | 0% | 0% |
| 86 | 1.3.2.2.9 | Fazer a carga de empregados |  | 1d | 2015-05-21 | 2015-05-21 | 85 | 2015-05-21 | 2015-05-21 | 1d | 42d | 0d | HRST 3 | 8h | 8 | 8 | 0% | 0% |
| 87 | 1.3.2.2.10 | Agendar job para carga de fotos |  | 1d | 2015-05-22 | 2015-05-22 | 86 | 2015-05-22 | 2015-05-22 | 1d | 42d | 0d | HRST 3 | 8h | 8 | 8 | 0% | 0% |
| 88 | 1.3.2.2.11 | Configurar Relatórios |  | 1d | 2015-05-25 | 2015-05-25 | 87 | 2015-05-25 | 2015-05-25 | 1d | 42d | 0d | HRST 3 | 8h | 8 | 8 | 0% | 0% |
| 89 | 1.3.2.2.12 | Onda 2 - Entrega Fase 3 - Realização - VM | milestone | 0d | 2015-05-25 | 2015-05-25 | 88 | 2015-05-25 | 2015-05-25 | 0d | 42d |  |  |  |  |  | 0% | 0% |

| ID | WBS | Task | Type | Duration | Start | Finish | Predecessors | Baseline start | Baseline finish | Baseline duration | Total slack | Free slack | Resources | Work | Cost | Baseline cost | % Planejado | % Realizado |
| --- | --- | --- | --- | --- | --- | --- | --- | --- | --- | --- | --- | --- | --- | --- | --- | --- | --- | --- |
| 90 | 1.3.2.3 | **VID São Paulo e Curitiba** |  | 13d | 2015-05-18 | 2015-06-03 |  | 2015-05-18 | 2015-06-03 | 13d | 0d |  |  | 104h | 104 | 104 | 0% | 0% |
| 91 | 1.3.2.3.1 | Alteração de label na instância |  | 1d | 2015-05-18 | 2015-05-18 | 191 | 2015-05-18 | 2015-05-18 | 1d | 0d |  | HRST 1 | 8h | 8 | 8 | 0% | 0% |
| 92 | 1.3.2.3.2 | Configurar o mapa de rota |  | 1d | 2015-05-19 | 2015-05-19 | 91 | 2015-05-19 | 2015-05-19 | 1d | 0d |  | HRST 1 | 8h | 8 | 8 | 0% | 0% |
| 93 | 1.3.2.3.3 | Configurar Formulários |  | 1d | 2015-05-20 | 2015-05-20 | 92 | 2015-05-20 | 2015-05-20 | 1d | 0d |  | HRST 1 | 8h | 8 | 8 | 0% | 0% |
| 94 | 1.3.2.3.4 | Configurar permissões |  | 1d | 2015-05-21 | 2015-05-21 | 93 | 2015-05-21 | 2015-05-21 | 1d | 0d |  | HRST 1 | 8h | 8 | 8 | 0% | 0% |
| 95 | 1.3.2.3.5 | Definir layout para importar a Biblioteca de Metas |  | 1d | 2015-05-22 | 2015-05-22 | 94 | 2015-05-22 | 2015-05-22 | 1d | 0d |  | HRST 1 | 8h | 8 | 8 | 0% | 0% |
| 96 | 1.3.2.3.6 | Definir layout para carga de empregados |  | 1d | 2015-05-25 | 2015-05-25 | 95 | 2015-05-25 | 2015-05-25 | 1d | 0d |  | HRST 1 | 8h | 8 | 8 | 0% | 0% |
| 97 | 1.3.2.3.7 | Passar para Votorantim informações para carga de fotos |  | 1d | 2015-05-26 | 2015-05-26 | 96 | 2015-05-26 | 2015-05-26 | 1d | 0d |  | HRST 1 | 8h | 8 | 8 | 0% | 0% |
| 98 | 1.3.2.3.8 | Fazer a carga de metas |  | 1d | 2015-05-27 | 2015-05-27 | 97 | 2015-05-27 | 2015-05-27 | 1d | 0d |  | HRST 1 | 8h | 8 | 8 | 0% | 0% |
| 99 | 1.3.2.3.9 | Fazer a carga de empregados |  | 1d | 2015-05-28 | 2015-05-28 | 98 | 2015-05-28 | 2015-05-28 | 1d | 0d |  | HRST 1 | 8h | 8 | 8 | 0% | 0% |
| 100 | 1.3.2.3.10 | Agendar job para carga de fotos |  | 2d | 2015-05-29 | 2015-06-01 | 99 | 2015-05-29 | 2015-06-01 | 2d | 0d |  | HRST 1 | 16h | 16 | 16 | 0% | 0% |
| 101 | 1.3.2.3.11 | Configurar Relatórios |  | 2d | 2015-06-02 | 2015-06-03 | 100 | 2015-06-02 | 2015-06-03 | 2d | 0d |  | HRST 1 | 16h | 16 | 16 | 0% | 0% |
| 102 | 1.3.2.3.12 | Onda 2 - Entrega Fase 3 - Realização - VID São Paulo e Curitiba | milestone | 0d | 2015-06-03 | 2015-06-03 | 101 | 2015-06-03 | 2015-06-03 | 0d | 35d |  |  |  |  |  | 0% | 0% |
| 103 | 1.3.2.4 | **VE** |  | 6.5d | 2015-05-26 | 2015-06-03 |  | 2015-05-26 | 2015-06-03 | 6.5d | 10.5d |  |  | 52h | 52 | 52 | 0% | 0% |
| 104 | 1.3.2.4.1 | Alteração de label na instância |  | 0.5d | 2015-05-26 | 2015-05-26 | 75 | 2015-05-26 | 2015-05-26 | 0.5d | 10.5d | 0d | HRST 2 | 4h | 4 | 4 | 0% | 0% |
| 105 | 1.3.2.4.2 | Configurar o mapa de rota |  | 0.5d | 2015-05-26 | 2015-05-26 | 104 | 2015-05-26 | 2015-05-26 | 0.5d | 10.5d | 0d | HRST 2 | 4h | 4 | 4 | 0% | 0% |
| 106 | 1.3.2.4.3 | Configurar Formulários |  | 1d | 2015-05-27 | 2015-05-27 | 105 | 2015-05-27 | 2015-05-27 | 1d | 10.5d | 0d | HRST 2 | 8h | 8 | 8 | 0% | 0% |
| 107 | 1.3.2.4.4 | Configurar permissões |  | 0.5d | 2015-05-28 | 2015-05-28 | 106 | 2015-05-28 | 2015-05-28 | 0.5d | 10.5d | 0d | HRST 2 | 4h | 4 | 4 | 0% | 0% |
| 108 | 1.3.2.4.5 | Definir layout para importar a Biblioteca de Metas |  | 0.5d | 2015-05-28 | 2015-05-28 | 107 | 2015-05-28 | 2015-05-28 | 0.5d | 10.5d | 0d | HRST 2 | 4h | 4 | 4 | 0% | 0% |
| 109 | 1.3.2.4.6 | Definir layout para carga de empregados |  | 0.5d | 2015-05-29 | 2015-05-29 | 108 | 2015-05-29 | 2015-05-29 | 0.5d | 10.5d | 0d | HRST 2 | 4h | 4 | 4 | 0% | 0% |
| 110 | 1.3.2.4.7 | Passar para Votorantim informações para carga de fotos |  | 0.5d | 2015-05-29 | 2015-05-29 | 109 | 2015-05-29 | 2015-05-29 | 0.5d | 10.5d | 0d | HRST 2 | 4h | 4 | 4 | 0% | 0% |
| 111 | 1.3.2.4.8 | Fazer a carga de metas |  | 0.5d | 2015-06-01 | 2015-06-01 | 110 | 2015-06-01 | 2015-06-01 | 0.5d | 10.5d | 0d | HRST 2 | 4h | 4 | 4 | 0% | 0% |
| 112 | 1.3.2.4.9 | Fazer a carga de empregados |  | 0.5d | 2015-06-01 | 2015-06-01 | 111 | 2015-06-01 | 2015-06-01 | 0.5d | 10.5d | 0d | HRST 2 | 4h | 4 | 4 | 0% | 0% |
| 113 | 1.3.2.4.10 | Agendar job para carga de fotos |  | 0.5d | 2015-06-02 | 2015-06-02 | 112 | 2015-06-02 | 2015-06-02 | 0.5d | 10.5d | 0d | HRST 2 | 4h | 4 | 4 | 0% | 0% |
| 114 | 1.3.2.4.11 | Configurar Relatórios |  | 1d | 2015-06-02 | 2015-06-03 | 113 | 2015-06-02 | 2015-06-03 | 1d | 10.5d | 0d | HRST 2 | 8h | 8 | 8 | 0% | 0% |
| 115 | 1.3.2.4.12 | Onda 2 - Entrega Fase 3 - Realização - VE | milestone | 0d | 2015-06-03 | 2015-06-03 | 114 | 2015-06-03 | 2015-06-03 | 0d | 35.5d |  |  |  |  |  | 0% | 0% |

| ID | WBS | Task | Type | Duration | Start | Finish | Predecessors | Baseline start | Baseline finish | Baseline duration | Total slack | Free slack | Resources | Work | Cost | Baseline cost | % Planejado | % Realizado |
| --- | --- | --- | --- | --- | --- | --- | --- | --- | --- | --- | --- | --- | --- | --- | --- | --- | --- | --- |
| 116 | 1.3.2.5 | **Termo de Aceite Fase 3** |  | 0d | 2015-06-03 | 2015-06-03 |  | 2015-06-03 | 2015-06-03 | 0d | 35.5d |  |  |  |  |  | 0% | 0% |
| 117 | 1.3.2.5.1 | Onda 2 - Entrega Final Fase 3 - Realização | milestone | 0d | 2015-06-03 | 2015-06-03 | 114 | 2015-06-03 | 2015-06-03 | 0d | 35.5d |  |  |  |  |  | 0% | 0% |
| 118 | 1.4 | **Fase 4 - Preparação Final** |  | 60d | 2015-04-13 | 2015-07-10 |  | 2015-04-13 | 2015-07-10 | 60d | 0d |  |  | 2104h | 2,104 | 2,104 | 0% | 0% |
| 119 | 1.4.1 | **Testes Funcionais** |  | 40d | 2015-04-13 | 2015-06-12 |  | 2015-04-13 | 2015-06-12 | 40d | 0d |  |  | 176h | 176 | 176 | 0% | 0% |
| 120 | 1.4.1.1 | **Gestão de Competência** |  | 5d | 2015-04-13 | 2015-04-17 |  | 2015-04-13 | 2015-04-17 | 5d | 0d |  |  | 88h | 88 | 88 | 0% | 0% |
| 121 | 1.4.1.1.1 | **VS** |  | 3d | 2015-04-13 | 2015-04-15 |  | 2015-04-13 | 2015-04-15 | 3d | 0d |  |  | 24h | 24 | 24 | 0% | 0% |
| 122 | 1.4.1.1.1.1 | Realizar Testes Funcionais - VS |  | 1d | 2015-04-13 | 2015-04-13 | 60 | 2015-04-13 | 2015-04-13 | 1d | 0d |  | HRST 1 | 8h | 8 | 8 | 0% | 0% |
| 123 | 1.4.1.1.1.2 | Ajustes Testes Funcionais - VS |  | 2d | 2015-04-14 | 2015-04-15 | 122 | 2015-04-14 | 2015-04-15 | 2d | 0d |  | HRST 1 | 16h | 16 | 16 | 0% | 0% |
| 124 | 1.4.1.1.2 | **VM** |  | 3d | 2015-04-13 | 2015-04-15 |  | 2015-04-13 | 2015-04-15 | 3d | 67d |  |  | 24h | 24 | 24 | 0% | 0% |
| 125 | 1.4.1.1.2.1 | Realizar Testes Funcionais - VM |  | 1d | 2015-04-13 | 2015-04-13 | 60 | 2015-04-13 | 2015-04-13 | 1d | 67d | 0d | HRST 2 | 8h | 8 | 8 | 0% | 0% |
| 126 | 1.4.1.1.2.2 | Ajustes Testes Funcionais - VM |  | 2d | 2015-04-14 | 2015-04-15 | 125 | 2015-04-14 | 2015-04-15 | 2d | 67d | 0d | HRST 2 | 16h | 16 | 16 | 0% | 0% |
| 127 | 1.4.1.1.3 | Onda 1 - Entrega Testes Funcionais - VS e VM | milestone | 0d | 2015-04-15 | 2015-04-15 | 126 | 2015-04-15 | 2015-04-15 | 0d | 67d |  |  |  |  |  | 0% | 0% |
| 128 | 1.4.1.1.4 | **VID São Paulo e Curitiba** |  | 3d | 2015-04-13 | 2015-04-15 |  | 2015-04-13 | 2015-04-15 | 3d | 67d |  |  | 24h | 24 | 24 | 0% | 0% |
| 129 | 1.4.1.1.4.1 | Realizar Testes Funcionais - VID |  | 1d | 2015-04-13 | 2015-04-13 | 60 | 2015-04-13 | 2015-04-13 | 1d | 67d | 0d | HRST 3 | 8h | 8 | 8 | 0% | 0% |
| 130 | 1.4.1.1.4.2 | Ajustes Testes Funcionais - VID |  | 2d | 2015-04-14 | 2015-04-15 | 129 | 2015-04-14 | 2015-04-15 | 2d | 67d |  | HRST 3 | 16h | 16 | 16 | 0% | 0% |
| 131 | 1.4.1.1.5 | **VE** |  | 2d | 2015-04-16 | 2015-04-17 |  | 2015-04-16 | 2015-04-17 | 2d | 0d |  |  | 16h | 16 | 16 | 0% | 0% |
| 132 | 1.4.1.1.5.1 | Realizar Testes Funcionais - VE |  | 1d | 2015-04-16 | 2015-04-16 | 123 | 2015-04-16 | 2015-04-16 | 1d | 0d |  | HRST 1 | 8h | 8 | 8 | 0% | 0% |
| 133 | 1.4.1.1.5.2 | Ajustes Testes Funcionais - VE |  | 1d | 2015-04-17 | 2015-04-17 | 132 | 2015-04-17 | 2015-04-17 | 1d | 0d |  | HRST 1 | 8h | 8 | 8 | 0% | 0% |
| 134 | 1.4.1.1.6 | Onda 1 - Entrega Testes Funcionais - VID SP - VID CTB - VE | milestone | 0d | 2015-04-17 | 2015-04-17 | 133 | 2015-04-17 | 2015-04-17 | 0d | 65d |  |  |  |  |  | 0% | 0% |
| 135 | 1.4.1.2 | **Gestão de Metas** |  | 5d | 2015-06-08 | 2015-06-12 |  | 2015-06-08 | 2015-06-12 | 5d | 0d |  |  | 88h | 88 | 88 | 0% | 0% |
| 136 | 1.4.1.2.1 | **VS** |  | 3d | 2015-06-08 | 2015-06-10 |  | 2015-06-08 | 2015-06-10 | 3d | 0d |  |  | 24h | 24 | 24 | 0% | 0% |
| 137 | 1.4.1.2.1.1 | Realizar Testes Funcionais |  | 1d | 2015-06-08 | 2015-06-08 | 101 | 2015-06-08 | 2015-06-08 | 1d | 0d |  | HRST 3 | 8h | 8 | 8 | 0% | 0% |
| 138 | 1.4.1.2.1.2 | Ajustes Testes Funcionais |  | 2d | 2015-06-09 | 2015-06-10 | 137 | 2015-06-09 | 2015-06-10 | 2d | 0d |  | HRST 3 | 16h | 16 | 16 | 0% | 0% |
| 139 | 1.4.1.2.2 | **VM** |  | 3d | 2015-06-08 | 2015-06-10 |  | 2015-06-08 | 2015-06-10 | 3d | 32d |  |  | 24h | 24 | 24 | 0% | 0% |
| 140 | 1.4.1.2.2.1 | Realizar Testes Funcionais |  | 1d | 2015-06-08 | 2015-06-08 | 101 | 2015-06-08 | 2015-06-08 | 1d | 32d | 0d | HRST 4 | 8h | 8 | 8 | 0% | 0% |
| 141 | 1.4.1.2.2.2 | Ajustes Testes Funcionais |  | 2d | 2015-06-09 | 2015-06-10 | 140 | 2015-06-09 | 2015-06-10 | 2d | 32d | 0d | HRST 4 | 16h | 16 | 16 | 0% | 0% |
| 142 | 1.4.1.2.3 | Onda 2 - Entrega Testes Funcionais - VS e VM | milestone | 0d | 2015-06-10 | 2015-06-10 | 141 | 2015-06-10 | 2015-06-10 | 0d | 32d |  |  |  |  |  | 0% | 0% |

| ID | WBS | Task | Type | Duration | Start | Finish | Predecessors | Baseline start | Baseline finish | Baseline duration | Total slack | Free slack | Resources | Work | Cost | Baseline cost | % Planejado | % Realizado |
| --- | --- | --- | --- | --- | --- | --- | --- | --- | --- | --- | --- | --- | --- | --- | --- | --- | --- | --- |
| 143 | 1.4.1.2.4 | **VID São Paulo e Curitiba** |  | 3d | 2015-06-08 | 2015-06-10 |  | 2015-06-08 | 2015-06-10 | 3d | 32d |  |  | 24h | 24 | 24 | 0% | 0% |
| 144 | 1.4.1.2.4.1 | Realizar Testes Funcionais |  | 1d | 2015-06-08 | 2015-06-08 | 101 | 2015-06-08 | 2015-06-08 | 1d | 32d | 0d | Rodney | 8h | 8 | 8 | 0% | 0% |
| 145 | 1.4.1.2.4.2 | Ajustes Testes Funcionais |  | 2d | 2015-06-09 | 2015-06-10 | 144 | 2015-06-09 | 2015-06-10 | 2d | 32d |  | Rodney | 16h | 16 | 16 | 0% | 0% |
| 146 | 1.4.1.2.5 | **VE** |  | 2d | 2015-06-11 | 2015-06-12 |  | 2015-06-11 | 2015-06-12 | 2d | 0d |  |  | 16h | 16 | 16 | 0% | 0% |
| 147 | 1.4.1.2.5.1 | Realizar Testes Funcionais |  | 1d | 2015-06-11 | 2015-06-11 | 138 | 2015-06-11 | 2015-06-11 | 1d | 0d |  | HRST 4 | 8h | 8 | 8 | 0% | 0% |
| 148 | 1.4.1.2.5.2 | Ajustes Testes Funcionais |  | 1d | 2015-06-12 | 2015-06-12 | 147 | 2015-06-12 | 2015-06-12 | 1d | 0d |  | HRST 4 | 8h | 8 | 8 | 0% | 0% |
| 149 | 1.4.1.2.6 | Onda 2 - Entrega Testes Funcionais - VID SP - VID CTB - VE | milestone | 0d | 2015-06-12 | 2015-06-12 | 148 | 2015-06-12 | 2015-06-12 | 0d | 30d |  |  |  |  |  | 0% | 0% |
| 150 | 1.4.2 | **Testes Unitários** |  | 45d | 2015-04-22 | 2015-06-26 |  | 2015-04-22 | 2015-06-26 | 45d | 0d |  |  | 288h | 288 | 288 | 0% | 0% |
| 151 | 1.4.2.1 | **Gestão de Competência** |  | 7d | 2015-04-22 | 2015-04-30 |  | 2015-04-22 | 2015-04-30 | 7d | 0d |  |  | 152h | 152 | 152 | 0% | 0% |
| 152 | 1.4.2.1.1 | **VS** |  | 5d | 2015-04-22 | 2015-04-28 |  | 2015-04-22 | 2015-04-28 | 5d | 0d |  |  | 56h | 56 | 56 | 0% | 0% |
| 153 | 1.4.2.1.1.1 | Realizar Testes Unitários |  | 2d | 2015-04-22 | 2015-04-23 | 133 | 2015-04-22 | 2015-04-23 | 2d | 0d |  | HRST 1; Juraci Silva | 32h | 32 | 32 | 0% | 0% |
| 154 | 1.4.2.1.1.2 | Ajustes Testes Unitários |  | 3d | 2015-04-24 | 2015-04-28 | 153 | 2015-04-24 | 2015-04-28 | 3d | 60d |  | HRST 1 | 24h | 24 | 24 | 0% | 0% |
| 155 | 1.4.2.1.2 | **VM** |  | 3d | 2015-04-24 | 2015-04-28 |  | 2015-04-24 | 2015-04-28 | 3d | 0d |  |  | 32h | 32 | 32 | 0% | 0% |
| 156 | 1.4.2.1.2.1 | Realizar Testes Unitários |  | 1d | 2015-04-24 | 2015-04-24 | 153 | 2015-04-24 | 2015-04-24 | 1d | 0d |  | HRST 2; Juraci Silva | 16h | 16 | 16 | 0% | 0% |
| 157 | 1.4.2.1.2.2 | Ajustes Testes Unitários |  | 2d | 2015-04-27 | 2015-04-28 | 156 | 2015-04-27 | 2015-04-28 | 2d | 60d | 0d | HRST 2 | 16h | 16 | 16 | 0% | 0% |
| 158 | 1.4.2.1.3 | Onda 1 - Entrega Testes Unitários - VS e VM | milestone | 0d | 2015-04-28 | 2015-04-28 | 157 | 2015-04-28 | 2015-04-28 | 0d | 60d |  |  |  |  |  | 0% | 0% |
| 159 | 1.4.2.1.4 | **VID São Paulo e Curitiba** |  | 3d | 2015-04-27 | 2015-04-29 |  | 2015-04-27 | 2015-04-29 | 3d | 0d |  |  | 32h | 32 | 32 | 0% | 0% |
| 160 | 1.4.2.1.4.1 | Realizar Testes Unitários |  | 1d | 2015-04-27 | 2015-04-27 | 156 | 2015-04-27 | 2015-04-27 | 1d | 0d |  | HRST 3; Juraci Silva | 16h | 16 | 16 | 0% | 0% |
| 161 | 1.4.2.1.4.2 | Ajustes Testes Unitários |  | 2d | 2015-04-28 | 2015-04-29 | 160 | 2015-04-28 | 2015-04-29 | 2d | 59d |  | HRST 3 | 16h | 16 | 16 | 0% | 0% |
| 162 | 1.4.2.1.5 | **VE** |  | 3d | 2015-04-28 | 2015-04-30 |  | 2015-04-28 | 2015-04-30 | 3d | 0d |  |  | 32h | 32 | 32 | 0% | 0% |
| 163 | 1.4.2.1.5.1 | Realizar Testes Unitários |  | 1d | 2015-04-28 | 2015-04-28 | 160 | 2015-04-28 | 2015-04-28 | 1d | 0d |  | HRST 2; Juraci Silva | 16h | 16 | 16 | 0% | 0% |
| 164 | 1.4.2.1.5.2 | Ajustes Testes Unitários |  | 2d | 2015-04-29 | 2015-04-30 | 163 | 2015-04-29 | 2015-04-30 | 2d | 0d |  | HRST 2 | 16h | 16 | 16 | 0% | 0% |
| 165 | 1.4.2.1.6 | Onda 1 - Entrega Testes Unitários - VID SP - VID CTB - VE | milestone | 0d | 2015-04-30 | 2015-04-30 | 164 | 2015-04-30 | 2015-04-30 | 0d | 58d |  |  |  |  |  | 0% | 0% |
| 166 | 1.4.2.2 | **Gestão de Metas** |  | 10d | 2015-06-15 | 2015-06-26 |  | 2015-06-15 | 2015-06-26 | 10d | 0d |  |  | 136h | 136 | 136 | 0% | 0% |
| 167 | 1.4.2.2.1 | **VS** |  | 5d | 2015-06-15 | 2015-06-19 |  | 2015-06-15 | 2015-06-19 | 5d | 0d |  |  | 40h | 40 | 40 | 0% | 0% |
| 168 | 1.4.2.2.1.1 | Realizar Testes Unitários |  | 2d | 2015-06-15 | 2015-06-16 | 148 | 2015-06-15 | 2015-06-16 | 2d | 0d |  | Juraci Silva | 16h | 16 | 16 | 0% | 0% |
| 169 | 1.4.2.2.1.2 | Ajustes de Testes Unitários |  | 3d | 2015-06-17 | 2015-06-19 | 168 | 2015-06-17 | 2015-06-19 | 3d | 25d |  | HRST 1 | 24h | 24 | 24 | 0% | 0% |

| ID | WBS | Task | Type | Duration | Start | Finish | Predecessors | Baseline start | Baseline finish | Baseline duration | Total slack | Free slack | Resources | Work | Cost | Baseline cost | % Planejado | % Realizado |
| --- | --- | --- | --- | --- | --- | --- | --- | --- | --- | --- | --- | --- | --- | --- | --- | --- | --- | --- |
| 170 | 1.4.2.2.2 | **VM** |  | 4d | 2015-06-17 | 2015-06-22 |  | 2015-06-17 | 2015-06-22 | 4d | 0d |  |  | 32h | 32 | 32 | 0% | 0% |
| 171 | 1.4.2.2.2.1 | Realizar Testes Unitários |  | 2d | 2015-06-17 | 2015-06-18 | 168 | 2015-06-17 | 2015-06-18 | 2d | 0d |  | Juraci Silva | 16h | 16 | 16 | 0% | 0% |
| 172 | 1.4.2.2.2.2 | Ajustes de Testes Unitários |  | 2d | 2015-06-19 | 2015-06-22 | 171 | 2015-06-19 | 2015-06-22 | 2d | 24d | 0d | HRST 2 | 16h | 16 | 16 | 0% | 0% |
| 173 | 1.4.2.2.3 | Onda 1 - Entrega Testes Unitários - VS e VM | milestone | 0d | 2015-06-22 | 2015-06-22 | 172 | 2015-06-22 | 2015-06-22 | 0d | 24d |  |  |  |  |  | 0% | 0% |
| 174 | 1.4.2.2.4 | **VID São Paulo e Curitiba** |  | 4d | 2015-06-19 | 2015-06-24 |  | 2015-06-19 | 2015-06-24 | 4d | 0d |  |  | 32h | 32 | 32 | 0% | 0% |
| 175 | 1.4.2.2.4.1 | Realizar Testes Unitários |  | 2d | 2015-06-19 | 2015-06-22 | 171 | 2015-06-19 | 2015-06-22 | 2d | 0d |  | Juraci Silva | 16h | 16 | 16 | 0% | 0% |
| 176 | 1.4.2.2.4.2 | Ajustes de Testes Unitários |  | 2d | 2015-06-23 | 2015-06-24 | 175 | 2015-06-23 | 2015-06-24 | 2d | 22d |  | HRST 3 | 16h | 16 | 16 | 0% | 0% |
| 177 | 1.4.2.2.5 | **VE** |  | 4d | 2015-06-23 | 2015-06-26 |  | 2015-06-23 | 2015-06-26 | 4d | 0d |  |  | 32h | 32 | 32 | 0% | 0% |
| 178 | 1.4.2.2.5.1 | Realizar Testes Unitários |  | 2d | 2015-06-23 | 2015-06-24 | 175 | 2015-06-23 | 2015-06-24 | 2d | 0d |  | Juraci Silva | 16h | 16 | 16 | 0% | 0% |
| 179 | 1.4.2.2.5.2 | Ajustes de Testes Unitários |  | 2d | 2015-06-25 | 2015-06-26 | 178 | 2015-06-25 | 2015-06-26 | 2d | 0d |  | HRST 1 | 16h | 16 | 16 | 0% | 0% |
| 180 | 1.4.2.2.6 | Onda 2 - Entrega Testes Unitários - VID SP - VID CTB - VE | milestone | 0d | 2015-06-26 | 2015-06-26 | 179 | 2015-06-26 | 2015-06-26 | 0d | 20d |  |  |  |  |  | 0% | 0% |
| 181 | 1.4.3 | **Testes Integrados** |  | 48d | 2015-05-04 | 2015-07-10 |  | 2015-05-04 | 2015-07-10 | 48d | 0d |  |  | 1640h | 1,640 | 1,640 | 0% | 0% |
| 182 | 1.4.3.1 | **Gestão de Competência** |  | 10d | 2015-05-04 | 2015-05-15 |  | 2015-05-04 | 2015-05-15 | 10d | 0d |  |  | 520h | 520 | 520 | 0% | 0% |
| 183 | 1.4.3.1.1 | Testes Integrados VS |  | 5d | 2015-05-04 | 2015-05-08 | 164 | 2015-05-04 | 2015-05-08 | 5d | 48d | 0d | VS; Rodney | 80h | 80 | 80 | 0% | 0% |
| 184 | 1.4.3.1.2 | Testes Integrados VM |  | 5d | 2015-05-04 | 2015-05-08 | 164 | 2015-05-04 | 2015-05-08 | 5d | 48d | 0d | VM; Rodney | 80h | 80 | 80 | 0% | 0% |
| 185 | 1.4.3.1.3 | Testes Integrados VID São Paulo e Curitiba |  | 5d | 2015-05-04 | 2015-05-08 | 164 | 2015-05-04 | 2015-05-08 | 5d | 48d | 0d | Rodney; VID Curitiba; VID São Paulo | 120h | 120 | 120 | 0% | 0% |
| 186 | 1.4.3.1.4 | Testes Integrados VE |  | 5d | 2015-05-04 | 2015-05-08 | 164 | 2015-05-04 | 2015-05-08 | 5d | 0d |  | Rodney; VE | 80h | 80 | 80 | 0% | 0% |
| 187 | 1.4.3.1.5 | **Ajustes Testes Integrados** |  | 5d | 2015-05-11 | 2015-05-15 |  | 2015-05-11 | 2015-05-15 | 5d | 0d |  |  | 160h | 160 | 160 | 0% | 0% |
| 188 | 1.4.3.1.5.1 | VS |  | 5d | 2015-05-11 | 2015-05-15 | 183 | 2015-05-11 | 2015-05-15 | 5d | 48d |  | HRST 1 | 40h | 40 | 40 | 0% | 0% |
| 189 | 1.4.3.1.5.2 | VM |  | 5d | 2015-05-11 | 2015-05-15 | 184 | 2015-05-11 | 2015-05-15 | 5d | 48d |  | HRST 1 | 40h | 40 | 40 | 0% | 0% |
| 190 | 1.4.3.1.5.3 | VID São Paulo e Curitiba |  | 5d | 2015-05-11 | 2015-05-15 | 185 | 2015-05-11 | 2015-05-15 | 5d | 48d |  | HRST 1 | 40h | 40 | 40 | 0% | 0% |
| 191 | 1.4.3.1.5.4 | VE |  | 5d | 2015-05-11 | 2015-05-15 | 186 | 2015-05-11 | 2015-05-15 | 5d | 0d |  | HRST 1 | 40h | 40 | 40 | 0% | 0% |
| 192 | 1.4.3.1.6 | **Termo de Aceite Fase 4** |  | 0d | 2015-05-15 | 2015-05-15 |  | 2015-05-15 | 2015-05-15 | 0d | 48d |  |  |  |  |  | 0% | 0% |
| 193 | 1.4.3.1.6.1 | Onda 1 - Assinatura Fase 4 - Preparação Final | milestone | 0d | 2015-05-15 | 2015-05-15 | 191 | 2015-05-15 | 2015-05-15 | 0d | 48d |  |  |  |  |  | 0% | 0% |

| ID | WBS | Task | Type | Duration | Start | Finish | Predecessors | Baseline start | Baseline finish | Baseline duration | Total slack | Free slack | Resources | Work | Cost | Baseline cost | % Planejado | % Realizado |
| --- | --- | --- | --- | --- | --- | --- | --- | --- | --- | --- | --- | --- | --- | --- | --- | --- | --- | --- |
| 194 | 1.4.3.2 | **Gestão de Metas** |  | 10d | 2015-06-29 | 2015-07-10 |  | 2015-06-29 | 2015-07-10 | 10d | 0d |  |  | 1120h | 1,120 | 1,120 | 0% | 0% |
| 195 | 1.4.3.2.1 | Testes Integrados VS |  | 5d | 2015-06-29 | 2015-07-03 | 179 | 2015-06-29 | 2015-07-03 | 5d | 10d | 0d | HRST 1; HRST 2; Rodney | 120h | 120 | 120 | 0% | 0% |
| 196 | 1.4.3.2.2 | Testes Integrados VM |  | 5d | 2015-06-29 | 2015-07-03 | 179 | 2015-06-29 | 2015-07-03 | 5d | 10d | 0d | HRST 1; HRST 2; Rodney | 120h | 120 | 120 | 0% | 0% |
| 197 | 1.4.3.2.3 | Testes Integrados VID São Paulo e Curitiba |  | 5d | 2015-06-29 | 2015-07-03 | 179 | 2015-06-29 | 2015-07-03 | 5d | 10d | 0d | HRST 1; HRST 2; Rodney | 120h | 120 | 120 | 0% | 0% |
| 198 | 1.4.3.2.4 | Testes Integrados VE |  | 5d | 2015-06-29 | 2015-07-03 | 179 | 2015-06-29 | 2015-07-03 | 5d | 0d |  | HRST 1; HRST 2; Rodney | 120h | 120 | 120 | 0% | 0% |
| 199 | 1.4.3.2.5 | **Ajustes Testes Integrados** |  | 5d | 2015-07-06 | 2015-07-10 |  | 2015-07-06 | 2015-07-10 | 5d | 0d |  |  | 640h | 640 | 640 | 0% | 0% |
| 200 | 1.4.3.2.5.1 | VS |  | 5d | 2015-07-06 | 2015-07-10 | 195 | 2015-07-06 | 2015-07-10 | 5d | 10d |  | HRST 1; HRST 2; HRST 3; Rodney | 160h | 160 | 160 | 0% | 0% |
| 201 | 1.4.3.2.5.2 | VM |  | 5d | 2015-07-06 | 2015-07-10 | 196 | 2015-07-06 | 2015-07-10 | 5d | 10d |  | HRST 1; HRST 2; HRST 3; Rodney | 160h | 160 | 160 | 0% | 0% |
| 202 | 1.4.3.2.5.3 | VID São Paulo e Curitiba |  | 5d | 2015-07-06 | 2015-07-10 | 197 | 2015-07-06 | 2015-07-10 | 5d | 10d |  | HRST 1; HRST 2; HRST 3; Rodney | 160h | 160 | 160 | 0% | 0% |
| 203 | 1.4.3.2.5.4 | VE |  | 5d | 2015-07-06 | 2015-07-10 | 198 | 2015-07-06 | 2015-07-10 | 5d | 0d |  | HRST 1; HRST 2; HRST 3; Rodney | 160h | 160 | 160 | 0% | 0% |
| 204 | 1.4.3.2.6 | **Termo de Aceite Fase 4** |  | 0d | 2015-07-10 | 2015-07-10 |  | 2015-07-10 | 2015-07-10 | 0d | 10d |  |  |  |  |  | 0% | 0% |
| 205 | 1.4.3.2.6.1 | Onda 2 - Assinatura Fase 4 - Preparação Final | milestone | 0d | 2015-07-10 | 2015-07-10 | 203 | 2015-07-10 | 2015-07-10 | 0d | 10d |  |  |  |  |  | 0% | 0% |
| 206 | 1.5 | **Fase 5 - Go Live e Operação Assistida** |  | 70d | 2015-04-13 | 2015-07-24 |  | 2015-04-13 | 2015-07-24 | 70d | 0d |  |  | 1744h | 1,744 | 1,744 | 0% | 0% |
| 207 | 1.5.1 | **Go Live - Onda 1 - Gestão de Competência** |  | 35d | 2015-04-13 | 2015-06-03 |  | 2015-04-13 | 2015-06-03 | 35d | 35d |  |  | 824h | 824 | 824 | 0% | 0% |
| 208 | 1.5.1.1 | **Treinamento** |  | 27d | 2015-04-13 | 2015-05-22 |  | 2015-04-13 | 2015-05-22 | 27d | 43d |  |  | 568h | 568 | 568 | 0% | 0% |
| 209 | 1.5.1.1.1 | Elaborar Material de Treinamento |  | 12d | 2015-04-13 | 2015-04-30 | 60 | 2015-04-13 | 2015-04-30 | 12d | 48d | 0d | HRST 1; HRST 2; HRST 3 | 288h | 288 | 288 | 0% | 0% |
| 210 | 1.5.1.1.2 | Validação/Ajustes Material de Treinamento |  | 10d | 2015-05-04 | 2015-05-15 | 209 | 2015-05-04 | 2015-05-15 | 10d | 48d |  | HRST 1; HRST 2; HRST 3 | 240h | 240 | 240 | 0% | 0% |
| 211 | 1.5.1.1.3 | Treinamento - Realização |  | 5d | 2015-05-18 | 2015-05-22 | 191 | 2015-05-18 | 2015-05-22 | 5d | 35d | 0d | HRST 1 | 40h | 40 | 40 | 0% | 0% |
| 212 | 1.5.1.1.4 | Onda 1 - Conclusão do Treinamento | milestone | 0d | 2015-05-22 | 2015-05-22 | 211 | 2015-05-22 | 2015-05-22 | 0d | 43d |  |  |  |  |  | 0% | 0% |
| 213 | 1.5.1.2 | Cutover |  | 5d | 2015-05-25 | 2015-05-29 | 211 | 2015-05-25 | 2015-05-29 | 5d | 35d | 0d | HRST 1; HRST 2; HRST 3; Rodney | 160h | 160 | 160 | 0% | 0% |
| 214 | 1.5.1.3 | Onda 1 - Go Live | milestone | 0d | 2015-05-29 | 2015-05-29 | 213 | 2015-05-29 | 2015-05-29 | 0d | 38d |  |  |  |  |  | 0% | 0% |
| 215 | 1.5.1.4 | Operação Assistida |  | 3d | 2015-06-01 | 2015-06-03 | 213 | 2015-06-01 | 2015-06-03 | 3d | 35d |  | HRST 1; HRST 2; HRST 3; Rodney | 96h | 96 | 96 | 0% | 0% |
| 216 | 1.5.2 | **Go Live - Onda 2 - Gestão de Metas** |  | 35.5d | 2015-06-03 | 2015-07-24 |  | 2015-06-03 | 2015-07-24 | 35.5d | 0d |  |  | 920h | 920 | 920 | 0% | 0% |
| 217 | 1.5.2.1 | **Treinamento** |  | 30.5d | 2015-06-03 | 2015-07-17 |  | 2015-06-03 | 2015-07-17 | 30.5d | 5d |  |  | 640h | 640 | 640 | 0% | 0% |
| 218 | 1.5.2.1.1 | Elaborar Material de Treinamento |  | 15d | 2015-06-03 | 2015-06-26 | 114 | 2015-06-03 | 2015-06-26 | 15d | 10.5d | 0d | HRST 1; HRST 2; HRST 3 | 360h | 360 | 360 | 0% | 0% |
| 219 | 1.5.2.1.2 | Validação/Ajustes Material de Treinamento |  | 10d | 2015-06-26 | 2015-07-10 | 218 | 2015-06-26 | 2015-07-10 | 10d | 10.5d |  | HRST 1; HRST 2; HRST 3 | 240h | 240 | 240 | 0% | 0% |
| 220 | 1.5.2.1.3 | Treinamento - Realização |  | 5d | 2015-07-13 | 2015-07-17 | 203 | 2015-07-13 | 2015-07-17 | 5d | 5d | 0d | HRST 1 | 40h | 40 | 40 | 0% | 0% |
| 221 | 1.5.2.1.4 | Onda 2 - Conclusão do Treinamento | milestone | 0d | 2015-07-17 | 2015-07-17 | 220 | 2015-07-17 | 2015-07-17 | 0d | 5d |  |  |  |  |  | 0% | 0% |
| 222 | 1.5.2.2 | Cutover |  | 5d | 2015-07-13 | 2015-07-17 | 203 | 2015-07-13 | 2015-07-17 | 5d | 0d |  | HRST 2; HRST 3; Rodney | 120h | 120 | 120 | 0% | 0% |
| 223 | 1.5.2.3 | Onda 2 - Go Live | milestone | 0d | 2015-07-17 | 2015-07-17 | 222 | 2015-07-17 | 2015-07-17 | 0d | 5d |  |  |  |  |  | 0% | 0% |
| 224 | 1.5.2.4 | Operação Assistida |  | 5d | 2015-07-20 | 2015-07-24 | 222 | 2015-07-20 | 2015-07-24 | 5d | 0d |  | HRST 1; HRST 2; HRST 3; Rodney | 160h | 160 | 160 | 0% | 0% |

| ID | WBS | Task | Type | Duration | Start | Finish | Predecessors | Complete | Remaining | Baseline start | Baseline finish | Baseline duration | Total slack | Free slack | Resources | Work | Actual work | Cost | Baseline cost | Actual cost | % Planejado | % Realizado | .SPI. | Text29 |
| --- | --- | --- | --- | --- | --- | --- | --- | --- | --- | --- | --- | --- | --- | --- | --- | --- | --- | --- | --- | --- | --- | --- | --- | --- |
| 225 | 2 | **(1) Projeto Metas e Competência - VS** |  | 104d | 2015-02-09 A | 2015-07-24 |  | 31% | 72.01d | 2015-02-09 | 2015-07-24 | 104d | 0d |  |  | 1960h | 500.48h | 1,960 | 1,960 | 500.48 | 31% | 26% | 0,81 | 25/07 |
| 226 | 2.1 | **Fase 1 - Preparação do Projeto** |  | 10d | 2015-02-09 A | 2015-02-20 A |  | 100% |  | 2015-02-09 | 2015-02-20 | 10d |  |  |  | 120h | 120h | 120 | 120 | 120 | 100% | 100% |  |  |
| 227 | 2.1.1 | Confirmação e Mobilização de Equipe |  | 8d | 2015-02-09 A | 2015-02-18 A |  | 100% |  | 2015-02-09 | 2015-02-18 | 8d |  |  | Rodney | 64h | 64h | 64 | 64 | 64 | 100% | 100% |  |  |
| 228 | 2.1.2 | Reunião Pré Kick-off |  | 1d | 2015-02-19 A | 2015-02-19 A | 227 | 100% |  | 2015-02-19 | 2015-02-19 | 1d |  |  | Leonardo; Rodney | 16h | 16h | 16 | 16 | 16 | 100% | 100% |  |  |
| 229 | 2.1.3 | Kick-off |  | 1d | 2015-02-20 A | 2015-02-20 A | 228 | 100% |  | 2015-02-20 | 2015-02-20 | 1d |  |  | TI Votorantim | 8h | 8h | 8 | 8 | 8 | 100% | 100% |  |  |
| 230 | 2.1.4 | Identificação dos Usuários |  | 2d | 2015-02-19 A | 2015-02-20 A | 227 | 100% |  | 2015-02-19 | 2015-02-20 | 2d |  |  | Leonardo; Rodney | 32h | 32h | 32 | 32 | 32 | 100% | 100% |  |  |
| 231 | 2.1.5 | **Termo de Aceite Fase 1** |  | 0d | 2015-02-20 A | 2015-02-20 A |  | 100% |  | 2015-02-20 | 2015-02-20 | 0d |  |  |  |  |  |  |  |  | 100% | 100% |  |  |
| 232 | 2.1.5.1 | Assiantura Fase 1 - Preparação do Projeto | milestone | 0d | 2015-02-20 A | 2015-02-20 A | 230 | 100% |  | 2015-02-20 | 2015-02-20 | 0d |  |  |  |  |  |  |  |  | 100% | 100% |  |  |
| 233 | 2.2 | **Fase 2 - Business Blueprint** |  | 10d | 2015-02-23 A | 2015-03-06 |  | 93% | 0.67d | 2015-02-23 | 2015-03-06 | 10d | 84d |  |  | 256h | 244h | 256 | 256 | 244 | 100% | 95% | 0,95 |  |
| 234 | 2.2.1 | **Levantamento Gestão de Metas** |  | 5d | 2015-02-23 A | 2015-02-27 |  | 95% | 0.25d | 2015-02-23 | 2015-02-27 | 5d | 89d |  |  | 112h | 106h | 112 | 112 | 106 | 100% | 95% | 0,95 |  |
| 235 | 2.2.1.1 | Mapeamento dos Processos |  | 3d | 2015-02-23 A | 2015-02-25 A | 230 | 100% |  | 2015-02-23 | 2015-02-25 | 3d |  |  | HRST 1; HRST 2; Rodney | 72h | 72h | 72 | 72 | 72 | 100% | 100% |  |  |
| 236 | 2.2.1.2 | Elaboração dos BBPs |  | 1d | 2015-02-26 A | 2015-02-26 A | 235 | 100% |  | 2015-02-26 | 2015-02-26 | 1d |  |  | HRST 1; HRST 2 | 16h | 16h | 16 | 16 | 16 | 100% | 100% |  |  |
| 237 | 2.2.1.3 | Ajustes / Aprovação dos BBPs |  | 1d | 2015-02-27 A | 2015-02-27 | 236 | 75% | 0.25d | 2015-02-27 | 2015-02-27 | 1d | 89d |  | HRST 1; HRST 2; Rodney | 24h | 18h | 24 | 24 | 18 | 100% | 75% | 0,75 |  |
| 238 | 2.2.2 | **Levantamento Gestão de Competência** |  | 7d | 2015-02-26 A | 2015-03-06 |  | 93% | 0.53d | 2015-02-26 | 2015-03-06 | 7d | 84d |  |  | 144h | 138h | 144 | 144 | 138 | 100% | 96% | 0,96 |  |
| 239 | 2.2.2.1 | Mapeamento dos Processos |  | 4d | 2015-02-26 A | 2015-03-03 A | 235 | 100% |  | 2015-02-26 | 2015-03-03 | 4d |  |  | HRST 1; HRST 2; Rodney | 96h | 96h | 96 | 96 | 96 | 100% | 100% |  |  |
| 240 | 2.2.2.2 | **Elaboração dos BBPs** |  | 1d | 2015-03-04 A | 2015-03-04 A |  | 100% |  | 2015-03-04 | 2015-03-04 | 1d |  |  |  | 16h | 16h | 16 | 16 | 16 | 100% | 100% |  |  |
| 241 | 2.2.2.2.1 | EP |  | 0.5d | 2015-03-04 A | 2015-03-04 A | 239 | 100% |  | 2015-03-04 | 2015-03-04 | 0.5d |  |  | HRST 1 | 4h | 4h | 4 | 4 | 4 | 100% | 100% |  |  |
| 242 | 2.2.2.2.2 | PDI |  | 0.5d | 2015-03-04 A | 2015-03-04 A | 241 | 100% |  | 2015-03-04 | 2015-03-04 | 0.5d |  |  | HRST 1 | 4h | 4h | 4 | 4 | 4 | 100% | 100% |  |  |
| 243 | 2.2.2.2.3 | Competência |  | 0.5d | 2015-03-04 A | 2015-03-04 A | 239 | 100% |  | 2015-03-04 | 2015-03-04 | 0.5d |  |  | HRST 2 | 4h | 4h | 4 | 4 | 4 | 100% | 100% |  |  |
| 244 | 2.2.2.2.4 | Sucessão |  | 0.5d | 2015-03-04 A | 2015-03-04 A | 243 | 100% |  | 2015-03-04 | 2015-03-04 | 0.5d |  |  | HRST 2 | 4h | 4h | 4 | 4 | 4 | 100% | 100% |  |  |
| 245 | 2.2.2.3 | **Ajustes / Aprovação dos BBPs** |  | 2d | 2015-03-05 A | 2015-03-06 |  | 81% | 0.38d | 2015-03-05 | 2015-03-06 | 2d | 84d |  |  | 32h | 26h | 32 | 32 | 26 | 100% | 81% | 0,81 |  |
| 246 | 2.2.2.3.1 | EP |  | 1d | 2015-03-05 A | 2015-03-05 A | 244 | 100% |  | 2015-03-05 | 2015-03-05 | 1d |  |  | HRST 1 | 8h | 8h | 8 | 8 | 8 | 100% | 100% |  |  |
| 247 | 2.2.2.3.2 | PDI |  | 1d | 2015-03-06 A | 2015-03-06 | 246 | 75% | 0.25d | 2015-03-06 | 2015-03-06 | 1d | 84d |  | HRST 1 | 8h | 6h | 8 | 8 | 6 | 100% | 75% | 0,75 |  |
| 248 | 2.2.2.3.3 | Competência |  | 1d | 2015-03-05 A | 2015-03-05 | 244 | 75% | 0.25d | 2015-03-05 | 2015-03-05 | 1d | 0.75d | 0d | HRST 2 | 8h | 6h | 8 | 8 | 6 | 100% | 75% | 0,75 |  |
| 249 | 2.2.2.3.4 | Sucessão |  | 1d | 2015-03-06 A | 2015-03-06 | 248 | 75% | 0.25d | 2015-03-06 | 2015-03-06 | 1d | 84d | 0d | HRST 2 | 8h | 6h | 8 | 8 | 6 | 100% | 75% | 0,75 |  |

| ID | WBS | Task | Type | Duration | Start | Finish | Predecessors | Complete | Remaining | Baseline start | Baseline finish | Baseline duration | Total slack | Free slack | Constraint | Resources | Work | Actual work | Cost | Baseline cost | Actual cost | % Planejado | % Realizado | .SPI. |
| --- | --- | --- | --- | --- | --- | --- | --- | --- | --- | --- | --- | --- | --- | --- | --- | --- | --- | --- | --- | --- | --- | --- | --- | --- |
| 250 | 2.2.2.4 | **Termo de Aceite Fase 2** |  | 0d | 2015-03-06 | 2015-03-06 |  |  |  | 2015-03-06 | 2015-03-06 | 0d | 84d |  |  |  |  |  |  |  |  | 100% | 0% |  |
| 251 | 2.2.2.4.1 | Assinatura Fase 2 - Business Blueprint | milestone | 0d | 2015-03-06 | 2015-03-06 | 249 |  |  | 2015-03-06 | 2015-03-06 | 0d | 84d |  |  |  |  |  |  |  |  | 100% | 0% |  |
| 252 | 2.3 | **Fase 3 - Realização** |  | 42d | 2015-03-23 A | 2015-05-25 |  | 35% | 27.19d | 2015-03-23 | 2015-05-25 | 42d | 42d |  |  |  | 464h | 136.48h | 464 | 464 | 136.48 | 52% | 29% | 0,57 |
| 253 | 2.3.1 | **Gestão de Competência VS** |  | 14d | 2015-03-23 A | 2015-04-10 |  | 47% | 7.42d | 2015-03-23 | 2015-04-10 | 14d | 70d |  |  |  | 376h | 136.48h | 376 | 376 | 136.48 | 64% | 36% | 0,57 |
| 254 | 2.3.1.1 | Configurar EP (Employee Profile) - VS |  | 5d | 2015-03-23 A | 2015-03-27 A |  | 100% |  | 2015-03-23 | 2015-03-27 | 5d |  |  | start no earlier than 2015-03-23 | HRST 1 | 40h | 40h | 40 | 40 | 40 | 100% | 100% |  |
| 255 | 2.3.1.2 | Configurar PDI (Palno de Desenvolvimento Individual) - VS |  | 5d | 2015-03-23 A | 2015-03-27 |  | 95% | 0.25d | 2015-03-23 | 2015-03-27 | 5d | 0.77d | 0d | start no earlier than 2015-03-23 | HRST 2 | 40h | 38h | 40 | 40 | 38 | 100% | 95% | 0,95 |
| 256 | 2.3.1.3 | Configurar Sucessão - VS |  | 5d | 2015-03-30 A | 2015-04-06 | 254, 255 | 55% | 2.25d | 2015-03-30 | 2015-04-06 | 5d | 74d |  |  | HRST 3 | 40h | 22h | 40 | 40 | 22 | 80% | 55% | 0,69 |
| 257 | 2.3.1.4 | Configurar PM - VS |  | 7d | 2015-03-30 A | 2015-04-08 | 254, 255 | 11% | 6.23d | 2015-03-30 | 2015-04-08 | 7d | 67d | 0d |  | HRST 1; HRST 2; HRST 3 | 168h | 18.48h | 168 | 168 | 18.48 | 57% | 11% | 0,19 |
| 258 | 2.3.1.5 | **Configurar Relatórios** |  | 2d | 2015-04-09 | 2015-04-10 |  |  |  | 2015-04-09 | 2015-04-10 | 2d | 67d |  |  |  | 16h |  | 16 | 16 |  | 0% | 0% |  |
| 259 | 2.3.1.5.1 | Cópia dos Relatórios da VC - VS |  | 0.5d | 2015-04-09 | 2015-04-09 | 257 |  |  | 2015-04-09 | 2015-04-09 | 0.5d | 67d | 0d |  | HRST 1 | 4h |  | 4 | 4 |  | 0% | 0% |  |
| 260 | 2.3.1.5.2 | Escala - Descrição e Pontuação - VS |  | 0.5d | 2015-04-09 | 2015-04-09 | 259 |  |  | 2015-04-09 | 2015-04-09 | 0.5d | 67d | 0d |  | HRST 1 | 4h |  | 4 | 4 |  | 0% | 0% |  |
| 261 | 2.3.1.5.3 | Comparativo entre Desempenho na Função e Crenças - VS |  | 1d | 2015-04-10 | 2015-04-10 | 260 |  |  | 2015-04-10 | 2015-04-10 | 1d | 67d | 0d |  | HRST 1 | 8h |  | 8 | 8 |  | 0% | 0% |  |
| 262 | 2.3.1.6 | Desenvolvimento Abap - Ajustes Integração |  | 9d | 2015-03-30 A | 2015-04-10 | 254, 255 | 25% | 6.75d | 2015-03-30 | 2015-04-10 | 9d | 70d | 0d |  | HRST 1 | 72h | 18h | 72 | 72 | 18 | 44% | 25% | 0,56 |
| 263 | 2.3.1.7 | **Termo de Aceite Fase 3 - Realização** |  | 0d | 2015-04-10 | 2015-04-10 |  |  |  | 2015-04-10 | 2015-04-10 | 0d | 70d |  |  |  |  |  |  |  |  | 0% | 0% |  |
| 264 | 2.3.1.7.1 | Onda 1 - Assinatura Fase 3 - Realização - VS | milestone | 0d | 2015-04-10 | 2015-04-10 | 262 |  |  | 2015-04-10 | 2015-04-10 | 0d | 70d |  |  |  |  |  |  |  |  | 0% | 0% |  |
| 265 | 2.3.2 | **Gestão de Metas VS** |  | 11d | 2015-05-11 | 2015-05-25 |  |  |  | 2015-05-11 | 2015-05-25 | 11d | 42d |  |  |  | 88h |  | 88 | 88 |  | 0% | 0% |  |
| 266 | 2.3.2.1 | Alteração de label na instância |  | 1d | 2015-05-11 | 2015-05-11 | 300 |  |  | 2015-05-11 | 2015-05-11 | 1d | 42d | 0d |  | HRST 2 | 8h |  | 8 | 8 |  | 0% | 0% |  |
| 267 | 2.3.2.2 | Configurar o mapa de rota |  | 1d | 2015-05-12 | 2015-05-12 | 266 |  |  | 2015-05-12 | 2015-05-12 | 1d | 42d | 0d |  | HRST 2 | 8h |  | 8 | 8 |  | 0% | 0% |  |
| 268 | 2.3.2.3 | Configurar Formulários |  | 1d | 2015-05-13 | 2015-05-13 | 267 |  |  | 2015-05-13 | 2015-05-13 | 1d | 42d | 0d |  | HRST 2 | 8h |  | 8 | 8 |  | 0% | 0% |  |
| 269 | 2.3.2.4 | Configurar permissões |  | 1d | 2015-05-14 | 2015-05-14 | 268 |  |  | 2015-05-14 | 2015-05-14 | 1d | 42d | 0d |  | HRST 2 | 8h |  | 8 | 8 |  | 0% | 0% |  |
| 270 | 2.3.2.5 | Definir layout para importar a Biblioteca de Metas |  | 1d | 2015-05-15 | 2015-05-15 | 269 |  |  | 2015-05-15 | 2015-05-15 | 1d | 42d | 0d |  | HRST 2 | 8h |  | 8 | 8 |  | 0% | 0% |  |
| 271 | 2.3.2.6 | Definir layout para carga de empregados |  | 1d | 2015-05-18 | 2015-05-18 | 270 |  |  | 2015-05-18 | 2015-05-18 | 1d | 42d | 0d |  | HRST 2 | 8h |  | 8 | 8 |  | 0% | 0% |  |
| 272 | 2.3.2.7 | Passar para Votorantim informações para carga de fotos |  | 1d | 2015-05-19 | 2015-05-19 | 271 |  |  | 2015-05-19 | 2015-05-19 | 1d | 42d | 0d |  | HRST 2 | 8h |  | 8 | 8 |  | 0% | 0% |  |
| 273 | 2.3.2.8 | Fazer a carga de metas |  | 1d | 2015-05-20 | 2015-05-20 | 272 |  |  | 2015-05-20 | 2015-05-20 | 1d | 42d | 0d |  | HRST 2 | 8h |  | 8 | 8 |  | 0% | 0% |  |
| 274 | 2.3.2.9 | Fazer a carga de empregados |  | 1d | 2015-05-21 | 2015-05-21 | 273 |  |  | 2015-05-21 | 2015-05-21 | 1d | 42d | 0d |  | HRST 2 | 8h |  | 8 | 8 |  | 0% | 0% |  |
| 275 | 2.3.2.10 | Agendar job para carga de fotos |  | 1d | 2015-05-22 | 2015-05-22 | 274 |  |  | 2015-05-22 | 2015-05-22 | 1d | 42d | 0d |  | HRST 2 | 8h |  | 8 | 8 |  | 0% | 0% |  |
| 276 | 2.3.2.11 | Configurar Relatórios |  | 1d | 2015-05-25 | 2015-05-25 | 275 |  |  | 2015-05-25 | 2015-05-25 | 1d | 42d | 0d |  | HRST 2 | 8h |  | 8 | 8 |  | 0% | 0% |  |

| ID | WBS | Task | Type | Duration | Start | Finish | Predecessors | Baseline start | Baseline finish | Baseline duration | Total slack | Free slack | Constraint | Resources | Work | Cost | Baseline cost | % Planejado | % Realizado |
| --- | --- | --- | --- | --- | --- | --- | --- | --- | --- | --- | --- | --- | --- | --- | --- | --- | --- | --- | --- |
| 277 | 2.3.2.12 | **Onda 2 - Termo de Aceite - Realização** |  | 0d | 2015-05-25 | 2015-05-25 |  | 2015-05-25 | 2015-05-25 | 0d | 42d |  |  |  |  |  |  | 0% | 0% |
| 278 | 2.3.2.12.1 | Onda 2 - Entrega Fase 3 - Realização - VS | milestone | 0d | 2015-05-25 | 2015-05-25 | 276 | 2015-05-25 | 2015-05-25 | 0d | 42d |  |  |  |  |  |  | 0% | 0% |
| 279 | 2.4 | **Fase 4 - Preparação Final** |  | 60d | 2015-04-13 | 2015-07-10 |  | 2015-04-13 | 2015-07-10 | 60d | 10d |  |  |  | 504h | 504 | 504 | 0% | 0% |
| 280 | 2.4.1 | **Testes Funcionais** |  | 38d | 2015-04-13 | 2015-06-10 |  | 2015-04-13 | 2015-06-10 | 38d | 32d |  |  |  | 48h | 48 | 48 | 0% | 0% |
| 281 | 2.4.1.1 | **Gestão de Competência VS** |  | 3d | 2015-04-13 | 2015-04-15 |  | 2015-04-13 | 2015-04-15 | 3d | 67d |  |  |  | 24h | 24 | 24 | 0% | 0% |
| 282 | 2.4.1.1.1 | Realizar Testes Funcionais - VS |  | 1d | 2015-04-13 | 2015-04-13 | 261 | 2015-04-13 | 2015-04-13 | 1d | 67d | 0d |  | HRST 1 | 8h | 8 | 8 | 0% | 0% |
| 283 | 2.4.1.1.2 | Ajustes Testes Funcionais - VS |  | 2d | 2015-04-14 | 2015-04-15 | 282 | 2015-04-14 | 2015-04-15 | 2d | 67d | 0d |  | HRST 1 | 16h | 16 | 16 | 0% | 0% |
| 284 | 2.4.1.1.3 | Onda 1 - Entrega Testes Funcionais - VS | milestone | 0d | 2015-04-15 | 2015-04-15 | 283 | 2015-04-15 | 2015-04-15 | 0d | 67d |  |  |  |  |  |  | 0% | 0% |
| 285 | 2.4.1.2 | **Gestão de Metas VS** |  | 3d | 2015-06-08 | 2015-06-10 |  | 2015-06-08 | 2015-06-10 | 3d | 32d |  |  |  | 24h | 24 | 24 | 0% | 0% |
| 286 | 2.4.1.2.1 | Realizar Testes Funcionais |  | 1d | 2015-06-08 | 2015-06-08 |  | 2015-06-08 | 2015-06-08 | 1d | 32d | 0d | start no earlier than 2015-06-08 | HRST 3 | 8h | 8 | 8 | 0% | 0% |
| 287 | 2.4.1.2.2 | Ajustes Testes Funcionais |  | 2d | 2015-06-09 | 2015-06-10 | 286 | 2015-06-09 | 2015-06-10 | 2d | 32d | 0d |  | HRST 3 | 16h | 16 | 16 | 0% | 0% |
| 288 | 2.4.1.2.3 | Onda 2 - Entrega Testes Funcionais - VS | milestone | 0d | 2015-06-10 | 2015-06-10 | 287 | 2015-06-10 | 2015-06-10 | 0d | 32d |  |  |  |  |  |  | 0% | 0% |
| 289 | 2.4.2 | **Testes Unitários** |  | 40d | 2015-04-22 | 2015-06-19 |  | 2015-04-22 | 2015-06-19 | 40d | 25d |  |  |  | 96h | 96 | 96 | 0% | 0% |
| 290 | 2.4.2.1 | **Gestão de Competência VS** |  | 5d | 2015-04-22 | 2015-04-28 |  | 2015-04-22 | 2015-04-28 | 5d | 60d |  |  |  | 56h | 56 | 56 | 0% | 0% |
| 291 | 2.4.2.1.1 | Realizar Testes Unitários - VS |  | 2d | 2015-04-22 | 2015-04-23 |  | 2015-04-22 | 2015-04-23 | 2d | 60d | 0d | start no earlier than 2015-04-22 | HRST 1; Juraci Silva | 32h | 32 | 32 | 0% | 0% |
| 292 | 2.4.2.1.2 | Ajustes Testes Unitários - VS |  | 3d | 2015-04-24 | 2015-04-28 | 291 | 2015-04-24 | 2015-04-28 | 3d | 60d | 0d |  | HRST 1 | 24h | 24 | 24 | 0% | 0% |
| 293 | 2.4.2.1.3 | Onda 1 - Entrega Testes Unitários - VS | milestone | 0d | 2015-04-28 | 2015-04-28 | 292 | 2015-04-28 | 2015-04-28 | 0d | 60d |  |  |  |  |  |  | 0% | 0% |
| 294 | 2.4.2.2 | **Gestão de Metas VS** |  | 5d | 2015-06-15 | 2015-06-19 |  | 2015-06-15 | 2015-06-19 | 5d | 25d |  |  |  | 40h | 40 | 40 | 0% | 0% |
| 295 | 2.4.2.2.1 | Realizar Testes Unitários - VS |  | 2d | 2015-06-15 | 2015-06-16 |  | 2015-06-15 | 2015-06-16 | 2d | 25d | 0d | start no earlier than 2015-06-15 | Juraci Silva | 16h | 16 | 16 | 0% | 0% |
| 296 | 2.4.2.2.2 | Ajustes de Testes Unitários - VS |  | 3d | 2015-06-17 | 2015-06-19 | 295 | 2015-06-17 | 2015-06-19 | 3d | 25d | 0d |  | HRST 1 | 24h | 24 | 24 | 0% | 0% |
| 297 | 2.4.2.2.3 | Onda 2 - Entrega Testes Unitários - VS | milestone | 0d | 2015-06-19 | 2015-06-19 | 296 | 2015-06-19 | 2015-06-19 | 0d | 25d |  |  |  |  |  |  | 0% | 0% |
| 298 | 2.4.3 | **Testes Integrados** |  | 48d | 2015-05-04 | 2015-07-10 |  | 2015-05-04 | 2015-07-10 | 48d | 10d |  |  |  | 360h | 360 | 360 | 0% | 0% |
| 299 | 2.4.3.1 | **Gestão de Competência VS** |  | 10d | 2015-05-04 | 2015-05-15 |  | 2015-05-04 | 2015-05-15 | 10d | 35d |  |  |  | 120h | 120 | 120 | 0% | 0% |
| 300 | 2.4.3.1.1 | Testes Integrados VS |  | 5d | 2015-05-04 | 2015-05-08 |  | 2015-05-04 | 2015-05-08 | 5d | 35d | 0d | start no earlier than 2015-05-04 | VS; Rodney | 80h | 80 | 80 | 0% | 0% |
| 301 | 2.4.3.1.2 | Ajustes Testes Integrados VS |  | 5d | 2015-05-11 | 2015-05-15 | 300 | 2015-05-11 | 2015-05-15 | 5d | 35d | 0d |  | HRST 1 | 40h | 40 | 40 | 0% | 0% |

| ID | WBS | Task | Type | Duration | Start | Finish | Predecessors | Complete | Remaining | Baseline start | Baseline finish | Baseline duration | Total slack | Free slack | Constraint | Resources | Work | Actual work | Cost | Baseline cost | Actual cost | % Planejado | % Realizado | .SPI. |
| --- | --- | --- | --- | --- | --- | --- | --- | --- | --- | --- | --- | --- | --- | --- | --- | --- | --- | --- | --- | --- | --- | --- | --- | --- |
| 302 | 2.4.3.1.3 | **Onda 1 - Termo de Aceite Fase 4** |  | 0d | 2015-05-15 | 2015-05-15 |  |  |  | 2015-05-15 | 2015-05-15 | 0d | 48d |  |  |  |  |  |  |  |  | 0% | 0% |  |
| 303 | 2.4.3.1.3.1 | Onda 1 - Assinatura Fase 4 - Preparação Final - VS | milestone | 0d | 2015-05-15 | 2015-05-15 | 301 |  |  | 2015-05-15 | 2015-05-15 | 0d | 48d |  |  |  |  |  |  |  |  | 0% | 0% |  |
| 304 | 2.4.3.2 | **Gestão de Metas VS** |  | 10d | 2015-06-29 | 2015-07-10 |  |  |  | 2015-06-29 | 2015-07-10 | 10d | 0d |  |  |  | 240h |  | 240 | 240 |  | 0% | 0% |  |
| 305 | 2.4.3.2.1 | Testes Integrados VS |  | 5d | 2015-06-29 | 2015-07-03 |  |  |  | 2015-06-29 | 2015-07-03 | 5d | 0d |  | start no earlier than 2015-06-29 | HRST 1; HRST 2; Rodney | 120h |  | 120 | 120 |  | 0% | 0% |  |
| 306 | 2.4.3.2.2 | Ajustes Testes Integrados VS |  | 5d | 2015-07-06 | 2015-07-10 | 305 |  |  | 2015-07-06 | 2015-07-10 | 5d | 0d |  |  | HRST 1; HRST 2; Rodney | 120h |  | 120 | 120 |  | 0% | 0% |  |
| 307 | 2.4.3.2.3 | **Onda 2 - Termo de Aceite Fase 4** |  | 0d | 2015-07-10 | 2015-07-10 |  |  |  | 2015-07-10 | 2015-07-10 | 0d | 10d |  |  |  |  |  |  |  |  | 0% | 0% |  |
| 308 | 2.4.3.2.3.1 | Onda 2 - Assinatura Fase 4 - Preparação Final - VS | milestone | 0d | 2015-07-10 | 2015-07-10 | 306 |  |  | 2015-07-10 | 2015-07-10 | 0d | 10d |  |  |  |  |  |  |  |  | 0% | 0% |  |
| 309 | 2.5 | **Fase 5 - Go Live e Operacao Assistida** |  | 48d | 2015-05-18 | 2015-07-24 |  |  |  | 2015-05-18 | 2015-07-24 | 48d | 0d |  |  |  | 616h |  | 616 | 616 |  | 0% | 0% |  |
| 310 | 2.5.1 | **Go Live - Onda 1 - Gestão de Competência** |  | 13d | 2015-05-18 | 2015-06-03 |  |  |  | 2015-05-18 | 2015-06-03 | 13d | 35d |  |  |  | 296h |  | 296 | 296 |  | 0% | 0% |  |
| 311 | 2.5.1.1 | Treinamento |  | 5d | 2015-05-18 | 2015-05-22 | 301 |  |  | 2015-05-18 | 2015-05-22 | 5d | 35d | 0d |  | HRST 1 | 40h |  | 40 | 40 |  | 0% | 0% |  |
| 312 | 2.5.1.2 | Cutover |  | 5d | 2015-05-25 | 2015-05-29 | 311 |  |  | 2015-05-25 | 2015-05-29 | 5d | 35d | 0d |  | HRST 1; HRST 2; HRST 3; Rodney | 160h |  | 160 | 160 |  | 0% | 0% |  |
| 313 | 2.5.1.3 | Onda 1 - Go Live | milestone | 0d | 2015-05-29 | 2015-05-29 | 312 |  |  | 2015-05-29 | 2015-05-29 | 0d | 38d |  |  |  |  |  |  |  |  | 0% | 0% |  |
| 314 | 2.5.1.4 | Operação Assistida |  | 3d | 2015-06-01 | 2015-06-03 | 312 |  |  | 2015-06-01 | 2015-06-03 | 3d | 35d |  |  | HRST 1; HRST 2; HRST 3; Rodney | 96h |  | 96 | 96 |  | 0% | 0% |  |
| 315 | 2.5.2 | **Go Live - Onda 2 - Gestão de Metas** |  | 10d | 2015-07-13 | 2015-07-24 |  |  |  | 2015-07-13 | 2015-07-24 | 10d | 0d |  |  |  | 320h |  | 320 | 320 |  | 0% | 0% |  |
| 316 | 2.5.2.1 | Treinamento |  | 5d | 2015-07-13 | 2015-07-17 | 306 |  |  | 2015-07-13 | 2015-07-17 | 5d | 5d |  |  | HRST 1 | 40h |  | 40 | 40 |  | 0% | 0% |  |
| 317 | 2.5.2.2 | Cutover |  | 5d | 2015-07-13 | 2015-07-17 | 306 |  |  | 2015-07-13 | 2015-07-17 | 5d | 0d |  |  | HRST 2; HRST 3; Rodney | 120h |  | 120 | 120 |  | 0% | 0% |  |
| 318 | 2.5.2.3 | Onda 2 - Go Live | milestone | 0d | 2015-07-17 | 2015-07-17 | 317 |  |  | 2015-07-17 | 2015-07-17 | 0d | 5d |  |  |  |  |  |  |  |  | 0% | 0% |  |
| 319 | 2.5.2.4 | Operação Assistida |  | 5d | 2015-07-20 | 2015-07-24 | 317 |  |  | 2015-07-20 | 2015-07-24 | 5d | 0d |  |  | HRST 1; HRST 2; HRST 3; Rodney | 160h |  | 160 | 160 |  | 0% | 0% |  |
| 320 | 3 | **(2) Projeto Metas e Competência - VM** |  | 104d | 2015-02-09 A | 2015-07-24 |  | 31% | 71.48d | 2015-02-09 | 2015-07-24 | 104d | 0d |  |  |  | 1928h | 498.48h | 1,928 | 1,928 | 498.48 | 32% | 26% | 0,81 |
| 321 | 3.1 | **Fase 1 - Preparação do Projeto** |  | 10d | 2015-02-09 A | 2015-02-20 A |  | 100% |  | 2015-02-09 | 2015-02-20 | 10d |  |  |  |  | 120h | 120h | 120 | 120 | 120 | 100% | 100% |  |
| 322 | 3.1.1 | Confirmação e Mobilização de Equipe |  | 8d | 2015-02-09 A | 2015-02-18 A |  | 100% |  | 2015-02-09 | 2015-02-18 | 8d |  |  |  | Rodney | 64h | 64h | 64 | 64 | 64 | 100% | 100% |  |
| 323 | 3.1.2 | Reunião Pré Kick-off |  | 1d | 2015-02-19 A | 2015-02-19 A | 322 | 100% |  | 2015-02-19 | 2015-02-19 | 1d |  |  |  | Leonardo; Rodney | 16h | 16h | 16 | 16 | 16 | 100% | 100% |  |
| 324 | 3.1.3 | Kick-Off |  | 1d | 2015-02-20 A | 2015-02-20 A | 323 | 100% |  | 2015-02-20 | 2015-02-20 | 1d |  |  |  | TI Votorantim | 8h | 8h | 8 | 8 | 8 | 100% | 100% |  |
| 325 | 3.1.4 | Identificação dos Usuários |  | 2d | 2015-02-19 A | 2015-02-20 A | 322 | 100% |  | 2015-02-19 | 2015-02-20 | 2d |  |  |  | Leonardo; Rodney | 32h | 32h | 32 | 32 | 32 | 100% | 100% |  |

| ID | WBS | Task | Type | Duration | Start | Finish | Predecessors | Complete | Remaining | Baseline start | Baseline finish | Baseline duration | Total slack | Free slack | Constraint | Resources | Work | Actual work | Cost | Baseline cost | Actual cost | % Planejado | % Realizado | .SPI. |
| --- | --- | --- | --- | --- | --- | --- | --- | --- | --- | --- | --- | --- | --- | --- | --- | --- | --- | --- | --- | --- | --- | --- | --- | --- |
| 326 | 3.1.5 | **Termo de Aceite Fase 1** |  | 0d | 2015-02-20 A | 2015-02-20 A |  | 100% |  | 2015-02-20 | 2015-02-20 | 0d |  |  |  |  |  |  |  |  |  | 100% | 100% |  |
| 327 | 3.1.5.1 | Assinatura Fase 1 - Preparação do Projeto | milestone | 0d | 2015-02-20 A | 2015-02-20 A | 325 | 100% |  | 2015-02-20 | 2015-02-20 | 0d |  |  |  |  |  |  |  |  |  | 100% | 100% |  |
| 328 | 3.2 | **Fase 2 - Business Blueprint** |  | 10d | 2015-02-23 A | 2015-03-06 |  | 92% | 0.83d | 2015-02-23 | 2015-03-06 | 10d | 84d |  |  |  | 256h | 242h | 256 | 256 | 242 | 100% | 95% | 0,95 |
| 329 | 3.2.1 | **Levantamento Gestão de Metas** |  | 5d | 2015-02-23 A | 2015-02-27 |  | 95% | 0.25d | 2015-02-23 | 2015-02-27 | 5d | 89d |  |  |  | 112h | 106h | 112 | 112 | 106 | 100% | 95% | 0,95 |
| 330 | 3.2.1.1 | Mapeamento dos Processos |  | 3d | 2015-02-23 A | 2015-02-25 A | 325 | 100% |  | 2015-02-23 | 2015-02-25 | 3d |  |  |  | HRST 1; HRST 2; Rodney | 72h | 72h | 72 | 72 | 72 | 100% | 100% |  |
| 331 | 3.2.1.2 | Elaboração dos BBPs |  | 1d | 2015-02-26 A | 2015-02-26 A | 330 | 100% |  | 2015-02-26 | 2015-02-26 | 1d |  |  |  | HRST 1; HRST 2 | 16h | 16h | 16 | 16 | 16 | 100% | 100% |  |
| 332 | 3.2.1.3 | Ajustes / Aprovação dos BBPs |  | 1d | 2015-02-27 A | 2015-02-27 | 331 | 75% | 0.25d | 2015-02-27 | 2015-02-27 | 1d | 89d |  |  | HRST 1; HRST 2; Rodney | 24h | 18h | 24 | 24 | 18 | 100% | 75% | 0,75 |
| 333 | 3.2.2 | **Levantamento Gestão de Competência** |  | 7d | 2015-02-26 A | 2015-03-06 |  | 90% | 0.7d | 2015-02-26 | 2015-03-06 | 7d | 84d |  |  |  | 144h | 136h | 144 | 144 | 136 | 100% | 94% | 0,94 |
| 334 | 3.2.2.1 | Mapeamento dos Processos |  | 4d | 2015-02-26 A | 2015-03-03 A | 330 | 100% |  | 2015-02-26 | 2015-03-03 | 4d |  |  |  | HRST 1; HRST 2; Rodney | 96h | 96h | 96 | 96 | 96 | 100% | 100% |  |
| 335 | 3.2.2.2 | **Elaboração dos BBPs** |  | 1d | 2015-03-04 A | 2015-03-04 A |  | 100% |  | 2015-03-04 | 2015-03-04 | 1d |  |  |  |  | 16h | 16h | 16 | 16 | 16 | 100% | 100% |  |
| 336 | 3.2.2.2.1 | EP |  | 0.5d | 2015-03-04 A | 2015-03-04 A | 334 | 100% |  | 2015-03-04 | 2015-03-04 | 0.5d |  |  |  | HRST 1 | 4h | 4h | 4 | 4 | 4 | 100% | 100% |  |
| 337 | 3.2.2.2.2 | PDI |  | 0.5d | 2015-03-04 A | 2015-03-04 A | 336 | 100% |  | 2015-03-04 | 2015-03-04 | 0.5d |  |  |  | HRST 1 | 4h | 4h | 4 | 4 | 4 | 100% | 100% |  |
| 338 | 3.2.2.2.3 | Competência |  | 0.5d | 2015-03-04 A | 2015-03-04 A | 334 | 100% |  | 2015-03-04 | 2015-03-04 | 0.5d |  |  |  | HRST 2 | 4h | 4h | 4 | 4 | 4 | 100% | 100% |  |
| 339 | 3.2.2.2.4 | Sucessão |  | 0.5d | 2015-03-04 A | 2015-03-04 A | 338 | 100% |  | 2015-03-04 | 2015-03-04 | 0.5d |  |  |  | HRST 2 | 4h | 4h | 4 | 4 | 4 | 100% | 100% |  |
| 340 | 3.2.2.3 | **Ajustes / Aprovação dos BBPs** |  | 2d | 2015-03-05 A | 2015-03-06 |  | 75% | 0.5d | 2015-03-05 | 2015-03-06 | 2d | 84d |  |  |  | 32h | 24h | 32 | 32 | 24 | 100% | 75% | 0,75 |
| 341 | 3.2.2.3.1 | EP |  | 1d | 2015-03-05 A | 2015-03-05 | 339 | 75% | 0.25d | 2015-03-05 | 2015-03-05 | 1d | 0.75d | 0d |  | HRST 1 | 8h | 6h | 8 | 8 | 6 | 100% | 75% | 0,75 |
| 342 | 3.2.2.3.2 | PDI |  | 1d | 2015-03-06 A | 2015-03-06 | 341 | 75% | 0.25d | 2015-03-06 | 2015-03-06 | 1d | 84d |  |  | HRST 1 | 8h | 6h | 8 | 8 | 6 | 100% | 75% | 0,75 |
| 343 | 3.2.2.3.3 | Competência |  | 1d | 2015-03-05 A | 2015-03-05 | 339 | 75% | 0.25d | 2015-03-05 | 2015-03-05 | 1d | 0.75d | 0d |  | HRST 2 | 8h | 6h | 8 | 8 | 6 | 100% | 75% | 0,75 |
| 344 | 3.2.2.3.4 | Sucessão |  | 1d | 2015-03-06 A | 2015-03-06 | 343 | 75% | 0.25d | 2015-03-06 | 2015-03-06 | 1d | 84d | 0d |  | HRST 2 | 8h | 6h | 8 | 8 | 6 | 100% | 75% | 0,75 |
| 345 | 3.2.2.4 | **Termo de Aceite Fase 2** |  | 0d | 2015-03-06 | 2015-03-06 |  |  |  | 2015-03-06 | 2015-03-06 | 0d | 84d |  |  |  |  |  |  |  |  | 100% | 0% |  |
| 346 | 3.2.2.4.1 | Assinatura Fase 2 - Business Blueprint | milestone | 0d | 2015-03-06 | 2015-03-06 | 344 |  |  | 2015-03-06 | 2015-03-06 | 0d | 84d |  |  |  |  |  |  |  |  | 100% | 0% |  |
| 347 | 3.3 | **Fase 3 - Realização** |  | 42d | 2015-03-23 A | 2015-05-25 |  | 35% | 27.19d | 2015-03-23 | 2015-05-25 | 42d | 42d |  |  |  | 464h | 136.48h | 464 | 464 | 136.48 | 52% | 29% | 0,57 |
| 348 | 3.3.1 | **Gestão de Competência VM** |  | 14d | 2015-03-23 A | 2015-04-10 |  | 47% | 7.42d | 2015-03-23 | 2015-04-10 | 14d | 70d |  |  |  | 376h | 136.48h | 376 | 376 | 136.48 | 64% | 36% | 0,57 |
| 349 | 3.3.1.1 | Configurar EP (Employee Profile) - VM |  | 5d | 2015-03-23 A | 2015-03-27 A |  | 100% |  | 2015-03-23 | 2015-03-27 | 5d |  |  | start no earlier than 2015-03-23 | HRST 1 | 40h | 40h | 40 | 40 | 40 | 100% | 100% |  |
| 350 | 3.3.1.2 | Configurar PDI (Palno de Desenvolvimento Individual) - VM |  | 5d | 2015-03-23 A | 2015-03-27 |  | 95% | 0.25d | 2015-03-23 | 2015-03-27 | 5d | 0.77d | 0d | start no earlier than 2015-03-23 | HRST 2 | 40h | 38h | 40 | 40 | 38 | 100% | 95% | 0,95 |
| 351 | 3.3.1.3 | Configurar Sucessão - VM |  | 5d | 2015-03-30 A | 2015-04-06 | 349, 350 | 55% | 2.25d | 2015-03-30 | 2015-04-06 | 5d | 74d |  |  | HRST 3 | 40h | 22h | 40 | 40 | 22 | 80% | 55% | 0,69 |
| 352 | 3.3.1.4 | Configurar PM - VM |  | 7d | 2015-03-30 A | 2015-04-08 | 349, 350 | 11% | 6.23d | 2015-03-30 | 2015-04-08 | 7d | 67d | 0d |  | HRST 1; HRST 2; HRST 3 | 168h | 18.48h | 168 | 168 | 18.48 | 57% | 11% | 0,19 |

| ID | WBS | Task | Type | Duration | Start | Finish | Predecessors | Complete | Remaining | Baseline start | Baseline finish | Baseline duration | Total slack | Free slack | Resources | Work | Actual work | Cost | Baseline cost | Actual cost | % Planejado | % Realizado | .SPI. |
| --- | --- | --- | --- | --- | --- | --- | --- | --- | --- | --- | --- | --- | --- | --- | --- | --- | --- | --- | --- | --- | --- | --- | --- |
| 353 | 3.3.1.5 | **Configurar Relatórios** |  | 2d | 2015-04-09 | 2015-04-10 |  |  |  | 2015-04-09 | 2015-04-10 | 2d | 67d |  |  | 16h |  | 16 | 16 |  | 0% | 0% |  |
| 354 | 3.3.1.5.1 | Cópia dos Relatórios da VC - VM |  | 0.5d | 2015-04-09 | 2015-04-09 | 352 |  |  | 2015-04-09 | 2015-04-09 | 0.5d | 67d | 0d | HRST 1 | 4h |  | 4 | 4 |  | 0% | 0% |  |
| 355 | 3.3.1.5.2 | Escala - Descrição e Pontuação - VM |  | 0.5d | 2015-04-09 | 2015-04-09 | 354 |  |  | 2015-04-09 | 2015-04-09 | 0.5d | 67d | 0d | HRST 1 | 4h |  | 4 | 4 |  | 0% | 0% |  |
| 356 | 3.3.1.5.3 | Comparativo entre Desempenho na Função e Crenças - VM |  | 1d | 2015-04-10 | 2015-04-10 | 355 |  |  | 2015-04-10 | 2015-04-10 | 1d | 67d | 0d | HRST 1 | 8h |  | 8 | 8 |  | 0% | 0% |  |
| 357 | 3.3.1.6 | Desenvolvimento Abap - Ajustes Integração |  | 9d | 2015-03-30 A | 2015-04-10 | 349, 350 | 25% | 6.75d | 2015-03-30 | 2015-04-10 | 9d | 70d | 0d | HRST 1 | 72h | 18h | 72 | 72 | 18 | 44% | 25% | 0,56 |
| 358 | 3.3.1.7 | **Onda 1 - Termo de Aceite Fase 3 - Realização** |  | 0d | 2015-04-10 | 2015-04-10 |  |  |  | 2015-04-10 | 2015-04-10 | 0d | 70d |  |  |  |  |  |  |  | 0% | 0% |  |
| 359 | 3.3.1.7.1 | Onda 1 - Assinatura Fase 3 - Realização - VM | milestone | 0d | 2015-04-10 | 2015-04-10 | 357 |  |  | 2015-04-10 | 2015-04-10 | 0d | 70d |  |  |  |  |  |  |  | 0% | 0% |  |
| 360 | 3.3.2 | **Gestão de Metas VM** |  | 11d | 2015-05-11 | 2015-05-25 |  |  |  | 2015-05-11 | 2015-05-25 | 11d | 42d |  |  | 88h |  | 88 | 88 |  | 0% | 0% |  |
| 361 | 3.3.2.1 | Alteração de label na instância |  | 1d | 2015-05-11 | 2015-05-11 | 395 |  |  | 2015-05-11 | 2015-05-11 | 1d | 42d | 0d | HRST 3 | 8h |  | 8 | 8 |  | 0% | 0% |  |
| 362 | 3.3.2.2 | Configurar o mapa de rota |  | 1d | 2015-05-12 | 2015-05-12 | 361 |  |  | 2015-05-12 | 2015-05-12 | 1d | 42d | 0d | HRST 3 | 8h |  | 8 | 8 |  | 0% | 0% |  |
| 363 | 3.3.2.3 | Configurar Formulários |  | 1d | 2015-05-13 | 2015-05-13 | 362 |  |  | 2015-05-13 | 2015-05-13 | 1d | 42d | 0d | HRST 3 | 8h |  | 8 | 8 |  | 0% | 0% |  |
| 364 | 3.3.2.4 | Configurar permissões |  | 1d | 2015-05-14 | 2015-05-14 | 363 |  |  | 2015-05-14 | 2015-05-14 | 1d | 42d | 0d | HRST 3 | 8h |  | 8 | 8 |  | 0% | 0% |  |
| 365 | 3.3.2.5 | Definir layout para importar a Biblioteca de Metas |  | 1d | 2015-05-15 | 2015-05-15 | 364 |  |  | 2015-05-15 | 2015-05-15 | 1d | 42d | 0d | HRST 3 | 8h |  | 8 | 8 |  | 0% | 0% |  |
| 366 | 3.3.2.6 | Definir layout para carga de empregados |  | 1d | 2015-05-18 | 2015-05-18 | 365 |  |  | 2015-05-18 | 2015-05-18 | 1d | 42d | 0d | HRST 3 | 8h |  | 8 | 8 |  | 0% | 0% |  |
| 367 | 3.3.2.7 | Passar para Votorantim informações para carga de fotos |  | 1d | 2015-05-19 | 2015-05-19 | 366 |  |  | 2015-05-19 | 2015-05-19 | 1d | 42d | 0d | HRST 3 | 8h |  | 8 | 8 |  | 0% | 0% |  |
| 368 | 3.3.2.8 | Fazer a carga de metas |  | 1d | 2015-05-20 | 2015-05-20 | 367 |  |  | 2015-05-20 | 2015-05-20 | 1d | 42d | 0d | HRST 3 | 8h |  | 8 | 8 |  | 0% | 0% |  |
| 369 | 3.3.2.9 | Fazer a carga de empregados |  | 1d | 2015-05-21 | 2015-05-21 | 368 |  |  | 2015-05-21 | 2015-05-21 | 1d | 42d | 0d | HRST 3 | 8h |  | 8 | 8 |  | 0% | 0% |  |
| 370 | 3.3.2.10 | Agendar job para carga de fotos |  | 1d | 2015-05-22 | 2015-05-22 | 369 |  |  | 2015-05-22 | 2015-05-22 | 1d | 42d | 0d | HRST 3 | 8h |  | 8 | 8 |  | 0% | 0% |  |
| 371 | 3.3.2.11 | Configurar Relatórios |  | 1d | 2015-05-25 | 2015-05-25 | 370 |  |  | 2015-05-25 | 2015-05-25 | 1d | 42d | 0d | HRST 3 | 8h |  | 8 | 8 |  | 0% | 0% |  |
| 372 | 3.3.2.12 | **Onda 2 - Termo de Aceite - Realização** |  | 0d | 2015-05-25 | 2015-05-25 |  |  |  | 2015-05-25 | 2015-05-25 | 0d | 42d |  |  |  |  |  |  |  | 0% | 0% |  |
| 373 | 3.3.2.12.1 | Onda 2 - Assinatura Fase 3 - Realização - VM | milestone | 0d | 2015-05-25 | 2015-05-25 | 371 |  |  | 2015-05-25 | 2015-05-25 | 0d | 42d |  |  |  |  |  |  |  | 0% | 0% |  |
| 374 | 3.4 | **Fase 4 - Preparação Final** |  | 60d | 2015-04-13 | 2015-07-10 |  |  |  | 2015-04-13 | 2015-07-10 | 60d | 10d |  |  | 472h |  | 472 | 472 |  | 0% | 0% |  |
| 375 | 3.4.1 | **Testes Funcionais** |  | 38d | 2015-04-13 | 2015-06-10 |  |  |  | 2015-04-13 | 2015-06-10 | 38d | 32d |  |  | 48h |  | 48 | 48 |  | 0% | 0% |  |
| 376 | 3.4.1.1 | **Gestão de Competência VM** |  | 3d | 2015-04-13 | 2015-04-15 |  |  |  | 2015-04-13 | 2015-04-15 | 3d | 67d |  |  | 24h |  | 24 | 24 |  | 0% | 0% |  |
| 377 | 3.4.1.1.1 | Realizar Testes Funcionais - VM |  | 1d | 2015-04-13 | 2015-04-13 | 356 |  |  | 2015-04-13 | 2015-04-13 | 1d | 67d | 0d | HRST 2 | 8h |  | 8 | 8 |  | 0% | 0% |  |
| 378 | 3.4.1.1.2 | Ajustes Testes Funcionais - VM |  | 2d | 2015-04-14 | 2015-04-15 | 377 |  |  | 2015-04-14 | 2015-04-15 | 2d | 67d | 0d | HRST 2 | 16h |  | 16 | 16 |  | 0% | 0% |  |
| 379 | 3.4.1.1.3 | Onda 1 - Entrega Testes Funcionais - VM | milestone | 0d | 2015-04-15 | 2015-04-15 | 378 |  |  | 2015-04-15 | 2015-04-15 | 0d | 67d |  |  |  |  |  |  |  | 0% | 0% |  |

| ID | WBS | Task | Type | Duration | Start | Finish | Predecessors | Baseline start | Baseline finish | Baseline duration | Total slack | Free slack | Constraint | Resources | Work | Cost | Baseline cost | % Planejado | % Realizado |
| --- | --- | --- | --- | --- | --- | --- | --- | --- | --- | --- | --- | --- | --- | --- | --- | --- | --- | --- | --- |
| 380 | 3.4.1.2 | **Gestão de Metas VM** |  | 3d | 2015-06-08 | 2015-06-10 |  | 2015-06-08 | 2015-06-10 | 3d | 32d |  |  |  | 24h | 24 | 24 | 0% | 0% |
| 381 | 3.4.1.2.1 | Realizar Testes Funcionais |  | 1d | 2015-06-08 | 2015-06-08 |  | 2015-06-08 | 2015-06-08 | 1d | 32d | 0d | start no earlier than 2015-06-08 | HRST 4 | 8h | 8 | 8 | 0% | 0% |
| 382 | 3.4.1.2.2 | Ajustes Testes Funcionais |  | 2d | 2015-06-09 | 2015-06-10 | 381 | 2015-06-09 | 2015-06-10 | 2d | 32d | 0d |  | HRST 4 | 16h | 16 | 16 | 0% | 0% |
| 383 | 3.4.1.2.3 | Onda 2 - Entrega Testes Funcionais - VM | milestone | 0d | 2015-06-10 | 2015-06-10 | 382 | 2015-06-10 | 2015-06-10 | 0d | 32d |  |  |  |  |  |  | 0% | 0% |
| 384 | 3.4.2 | **Testes Unitários** |  | 39d | 2015-04-24 | 2015-06-22 |  | 2015-04-24 | 2015-06-22 | 39d | 24d |  |  |  | 64h | 64 | 64 | 0% | 0% |
| 385 | 3.4.2.1 | **Gestão de Competência VM** |  | 3d | 2015-04-24 | 2015-04-28 |  | 2015-04-24 | 2015-04-28 | 3d | 60d |  |  |  | 32h | 32 | 32 | 0% | 0% |
| 386 | 3.4.2.1.1 | Realizar Testes Unitários - VM |  | 1d | 2015-04-24 | 2015-04-24 |  | 2015-04-24 | 2015-04-24 | 1d | 60d | 0d | start no earlier than 2015-04-24 | HRST 2; Juraci Silva | 16h | 16 | 16 | 0% | 0% |
| 387 | 3.4.2.1.2 | Ajustes Testes Unitários - VM |  | 2d | 2015-04-27 | 2015-04-28 | 386 | 2015-04-27 | 2015-04-28 | 2d | 60d | 0d |  | HRST 2 | 16h | 16 | 16 | 0% | 0% |
| 388 | 3.4.2.1.3 | Onda 1 - Entrega Testes Unitários - VM | milestone | 0d | 2015-04-28 | 2015-04-28 | 387 | 2015-04-28 | 2015-04-28 | 0d | 60d |  |  |  |  |  |  | 0% | 0% |
| 389 | 3.4.2.2 | **Gestão de Metas VM** |  | 4d | 2015-06-17 | 2015-06-22 |  | 2015-06-17 | 2015-06-22 | 4d | 24d |  |  |  | 32h | 32 | 32 | 0% | 0% |
| 390 | 3.4.2.2.1 | Realizar Testes Unitários - VM |  | 2d | 2015-06-17 | 2015-06-18 |  | 2015-06-17 | 2015-06-18 | 2d | 24d | 0d | start no earlier than 2015-06-17 | Juraci Silva | 16h | 16 | 16 | 0% | 0% |
| 391 | 3.4.2.2.2 | Ajustes de Testes Unitários - VM |  | 2d | 2015-06-19 | 2015-06-22 | 390 | 2015-06-19 | 2015-06-22 | 2d | 24d | 0d |  | HRST 2 | 16h | 16 | 16 | 0% | 0% |
| 392 | 3.4.2.2.3 | Onda 2 - Entrega Testes Unitários - VM | milestone | 0d | 2015-06-22 | 2015-06-22 | 391 | 2015-06-22 | 2015-06-22 | 0d | 24d |  |  |  |  |  |  | 0% | 0% |
| 393 | 3.4.3 | **Testes Integrados** |  | 48d | 2015-05-04 | 2015-07-10 |  | 2015-05-04 | 2015-07-10 | 48d | 10d |  |  |  | 360h | 360 | 360 | 0% | 0% |
| 394 | 3.4.3.1 | **Gestão de Competência VM** |  | 10d | 2015-05-04 | 2015-05-15 |  | 2015-05-04 | 2015-05-15 | 10d | 35d |  |  |  | 120h | 120 | 120 | 0% | 0% |
| 395 | 3.4.3.1.1 | Testes Integrados VM |  | 5d | 2015-05-04 | 2015-05-08 |  | 2015-05-04 | 2015-05-08 | 5d | 35d | 0d | start no earlier than 2015-05-04 | VM; Rodney | 80h | 80 | 80 | 0% | 0% |
| 396 | 3.4.3.1.2 | Ajustes Testes Integrados VM |  | 5d | 2015-05-11 | 2015-05-15 | 395 | 2015-05-11 | 2015-05-15 | 5d | 35d | 0d |  | HRST 1 | 40h | 40 | 40 | 0% | 0% |
| 397 | 3.4.3.1.3 | **Onda 1 - Termo de Aceite Fase 4** |  | 0d | 2015-05-15 | 2015-05-15 |  | 2015-05-15 | 2015-05-15 | 0d | 48d |  |  |  |  |  |  | 0% | 0% |
| 398 | 3.4.3.1.3.1 | Onda 1 - Assinatura Fase 4 - Preparação Final - VM | milestone | 0d | 2015-05-15 | 2015-05-15 | 396 | 2015-05-15 | 2015-05-15 | 0d | 48d |  |  |  |  |  |  | 0% | 0% |
| 399 | 3.4.3.2 | **Gestão de Metas VM** |  | 10d | 2015-06-29 | 2015-07-10 |  | 2015-06-29 | 2015-07-10 | 10d | 0d |  |  |  | 240h | 240 | 240 | 0% | 0% |
| 400 | 3.4.3.2.1 | Testes Integrados VM |  | 5d | 2015-06-29 | 2015-07-03 |  | 2015-06-29 | 2015-07-03 | 5d | 0d |  | start no earlier than 2015-06-29 | HRST 1; HRST 2; Rodney | 120h | 120 | 120 | 0% | 0% |
| 401 | 3.4.3.2.2 | Ajustes Testes Integrados VM |  | 5d | 2015-07-06 | 2015-07-10 | 400 | 2015-07-06 | 2015-07-10 | 5d | 0d |  |  | HRST 1; HRST 2; Rodney | 120h | 120 | 120 | 0% | 0% |
| 402 | 3.4.3.2.3 | **Termo de Aceite Fase 4** |  | 0d | 2015-07-10 | 2015-07-10 |  | 2015-07-10 | 2015-07-10 | 0d | 10d |  |  |  |  |  |  | 0% | 0% |
| 403 | 3.4.3.2.3.1 | Onda 2 - Assinatura Fase 4 - Preparação Final - VM | milestone | 0d | 2015-07-10 | 2015-07-10 | 401 | 2015-07-10 | 2015-07-10 | 0d | 10d |  |  |  |  |  |  | 0% | 0% |

| ID | WBS | Task | Type | Duration | Start | Finish | Predecessors | Complete | Remaining | Baseline start | Baseline finish | Baseline duration | Total slack | Free slack | Resources | Work | Actual work | Cost | Baseline cost | Actual cost | % Planejado | % Realizado | .SPI. | Text29 |
| --- | --- | --- | --- | --- | --- | --- | --- | --- | --- | --- | --- | --- | --- | --- | --- | --- | --- | --- | --- | --- | --- | --- | --- | --- |
| 404 | 3.5 | **Fase 5 - Go Live e Operacao Assistida** |  | 48d | 2015-05-18 | 2015-07-24 |  |  |  | 2015-05-18 | 2015-07-24 | 48d | 0d |  |  | 616h |  | 616 | 616 |  | 0% | 0% |  |  |
| 405 | 3.5.1 | **Go Live - Onda 1 - Gestão de Competência** |  | 13d | 2015-05-18 | 2015-06-03 |  |  |  | 2015-05-18 | 2015-06-03 | 13d | 35d |  |  | 296h |  | 296 | 296 |  | 0% | 0% |  |  |
| 406 | 3.5.1.1 | Treinamento |  | 5d | 2015-05-18 | 2015-05-22 | 396 |  |  | 2015-05-18 | 2015-05-22 | 5d | 35d | 0d | HRST 1 | 40h |  | 40 | 40 |  | 0% | 0% |  |  |
| 407 | 3.5.1.2 | Cutover |  | 5d | 2015-05-25 | 2015-05-29 | 406 |  |  | 2015-05-25 | 2015-05-29 | 5d | 35d | 0d | HRST 1; HRST 2; HRST 3; Rodney | 160h |  | 160 | 160 |  | 0% | 0% |  |  |
| 408 | 3.5.1.3 | Onda 1 - Go Live | milestone | 0d | 2015-05-29 | 2015-05-29 | 407 |  |  | 2015-05-29 | 2015-05-29 | 0d | 38d |  |  |  |  |  |  |  | 0% | 0% |  |  |
| 409 | 3.5.1.4 | Operação Assistida |  | 3d | 2015-06-01 | 2015-06-03 | 407 |  |  | 2015-06-01 | 2015-06-03 | 3d | 35d |  | HRST 1; HRST 2; HRST 3; Rodney | 96h |  | 96 | 96 |  | 0% | 0% |  |  |
| 410 | 3.5.2 | **Go Live - Onda 2 - Gestão de Metas** |  | 10d | 2015-07-13 | 2015-07-24 |  |  |  | 2015-07-13 | 2015-07-24 | 10d | 0d |  |  | 320h |  | 320 | 320 |  | 0% | 0% |  |  |
| 411 | 3.5.2.1 | Treinamento |  | 5d | 2015-07-13 | 2015-07-17 | 401 |  |  | 2015-07-13 | 2015-07-17 | 5d | 5d |  | HRST 1 | 40h |  | 40 | 40 |  | 0% | 0% |  |  |
| 412 | 3.5.2.2 | Cutover |  | 5d | 2015-07-13 | 2015-07-17 | 401 |  |  | 2015-07-13 | 2015-07-17 | 5d | 0d |  | HRST 2; HRST 3; Rodney | 120h |  | 120 | 120 |  | 0% | 0% |  |  |
| 413 | 3.5.2.3 | Onda 2 - Go Live | milestone | 0d | 2015-07-17 | 2015-07-17 | 412 |  |  | 2015-07-17 | 2015-07-17 | 0d | 5d |  |  |  |  |  |  |  | 0% | 0% |  |  |
| 414 | 3.5.2.4 | Operação Assistida |  | 5d | 2015-07-20 | 2015-07-24 | 412 |  |  | 2015-07-20 | 2015-07-24 | 5d | 0d |  | HRST 1; HRST 2; HRST 3; Rodney | 160h |  | 160 | 160 |  | 0% | 0% |  |  |
| 415 | 4 | **(3) Projeto Metas e Competência - VID São Paulo e Curitiba** |  | 104d | 2015-02-09 A | 2015-07-24 |  | 31% | 71.97d | 2015-02-09 | 2015-07-24 | 104d | 0d |  |  | 2024h | 498.48h | 2,024 | 2,024 | 498.48 | 30% | 25% | 0,81 | 20/09 |
| 416 | 4.1 | **Fase 1 - Preparação do Projeto** |  | 10d | 2015-02-09 A | 2015-02-20 A |  | 100% |  | 2015-02-09 | 2015-02-20 | 10d |  |  |  | 120h | 120h | 120 | 120 | 120 | 100% | 100% |  |  |
| 417 | 4.1.1 | Confirmação e Mobilização de Equipe |  | 8d | 2015-02-09 A | 2015-02-18 A |  | 100% |  | 2015-02-09 | 2015-02-18 | 8d |  |  | Rodney | 64h | 64h | 64 | 64 | 64 | 100% | 100% |  |  |
| 418 | 4.1.2 | Reunião Pré Kick-off |  | 1d | 2015-02-19 A | 2015-02-19 A | 417 | 100% |  | 2015-02-19 | 2015-02-19 | 1d |  |  | Leonardo; Rodney | 16h | 16h | 16 | 16 | 16 | 100% | 100% |  |  |
| 419 | 4.1.3 | Kick-Off |  | 1d | 2015-02-20 A | 2015-02-20 A | 418 | 100% |  | 2015-02-20 | 2015-02-20 | 1d |  |  | TI Votorantim | 8h | 8h | 8 | 8 | 8 | 100% | 100% |  |  |
| 420 | 4.1.4 | Identificação dos Usuários |  | 2d | 2015-02-19 A | 2015-02-20 A | 417 | 100% |  | 2015-02-19 | 2015-02-20 | 2d |  |  | Leonardo; Rodney | 32h | 32h | 32 | 32 | 32 | 100% | 100% |  |  |
| 421 | 4.1.5 | **Termo de Aceite Fase 1** |  | 0d | 2015-02-20 A | 2015-02-20 A |  | 100% |  | 2015-02-20 | 2015-02-20 | 0d |  |  |  |  |  |  |  |  | 100% | 100% |  |  |
| 422 | 4.1.5.1 | Assinatura Fase 1 - Preparação do Projeto | milestone | 0d | 2015-02-20 A | 2015-02-20 A | 420 | 100% |  | 2015-02-20 | 2015-02-20 | 0d |  |  |  |  |  |  |  |  | 100% | 100% |  |  |
| 423 | 4.2 | **Fase 2 - Business Blueprint** |  | 10d | 2015-02-23 A | 2015-03-06 |  | 92% | 0.83d | 2015-02-23 | 2015-03-06 | 10d | 84d |  |  | 256h | 242h | 256 | 256 | 242 | 100% | 95% | 0,95 |  |
| 424 | 4.2.1 | **Levantamento Gestão de Metas** |  | 5d | 2015-02-23 A | 2015-02-27 |  | 95% | 0.25d | 2015-02-23 | 2015-02-27 | 5d | 89d |  |  | 112h | 106h | 112 | 112 | 106 | 100% | 95% | 0,95 |  |
| 425 | 4.2.1.1 | Mapeamento dos Processos |  | 3d | 2015-02-23 A | 2015-02-25 A | 420 | 100% |  | 2015-02-23 | 2015-02-25 | 3d |  |  | HRST 1; HRST 2; Rodney | 72h | 72h | 72 | 72 | 72 | 100% | 100% |  |  |
| 426 | 4.2.1.2 | Elaboração dos BBPs |  | 1d | 2015-02-26 A | 2015-02-26 A | 425 | 100% |  | 2015-02-26 | 2015-02-26 | 1d |  |  | HRST 1; HRST 2 | 16h | 16h | 16 | 16 | 16 | 100% | 100% |  |  |
| 427 | 4.2.1.3 | Ajustes / Aprovação dos BBPs |  | 1d | 2015-02-27 A | 2015-02-27 | 426 | 75% | 0.25d | 2015-02-27 | 2015-02-27 | 1d | 89d |  | HRST 1; HRST 2; Rodney | 24h | 18h | 24 | 24 | 18 | 100% | 75% | 0,75 |  |

| ID | WBS | Task | Type | Duration | Start | Finish | Predecessors | Complete | Remaining | Baseline start | Baseline finish | Baseline duration | Total slack | Free slack | Constraint | Resources | Work | Actual work | Cost | Baseline cost | Actual cost | % Planejado | % Realizado | .SPI. |
| --- | --- | --- | --- | --- | --- | --- | --- | --- | --- | --- | --- | --- | --- | --- | --- | --- | --- | --- | --- | --- | --- | --- | --- | --- |
| 428 | 4.2.2 | **Levantamento Gestão de Competência** |  | 7d | 2015-02-26 A | 2015-03-06 |  | 90% | 0.7d | 2015-02-26 | 2015-03-06 | 7d | 84d |  |  |  | 144h | 136h | 144 | 144 | 136 | 100% | 94% | 0,94 |
| 429 | 4.2.2.1 | Mapeamento dos Processos |  | 4d | 2015-02-26 A | 2015-03-03 A | 425 | 100% |  | 2015-02-26 | 2015-03-03 | 4d |  |  |  | HRST 1; HRST 2; Rodney | 96h | 96h | 96 | 96 | 96 | 100% | 100% |  |
| 430 | 4.2.2.2 | **Elaboração dos BBPs** |  | 1d | 2015-03-04 A | 2015-03-04 A |  | 100% |  | 2015-03-04 | 2015-03-04 | 1d |  |  |  |  | 16h | 16h | 16 | 16 | 16 | 100% | 100% |  |
| 431 | 4.2.2.2.1 | EP |  | 0.5d | 2015-03-04 A | 2015-03-04 A | 429 | 100% |  | 2015-03-04 | 2015-03-04 | 0.5d |  |  |  | HRST 1 | 4h | 4h | 4 | 4 | 4 | 100% | 100% |  |
| 432 | 4.2.2.2.2 | PDI |  | 0.5d | 2015-03-04 A | 2015-03-04 A | 431 | 100% |  | 2015-03-04 | 2015-03-04 | 0.5d |  |  |  | HRST 1 | 4h | 4h | 4 | 4 | 4 | 100% | 100% |  |
| 433 | 4.2.2.2.3 | Competência |  | 0.5d | 2015-03-04 A | 2015-03-04 A | 429 | 100% |  | 2015-03-04 | 2015-03-04 | 0.5d |  |  |  | HRST 2 | 4h | 4h | 4 | 4 | 4 | 100% | 100% |  |
| 434 | 4.2.2.2.4 | Sucessão |  | 0.5d | 2015-03-04 A | 2015-03-04 A | 433 | 100% |  | 2015-03-04 | 2015-03-04 | 0.5d |  |  |  | HRST 2 | 4h | 4h | 4 | 4 | 4 | 100% | 100% |  |
| 435 | 4.2.2.3 | **Ajustes / Aprovação dos BBPs** |  | 2d | 2015-03-05 A | 2015-03-06 |  | 75% | 0.5d | 2015-03-05 | 2015-03-06 | 2d | 84d |  |  |  | 32h | 24h | 32 | 32 | 24 | 100% | 75% | 0,75 |
| 436 | 4.2.2.3.1 | EP |  | 1d | 2015-03-05 A | 2015-03-05 | 434 | 75% | 0.25d | 2015-03-05 | 2015-03-05 | 1d | 0.75d | 0d |  | HRST 1 | 8h | 6h | 8 | 8 | 6 | 100% | 75% | 0,75 |
| 437 | 4.2.2.3.2 | PDI |  | 1d | 2015-03-06 A | 2015-03-06 | 436 | 75% | 0.25d | 2015-03-06 | 2015-03-06 | 1d | 84d |  |  | HRST 1 | 8h | 6h | 8 | 8 | 6 | 100% | 75% | 0,75 |
| 438 | 4.2.2.3.3 | Competência |  | 1d | 2015-03-05 A | 2015-03-05 | 434 | 75% | 0.25d | 2015-03-05 | 2015-03-05 | 1d | 0.75d | 0d |  | HRST 2 | 8h | 6h | 8 | 8 | 6 | 100% | 75% | 0,75 |
| 439 | 4.2.2.3.4 | Sucessão |  | 1d | 2015-03-06 A | 2015-03-06 | 438 | 75% | 0.25d | 2015-03-06 | 2015-03-06 | 1d | 84d | 0d |  | HRST 2 | 8h | 6h | 8 | 8 | 6 | 100% | 75% | 0,75 |
| 440 | 4.2.2.4 | **Termo de Aceite Fase 2** |  | 0d | 2015-03-06 | 2015-03-06 |  |  |  | 2015-03-06 | 2015-03-06 | 0d | 84d |  |  |  |  |  |  |  |  | 100% | 0% |  |
| 441 | 4.2.2.4.1 | Assinatura Fase 2 - Business Blueprint | milestone | 0d | 2015-03-06 | 2015-03-06 | 439 |  |  | 2015-03-06 | 2015-03-06 | 0d | 84d |  |  |  |  |  |  |  |  | 100% | 0% |  |
| 442 | 4.3 | **Fase 3 - Realização** |  | 49d | 2015-03-23 A | 2015-06-03 |  | 34% | 32.47d | 2015-03-23 | 2015-06-03 | 49d | 35d |  |  |  | 480h | 136.48h | 480 | 480 | 136.48 | 50% | 28% | 0,57 |
| 443 | 4.3.1 | **Gestão de Competência VID** |  | 14d | 2015-03-23 A | 2015-04-10 |  | 47% | 7.42d | 2015-03-23 | 2015-04-10 | 14d | 70d |  |  |  | 376h | 136.48h | 376 | 376 | 136.48 | 64% | 36% | 0,57 |
| 444 | 4.3.1.1 | Configurar EP (Employee Profile) - VID |  | 5d | 2015-03-23 A | 2015-03-27 A |  | 100% |  | 2015-03-23 | 2015-03-27 | 5d |  |  | start no earlier than 2015-03-23 | HRST 1 | 40h | 40h | 40 | 40 | 40 | 100% | 100% |  |
| 445 | 4.3.1.2 | Configurar PDI (Palno de Desenvolvimento Individual) - VID |  | 5d | 2015-03-23 A | 2015-03-27 |  | 95% | 0.25d | 2015-03-23 | 2015-03-27 | 5d | 0.77d | 0d | start no earlier than 2015-03-23 | HRST 2 | 40h | 38h | 40 | 40 | 38 | 100% | 95% | 0,95 |
| 446 | 4.3.1.3 | Configurar Sucessão - VID |  | 5d | 2015-03-30 A | 2015-04-06 | 444, 445 | 55% | 2.25d | 2015-03-30 | 2015-04-06 | 5d | 74d |  |  | HRST 3 | 40h | 22h | 40 | 40 | 22 | 80% | 55% | 0,69 |
| 447 | 4.3.1.4 | Configurar PM - VID |  | 7d | 2015-03-30 A | 2015-04-08 | 444, 445 | 11% | 6.23d | 2015-03-30 | 2015-04-08 | 7d | 70d | 0d |  | HRST 1; HRST 2; HRST 3 | 168h | 18.48h | 168 | 168 | 18.48 | 57% | 11% | 0,19 |
| 448 | 4.3.1.5 | **Configurar Relatórios** |  | 2d | 2015-04-09 | 2015-04-10 |  |  |  | 2015-04-09 | 2015-04-10 | 2d | 70d |  |  |  | 16h |  | 16 | 16 |  | 0% | 0% |  |
| 449 | 4.3.1.5.1 | Cópia dos Relatórios da VC - VID |  | 0.5d | 2015-04-09 | 2015-04-09 | 447 |  |  | 2015-04-09 | 2015-04-09 | 0.5d | 70d | 0d |  | HRST 1 | 4h |  | 4 | 4 |  | 0% | 0% |  |
| 450 | 4.3.1.5.2 | Escala - Descrição e Pontuação - VID |  | 0.5d | 2015-04-09 | 2015-04-09 | 449 |  |  | 2015-04-09 | 2015-04-09 | 0.5d | 70d | 0d |  | HRST 1 | 4h |  | 4 | 4 |  | 0% | 0% |  |
| 451 | 4.3.1.5.3 | Comparativo entre Desempenho na Função e Crenças - VID |  | 1d | 2015-04-10 | 2015-04-10 | 450 |  |  | 2015-04-10 | 2015-04-10 | 1d | 70d |  |  | HRST 1 | 8h |  | 8 | 8 |  | 0% | 0% |  |
| 452 | 4.3.1.6 | Desenvolvimento Abap - Ajustes Integração |  | 9d | 2015-03-30 A | 2015-04-10 | 444, 445 | 25% | 6.75d | 2015-03-30 | 2015-04-10 | 9d | 67d | 0d |  | HRST 1 | 72h | 18h | 72 | 72 | 18 | 44% | 25% | 0,56 |

| ID | WBS | Task | Type | Duration | Start | Finish | Predecessors | Baseline start | Baseline finish | Baseline duration | Total slack | Free slack | Resources | Work | Cost | Baseline cost | % Planejado | % Realizado |
| --- | --- | --- | --- | --- | --- | --- | --- | --- | --- | --- | --- | --- | --- | --- | --- | --- | --- | --- |
| 453 | 4.3.1.7 | **Termo de Aceite Fase 3 - Realização** |  | 0d | 2015-04-10 | 2015-04-10 |  | 2015-04-10 | 2015-04-10 | 0d | 70d |  |  |  |  |  | 0% | 0% |
| 454 | 4.3.1.7.1 | Onda 1 - Assinatura Fase 3 - Realização - VID | milestone | 0d | 2015-04-10 | 2015-04-10 | 452 | 2015-04-10 | 2015-04-10 | 0d | 70d |  |  |  |  |  | 0% | 0% |
| 455 | 4.3.2 | **Gestão de Metas VID** |  | 13d | 2015-05-18 | 2015-06-03 |  | 2015-05-18 | 2015-06-03 | 13d | 32d |  |  | 104h | 104 | 104 | 0% | 0% |
| 456 | 4.3.2.1 | Alteração de label na instância |  | 1d | 2015-05-18 | 2015-05-18 | 491 | 2015-05-18 | 2015-05-18 | 1d | 32d | 0d | HRST 1 | 8h | 8 | 8 | 0% | 0% |
| 457 | 4.3.2.2 | Configurar o mapa de rota |  | 1d | 2015-05-19 | 2015-05-19 | 456 | 2015-05-19 | 2015-05-19 | 1d | 32d | 0d | HRST 1 | 8h | 8 | 8 | 0% | 0% |
| 458 | 4.3.2.3 | Configurar Formulários |  | 1d | 2015-05-20 | 2015-05-20 | 457 | 2015-05-20 | 2015-05-20 | 1d | 32d | 0d | HRST 1 | 8h | 8 | 8 | 0% | 0% |
| 459 | 4.3.2.4 | Configurar permissões |  | 1d | 2015-05-21 | 2015-05-21 | 458 | 2015-05-21 | 2015-05-21 | 1d | 32d | 0d | HRST 1 | 8h | 8 | 8 | 0% | 0% |
| 460 | 4.3.2.5 | Definir layout para importar a Biblioteca de Metas |  | 1d | 2015-05-22 | 2015-05-22 | 459 | 2015-05-22 | 2015-05-22 | 1d | 32d | 0d | HRST 1 | 8h | 8 | 8 | 0% | 0% |
| 461 | 4.3.2.6 | Definir layout para carga de empregados |  | 1d | 2015-05-25 | 2015-05-25 | 460 | 2015-05-25 | 2015-05-25 | 1d | 32d | 0d | HRST 1 | 8h | 8 | 8 | 0% | 0% |
| 462 | 4.3.2.7 | Passar para Votorantim informações para carga de fotos |  | 1d | 2015-05-26 | 2015-05-26 | 461 | 2015-05-26 | 2015-05-26 | 1d | 32d | 0d | HRST 1 | 8h | 8 | 8 | 0% | 0% |
| 463 | 4.3.2.8 | Fazer a carga de metas |  | 1d | 2015-05-27 | 2015-05-27 | 462 | 2015-05-27 | 2015-05-27 | 1d | 32d | 0d | HRST 1 | 8h | 8 | 8 | 0% | 0% |
| 464 | 4.3.2.9 | Fazer a carga de empregados |  | 1d | 2015-05-28 | 2015-05-28 | 463 | 2015-05-28 | 2015-05-28 | 1d | 32d | 0d | HRST 1 | 8h | 8 | 8 | 0% | 0% |
| 465 | 4.3.2.10 | Agendar job para carga de fotos |  | 2d | 2015-05-29 | 2015-06-01 | 464 | 2015-05-29 | 2015-06-01 | 2d | 32d | 0d | HRST 1 | 16h | 16 | 16 | 0% | 0% |
| 466 | 4.3.2.11 | Configurar Relatórios |  | 2d | 2015-06-02 | 2015-06-03 | 465 | 2015-06-02 | 2015-06-03 | 2d | 32d | 0d | HRST 1 | 16h | 16 | 16 | 0% | 0% |
| 467 | 4.3.2.12 | **Onda 2 - Termo de Aceite - Realização** |  | 0d | 2015-06-03 | 2015-06-03 |  | 2015-06-03 | 2015-06-03 | 0d | 35d |  |  |  |  |  | 0% | 0% |
| 468 | 4.3.2.12.1 | Onda 2 - Assinatura Fase 3 - Realização - VID | milestone | 0d | 2015-06-03 | 2015-06-03 | 466 | 2015-06-03 | 2015-06-03 | 0d | 35d |  |  |  |  |  | 0% | 0% |
| 469 | 4.4 | **Fase 4 - Preparação Final** |  | 60d | 2015-04-13 | 2015-07-10 |  | 2015-04-13 | 2015-07-10 | 60d | 10d |  |  | 552h | 552 | 552 | 0% | 0% |
| 470 | 4.4.1 | **Testes Funcionais** |  | 38d | 2015-04-13 | 2015-06-10 |  | 2015-04-13 | 2015-06-10 | 38d | 32d |  |  | 48h | 48 | 48 | 0% | 0% |
| 471 | 4.4.1.1 | **Gestão de Competência VID** |  | 3d | 2015-04-13 | 2015-04-15 |  | 2015-04-13 | 2015-04-15 | 3d | 67d |  |  | 24h | 24 | 24 | 0% | 0% |
| 472 | 4.4.1.1.1 | Realizar Testes Funcionais - VID |  | 1d | 2015-04-13 | 2015-04-13 | 452 | 2015-04-13 | 2015-04-13 | 1d | 67d | 0d | HRST 3 | 8h | 8 | 8 | 0% | 0% |
| 473 | 4.4.1.1.2 | Ajustes Testes Funcionais - VID |  | 2d | 2015-04-14 | 2015-04-15 | 472 | 2015-04-14 | 2015-04-15 | 2d | 67d | 0d | HRST 3 | 16h | 16 | 16 | 0% | 0% |
| 474 | 4.4.1.1.3 | Onda 1 - Entrega Testes Funcionais - VID | milestone | 0d | 2015-04-15 | 2015-04-15 | 473 | 2015-04-15 | 2015-04-15 | 0d | 67d |  |  |  |  |  | 0% | 0% |
| 475 | 4.4.1.2 | **Gestão de Metas VID** |  | 3d | 2015-06-08 | 2015-06-10 |  | 2015-06-08 | 2015-06-10 | 3d | 32d |  |  | 24h | 24 | 24 | 0% | 0% |
| 476 | 4.4.1.2.1 | Realizar Testes Funcionais - VID |  | 1d | 2015-06-08 | 2015-06-08 | 466 | 2015-06-08 | 2015-06-08 | 1d | 32d | 0d | Rodney | 8h | 8 | 8 | 0% | 0% |
| 477 | 4.4.1.2.2 | Ajustes Testes Funcionais - VID |  | 2d | 2015-06-09 | 2015-06-10 | 476 | 2015-06-09 | 2015-06-10 | 2d | 32d | 0d | Rodney | 16h | 16 | 16 | 0% | 0% |
| 478 | 4.4.1.2.3 | Onda 2 - Entrega Testes Funcionais - VID | milestone | 0d | 2015-06-10 | 2015-06-10 | 477 | 2015-06-10 | 2015-06-10 | 0d | 32d |  |  |  |  |  | 0% | 0% |

| ID | WBS | Task | Type | Duration | Start | Finish | Predecessors | Baseline start | Baseline finish | Baseline duration | Total slack | Free slack | Constraint | Resources | Work | Cost | Baseline cost | % Planejado | % Realizado |
| --- | --- | --- | --- | --- | --- | --- | --- | --- | --- | --- | --- | --- | --- | --- | --- | --- | --- | --- | --- |
| 479 | 4.4.2 | **Testes Unitários** |  | 40d | 2015-04-27 | 2015-06-24 |  | 2015-04-27 | 2015-06-24 | 40d | 22d |  |  |  | 64h | 64 | 64 | 0% | 0% |
| 480 | 4.4.2.1 | **Gestão de Competência VID** |  | 3d | 2015-04-27 | 2015-04-29 |  | 2015-04-27 | 2015-04-29 | 3d | 59d |  |  |  | 32h | 32 | 32 | 0% | 0% |
| 481 | 4.4.2.1.1 | Realizar Testes Unitários - VID |  | 1d | 2015-04-27 | 2015-04-27 |  | 2015-04-27 | 2015-04-27 | 1d | 59d | 0d | start no earlier than 2015-04-27 | HRST 3; Juraci Silva | 16h | 16 | 16 | 0% | 0% |
| 482 | 4.4.2.1.2 | Ajustes Testes Unitários - VID |  | 2d | 2015-04-28 | 2015-04-29 | 481 | 2015-04-28 | 2015-04-29 | 2d | 59d | 0d |  | HRST 3 | 16h | 16 | 16 | 0% | 0% |
| 483 | 4.4.2.1.3 | Onda 1 - Entrega Testes Unitários - VID | milestone | 0d | 2015-04-29 | 2015-04-29 | 482 | 2015-04-29 | 2015-04-29 | 0d | 59d |  |  |  |  |  |  | 0% | 0% |
| 484 | 4.4.2.2 | **Gestão de Metas VID** |  | 4d | 2015-06-19 | 2015-06-24 |  | 2015-06-19 | 2015-06-24 | 4d | 22d |  |  |  | 32h | 32 | 32 | 0% | 0% |
| 485 | 4.4.2.2.1 | Realizar Testes Unitários - VID |  | 2d | 2015-06-19 | 2015-06-22 |  | 2015-06-19 | 2015-06-22 | 2d | 22d | 0d | start no earlier than 2015-06-19 | Juraci Silva | 16h | 16 | 16 | 0% | 0% |
| 486 | 4.4.2.2.2 | Ajustes de Testes Unitários - VID |  | 2d | 2015-06-23 | 2015-06-24 | 485 | 2015-06-23 | 2015-06-24 | 2d | 22d | 0d |  | HRST 3 | 16h | 16 | 16 | 0% | 0% |
| 487 | 4.4.2.2.3 | Onda 2 - Entrega Testes Unitários - VID | milestone | 0d | 2015-06-24 | 2015-06-24 | 486 | 2015-06-24 | 2015-06-24 | 0d | 22d |  |  |  |  |  |  | 0% | 0% |
| 488 | 4.4.3 | **Testes Integrados** |  | 48d | 2015-05-04 | 2015-07-10 |  | 2015-05-04 | 2015-07-10 | 48d | 10d |  |  |  | 440h | 440 | 440 | 0% | 0% |
| 489 | 4.4.3.1 | **Gestão de Competência VID** |  | 10d | 2015-05-04 | 2015-05-15 |  | 2015-05-04 | 2015-05-15 | 10d | 32d |  |  |  | 160h | 160 | 160 | 0% | 0% |
| 490 | 4.4.3.1.1 | Testes Integrados VID |  | 5d | 2015-05-04 | 2015-05-08 |  | 2015-05-04 | 2015-05-08 | 5d | 32d | 0d | start no earlier than 2015-05-04 | Rodney; VID Curitiba; VID São Paulo | 120h | 120 | 120 | 0% | 0% |
| 491 | 4.4.3.1.2 | Ajustes Testes Integrados VID |  | 5d | 2015-05-11 | 2015-05-15 | 490 | 2015-05-11 | 2015-05-15 | 5d | 32d | 0d |  | HRST 1 | 40h | 40 | 40 | 0% | 0% |
| 492 | 4.4.3.1.3 | **Onda 1 - Termo de Aceite Fase 4** |  | 0d | 2015-05-15 | 2015-05-15 |  | 2015-05-15 | 2015-05-15 | 0d | 48d |  |  |  |  |  |  | 0% | 0% |
| 493 | 4.4.3.1.3.1 | Onda 1 - Assinatura Fase 4 - Preparação Final - VID | milestone | 0d | 2015-05-15 | 2015-05-15 | 491 | 2015-05-15 | 2015-05-15 | 0d | 48d |  |  |  |  |  |  | 0% | 0% |
| 494 | 4.4.3.2 | **Gestão de Metas VID** |  | 10d | 2015-06-29 | 2015-07-10 |  | 2015-06-29 | 2015-07-10 | 10d | 0d |  |  |  | 280h | 280 | 280 | 0% | 0% |
| 495 | 4.4.3.2.1 | Testes Integrados VID |  | 5d | 2015-06-29 | 2015-07-03 |  | 2015-06-29 | 2015-07-03 | 5d | 0d |  | start no earlier than 2015-06-29 | HRST 1; HRST 2; Rodney | 120h | 120 | 120 | 0% | 0% |
| 496 | 4.4.3.2.2 | Ajustes Testes Integrados VID |  | 5d | 2015-07-06 | 2015-07-10 | 495 | 2015-07-06 | 2015-07-10 | 5d | 0d |  |  | HRST 1; HRST 2; HRST 3; Rodney | 160h | 160 | 160 | 0% | 0% |
| 497 | 4.4.3.2.3 | **Termo de Aceite Fase 4** |  | 0d | 2015-07-10 | 2015-07-10 |  | 2015-07-10 | 2015-07-10 | 0d | 10d |  |  |  |  |  |  | 0% | 0% |
| 498 | 4.4.3.2.3.1 | Onda 2 - Assinatura Fase 4 - Preparação Final - VID | milestone | 0d | 2015-07-10 | 2015-07-10 | 496 | 2015-07-10 | 2015-07-10 | 0d | 10d |  |  |  |  |  |  | 0% | 0% |
| 499 | 4.5 | **Fase 5 - Go Live e Operacao Assistida** |  | 48d | 2015-05-18 | 2015-07-24 |  | 2015-05-18 | 2015-07-24 | 48d | 0d |  |  |  | 616h | 616 | 616 | 0% | 0% |
| 500 | 4.5.1 | **Go Live - Onda 1 - Gestão de Competência** |  | 48d | 2015-05-18 | 2015-07-24 |  | 2015-05-18 | 2015-07-24 | 48d | 0d |  |  |  | 616h | 616 | 616 | 0% | 0% |
| 501 | 4.5.1.1 | Treinamento |  | 5d | 2015-05-18 | 2015-05-22 | 491 | 2015-05-18 | 2015-05-22 | 5d | 35d | 0d |  | HRST 1 | 40h | 40 | 40 | 0% | 0% |
| 502 | 4.5.1.2 | Cutover |  | 5d | 2015-05-25 | 2015-05-29 | 501 | 2015-05-25 | 2015-05-29 | 5d | 35d | 0d |  | HRST 1; HRST 2; HRST 3; Rodney | 160h | 160 | 160 | 0% | 0% |
| 503 | 4.5.1.3 | Onda 1 - Go Live | milestone | 0d | 2015-05-29 | 2015-05-29 | 502 | 2015-05-29 | 2015-05-29 | 0d | 38d |  |  |  |  |  |  | 0% | 0% |
| 504 | 4.5.1.4 | Operação Assistida |  | 3d | 2015-06-01 | 2015-06-03 | 502 | 2015-06-01 | 2015-06-03 | 3d | 35d |  |  | HRST 1; HRST 2; HRST 3; Rodney | 96h | 96 | 96 | 0% | 0% |

| ID | WBS | Task | Type | Duration | Start | Finish | Predecessors | Complete | Remaining | Baseline start | Baseline finish | Baseline duration | Total slack | Constraint | Resources | Work | Actual work | Cost | Baseline cost | Actual cost | % Planejado | % Realizado | .SPI. | Text29 |
| --- | --- | --- | --- | --- | --- | --- | --- | --- | --- | --- | --- | --- | --- | --- | --- | --- | --- | --- | --- | --- | --- | --- | --- | --- |
| 505 | 4.5.1.5 | **Go Live - Onda 2 - Gestão de Metas** |  | 10d | 2015-07-13 | 2015-07-24 |  |  |  | 2015-07-13 | 2015-07-24 | 10d | 0d |  |  | 320h |  | 320 | 320 |  | 0% | 0% |  |  |
| 506 | 4.5.1.5.1 | Treinamento |  | 5d | 2015-07-13 | 2015-07-17 | 496 |  |  | 2015-07-13 | 2015-07-17 | 5d | 5d |  | HRST 1 | 40h |  | 40 | 40 |  | 0% | 0% |  |  |
| 507 | 4.5.1.5.2 | Cutover |  | 5d | 2015-07-13 | 2015-07-17 | 496 |  |  | 2015-07-13 | 2015-07-17 | 5d | 0d |  | HRST 2; HRST 3; Rodney | 120h |  | 120 | 120 |  | 0% | 0% |  |  |
| 508 | 4.5.1.5.3 | Onda 2 - Go Live | milestone | 0d | 2015-07-17 | 2015-07-17 | 507 |  |  | 2015-07-17 | 2015-07-17 | 0d | 5d |  |  |  |  |  |  |  | 0% | 0% |  |  |
| 509 | 4.5.1.5.4 | Operação Assistida |  | 5d | 2015-07-20 | 2015-07-24 | 507 |  |  | 2015-07-20 | 2015-07-24 | 5d | 0d |  | HRST 1; HRST 2; HRST 3; Rodney | 160h |  | 160 | 160 |  | 0% | 0% |  |  |
| 510 | 5 | **(4) Projeto Metas e Competência - VE** |  | 104d | 2015-02-09 A | 2015-07-24 |  | 33% | 69.8d | 2015-02-09 | 2015-07-24 | 104d | 0d |  |  | 1996h | 524.48h | 1,996 | 1,996 | 524.48 | 33% | 26% | 0,8 | 20/08 |
| 511 | 5.1 | **Fase 1 - Preparação do Projeto** |  | 10d | 2015-02-09 A | 2015-02-20 A |  | 100% |  | 2015-02-09 | 2015-02-20 | 10d |  |  |  | 120h | 120h | 120 | 120 | 120 | 100% | 100% |  |  |
| 512 | 5.1.1 | Confirmação e Mobilização de Equipe |  | 8d | 2015-02-09 A | 2015-02-18 A |  | 100% |  | 2015-02-09 | 2015-02-18 | 8d |  | start no earlier than 2015-02-09 | Rodney | 64h | 64h | 64 | 64 | 64 | 100% | 100% |  |  |
| 513 | 5.1.2 | Reunião Pré Kick-off |  | 1d | 2015-02-19 A | 2015-02-19 A | 512 | 100% |  | 2015-02-19 | 2015-02-19 | 1d |  |  | Leonardo; Rodney | 16h | 16h | 16 | 16 | 16 | 100% | 100% |  |  |
| 514 | 5.1.3 | Kick-Off |  | 1d | 2015-02-20 A | 2015-02-20 A | 513 | 100% |  | 2015-02-20 | 2015-02-20 | 1d |  |  | TI Votorantim | 8h | 8h | 8 | 8 | 8 | 100% | 100% |  |  |
| 515 | 5.1.4 | Identificação dos Usuários |  | 2d | 2015-02-19 A | 2015-02-20 A | 512 | 100% |  | 2015-02-19 | 2015-02-20 | 2d |  |  | Leonardo; Rodney | 32h | 32h | 32 | 32 | 32 | 100% | 100% |  |  |
| 516 | 5.1.5 | **Termo de Aceite Fase 1** |  | 0d | 2015-02-20 A | 2015-02-20 A |  | 100% |  | 2015-02-20 | 2015-02-20 | 0d |  |  |  |  |  |  |  |  | 100% | 100% |  |  |
| 517 | 5.1.5.1 | Assinatura Fase 1 - Preparação do Projeto | milestone | 0d | 2015-02-20 A | 2015-02-20 A | 515 | 100% |  | 2015-02-20 | 2015-02-20 | 0d |  |  |  |  |  |  |  |  | 100% | 100% |  |  |
| 518 | 5.2 | **Fase 2 - Business Blueprint** |  | 10d | 2015-02-23 A | 2015-03-06 |  | 92% | 0.83d | 2015-02-23 | 2015-03-06 | 10d | 84d |  |  | 264h | 250h | 264 | 264 | 250 | 100% | 95% | 0,95 |  |
| 519 | 5.2.1 | **Levantamento Gestão de Metas** |  | 5d | 2015-02-23 A | 2015-02-27 |  | 95% | 0.25d | 2015-02-23 | 2015-02-27 | 5d | 89d |  |  | 120h | 114h | 120 | 120 | 114 | 100% | 95% | 0,95 |  |
| 520 | 5.2.1.1 | Mapeamento dos Processos |  | 3d | 2015-02-23 A | 2015-02-25 A | 515 | 100% |  | 2015-02-23 | 2015-02-25 | 3d |  |  | HRST 1; HRST 2; Rodney | 72h | 72h | 72 | 72 | 72 | 100% | 100% |  |  |
| 521 | 5.2.1.2 | Elaboração dos BBPs |  | 1d | 2015-02-26 A | 2015-02-26 A | 520 | 100% |  | 2015-02-26 | 2015-02-26 | 1d |  |  | HRST 1; HRST 2; Rodney | 24h | 24h | 24 | 24 | 24 | 100% | 100% |  |  |
| 522 | 5.2.1.3 | Ajustes / Aprovação dos BBPs |  | 1d | 2015-02-27 A | 2015-02-27 | 521 | 75% | 0.25d | 2015-02-27 | 2015-02-27 | 1d | 89d |  | HRST 1; HRST 2; Rodney | 24h | 18h | 24 | 24 | 18 | 100% | 75% | 0,75 |  |
| 523 | 5.2.2 | **Levantamento Gestão de Competência** |  | 7d | 2015-02-26 A | 2015-03-06 |  | 90% | 0.7d | 2015-02-26 | 2015-03-06 | 7d | 84d |  |  | 144h | 136h | 144 | 144 | 136 | 100% | 94% | 0,94 |  |
| 524 | 5.2.2.1 | Mapeamento dos Processos |  | 4d | 2015-02-26 A | 2015-03-03 A | 520 | 100% |  | 2015-02-26 | 2015-03-03 | 4d |  |  | HRST 1; HRST 2; Rodney | 96h | 96h | 96 | 96 | 96 | 100% | 100% |  |  |
| 525 | 5.2.2.2 | **Elaboração dos BBPs** |  | 1d | 2015-03-04 A | 2015-03-04 A |  | 100% |  | 2015-03-04 | 2015-03-04 | 1d |  |  |  | 16h | 16h | 16 | 16 | 16 | 100% | 100% |  |  |
| 526 | 5.2.2.2.1 | EP |  | 0.5d | 2015-03-04 A | 2015-03-04 A | 524 | 100% |  | 2015-03-04 | 2015-03-04 | 0.5d |  |  | HRST 1 | 4h | 4h | 4 | 4 | 4 | 100% | 100% |  |  |
| 527 | 5.2.2.2.2 | PDI |  | 0.5d | 2015-03-04 A | 2015-03-04 A | 526 | 100% |  | 2015-03-04 | 2015-03-04 | 0.5d |  |  | HRST 1 | 4h | 4h | 4 | 4 | 4 | 100% | 100% |  |  |
| 528 | 5.2.2.2.3 | Competência |  | 0.5d | 2015-03-04 A | 2015-03-04 A | 524 | 100% |  | 2015-03-04 | 2015-03-04 | 0.5d |  |  | HRST 2 | 4h | 4h | 4 | 4 | 4 | 100% | 100% |  |  |
| 529 | 5.2.2.2.4 | Sucessão |  | 0.5d | 2015-03-04 A | 2015-03-04 A | 528 | 100% |  | 2015-03-04 | 2015-03-04 | 0.5d |  |  | HRST 2 | 4h | 4h | 4 | 4 | 4 | 100% | 100% |  |  |

| ID | WBS | Task | Type | Duration | Start | Finish | Predecessors | Complete | Remaining | Baseline start | Baseline finish | Baseline duration | Total slack | Free slack | Constraint | Resources | Work | Actual work | Cost | Baseline cost | Actual cost | % Planejado | % Realizado | .SPI. |
| --- | --- | --- | --- | --- | --- | --- | --- | --- | --- | --- | --- | --- | --- | --- | --- | --- | --- | --- | --- | --- | --- | --- | --- | --- |
| 530 | 5.2.2.3 | **Ajustes / Aprovação dos BBPs** |  | 2d | 2015-03-05 A | 2015-03-06 |  | 75% | 0.5d | 2015-03-05 | 2015-03-06 | 2d | 84d |  |  |  | 32h | 24h | 32 | 32 | 24 | 100% | 75% | 0,75 |
| 531 | 5.2.2.3.1 | EP |  | 1d | 2015-03-05 A | 2015-03-05 | 529 | 75% | 0.25d | 2015-03-05 | 2015-03-05 | 1d | 0.75d | 0d |  | HRST 1 | 8h | 6h | 8 | 8 | 6 | 100% | 75% | 0,75 |
| 532 | 5.2.2.3.2 | PDI |  | 1d | 2015-03-06 A | 2015-03-06 | 531 | 75% | 0.25d | 2015-03-06 | 2015-03-06 | 1d | 84d |  |  | HRST 1 | 8h | 6h | 8 | 8 | 6 | 100% | 75% | 0,75 |
| 533 | 5.2.2.3.3 | Competência |  | 1d | 2015-03-05 A | 2015-03-05 | 529 | 75% | 0.25d | 2015-03-05 | 2015-03-05 | 1d | 0.75d | 0d |  | HRST 2 | 8h | 6h | 8 | 8 | 6 | 100% | 75% | 0,75 |
| 534 | 5.2.2.3.4 | Sucessão |  | 1d | 2015-03-06 A | 2015-03-06 | 533 | 75% | 0.25d | 2015-03-06 | 2015-03-06 | 1d | 84d | 0d |  | HRST 2 | 8h | 6h | 8 | 8 | 6 | 100% | 75% | 0,75 |
| 535 | 5.2.2.4 | **Termo de Aceite Fase 2** |  | 0d | 2015-03-06 | 2015-03-06 |  |  |  | 2015-03-06 | 2015-03-06 | 0d | 84d |  |  |  |  |  |  |  |  | 100% | 0% |  |
| 536 | 5.2.2.4.1 | Assinatura Fase 2 - Business Blueprint | milestone | 0d | 2015-03-06 | 2015-03-06 | 534 |  |  | 2015-03-06 | 2015-03-06 | 0d | 84d |  |  |  |  |  |  |  |  | 100% | 0% |  |
| 537 | 5.3 | **Faze 3 - Realização** |  | 48.5d | 2015-03-23 A | 2015-06-03 |  | 39% | 29.44d | 2015-03-23 | 2015-06-03 | 48.5d | 35.5d |  |  |  | 500h | 154.48h | 500 | 500 | 154.48 | 54% | 31% | 0,57 |
| 538 | 5.3.1 | **Gestão de Competência VE** |  | 14d | 2015-03-23 A | 2015-04-10 |  | 47% | 7.42d | 2015-03-23 | 2015-04-10 | 14d | 70d |  |  |  | 448h | 154.48h | 448 | 448 | 154.48 | 61% | 34% | 0,57 |
| 539 | 5.3.1.1 | Configurar EP (Employee Profile) - VE |  | 5d | 2015-03-23 A | 2015-03-27 A |  | 100% |  | 2015-03-23 | 2015-03-27 | 5d |  |  | start no earlier than 2015-03-23 | HRST 1 | 40h | 40h | 40 | 40 | 40 | 100% | 100% |  |
| 540 | 5.3.1.2 | Configurar PDI (Palno de Desenvolvimento Individual) - VE |  | 5d | 2015-03-23 A | 2015-03-27 |  | 95% | 0.25d | 2015-03-23 | 2015-03-27 | 5d | 0.77d | 0d | start no earlier than 2015-03-23 | HRST 2 | 40h | 38h | 40 | 40 | 38 | 100% | 95% | 0,95 |
| 541 | 5.3.1.3 | Configurar Sucessão - VE |  | 5d | 2015-03-30 A | 2015-04-06 | 539, 540 | 55% | 2.25d | 2015-03-30 | 2015-04-06 | 5d | 74d |  |  | HRST 3 | 40h | 22h | 40 | 40 | 22 | 80% | 55% | 0,69 |
| 542 | 5.3.1.4 | Configurar PM - VE |  | 7d | 2015-03-30 A | 2015-04-08 | 539, 540 | 11% | 6.23d | 2015-03-30 | 2015-04-08 | 7d | 70d | 0d |  | HRST 1; HRST 2; HRST 3 | 168h | 18.48h | 168 | 168 | 18.48 | 57% | 11% | 0,19 |
| 543 | 5.3.1.5 | **Configurar Relatórios** |  | 2d | 2015-04-09 | 2015-04-10 |  |  |  | 2015-04-09 | 2015-04-10 | 2d | 70d |  |  |  | 16h |  | 16 | 16 |  | 0% | 0% |  |
| 544 | 5.3.1.5.1 | Cópia dos Relatórios da VC - VE |  | 0.5d | 2015-04-09 | 2015-04-09 | 542 |  |  | 2015-04-09 | 2015-04-09 | 0.5d | 70d | 0d |  | HRST 1 | 4h |  | 4 | 4 |  | 0% | 0% |  |
| 545 | 5.3.1.5.2 | Escala - Descrição e Pontuação - VE |  | 0.5d | 2015-04-09 | 2015-04-09 | 544 |  |  | 2015-04-09 | 2015-04-09 | 0.5d | 70d | 0d |  | HRST 1 | 4h |  | 4 | 4 |  | 0% | 0% |  |
| 546 | 5.3.1.5.3 | Comparativo entre Desempenho na Função e Crenças - VE |  | 1d | 2015-04-10 | 2015-04-10 | 545 |  |  | 2015-04-10 | 2015-04-10 | 1d | 70d |  |  | HRST 1 | 8h |  | 8 | 8 |  | 0% | 0% |  |
| 547 | 5.3.1.6 | Desenvolvimento Abap - Ajustes Integração |  | 9d | 2015-03-30 A | 2015-04-10 | 539, 540 | 25% | 6.75d | 2015-03-30 | 2015-04-10 | 9d | 70d | 0d |  | ABAP 1; ABAP 2 | 144h | 36h | 144 | 144 | 36 | 44% | 25% | 0,56 |
| 548 | 5.3.1.7 | **Termo de Aceite Fase 3 - Realização** |  | 0d | 2015-04-10 | 2015-04-10 |  |  |  | 2015-04-10 | 2015-04-10 | 0d | 70d |  |  | HRST 1 |  |  |  |  |  | 0% | 0% |  |
| 549 | 5.3.1.7.1 | Onda 1 - Assinatura Fase 3 - Realização - VE | milestone | 0d | 2015-04-10 | 2015-04-10 | 547 |  |  | 2015-04-10 | 2015-04-10 | 0d | 70d |  |  |  |  |  |  |  |  | 0% | 0% |  |
| 550 | 5.3.2 | **Gestão de Metas VE** |  | 6.5d | 2015-05-26 | 2015-06-03 |  |  |  | 2015-05-26 | 2015-06-03 | 6.5d | 35.5d |  |  |  | 52h |  | 52 | 52 |  | 0% | 0% |  |
| 551 | 5.3.2.1 | Alteração de label na instância |  | 0.5d | 2015-05-26 | 2015-05-26 | 585 |  |  | 2015-05-26 | 2015-05-26 | 0.5d | 35.5d | 0d | start no earlier than 2015-05-26 | HRST 2 | 4h |  | 4 | 4 |  | 0% | 0% |  |
| 552 | 5.3.2.2 | Configurar o mapa de rota |  | 0.5d | 2015-05-26 | 2015-05-26 | 551 |  |  | 2015-05-26 | 2015-05-26 | 0.5d | 35.5d | 0d |  | HRST 2 | 4h |  | 4 | 4 |  | 0% | 0% |  |
| 553 | 5.3.2.3 | Configurar Formulários |  | 1d | 2015-05-27 | 2015-05-27 | 552 |  |  | 2015-05-27 | 2015-05-27 | 1d | 35.5d | 0d |  | HRST 2 | 8h |  | 8 | 8 |  | 0% | 0% |  |
| 554 | 5.3.2.4 | Configurar permissões |  | 0.5d | 2015-05-28 | 2015-05-28 | 553 |  |  | 2015-05-28 | 2015-05-28 | 0.5d | 35.5d | 0d |  | HRST 2 | 4h |  | 4 | 4 |  | 0% | 0% |  |
| 555 | 5.3.2.5 | Definir layout para importar a Biblioteca de Metas |  | 0.5d | 2015-05-28 | 2015-05-28 | 554 |  |  | 2015-05-28 | 2015-05-28 | 0.5d | 35.5d | 0d |  | HRST 2 | 4h |  | 4 | 4 |  | 0% | 0% |  |
| 556 | 5.3.2.6 | Definir layout para carga de empregados |  | 0.5d | 2015-05-29 | 2015-05-29 | 555 |  |  | 2015-05-29 | 2015-05-29 | 0.5d | 35.5d | 0d |  | HRST 2 | 4h |  | 4 | 4 |  | 0% | 0% |  |
| 557 | 5.3.2.7 | Passar para Votorantim informações para carga de fotos |  | 0.5d | 2015-05-29 | 2015-05-29 | 556 |  |  | 2015-05-29 | 2015-05-29 | 0.5d | 35.5d | 0d |  | HRST 2 | 4h |  | 4 | 4 |  | 0% | 0% |  |
| 558 | 5.3.2.8 | Fazer a carga de metas |  | 0.5d | 2015-06-01 | 2015-06-01 | 557 |  |  | 2015-06-01 | 2015-06-01 | 0.5d | 35.5d | 0d |  | HRST 2 | 4h |  | 4 | 4 |  | 0% | 0% |  |
| 559 | 5.3.2.9 | Fazer a carga de empregados |  | 0.5d | 2015-06-01 | 2015-06-01 | 558 |  |  | 2015-06-01 | 2015-06-01 | 0.5d | 35.5d | 0d |  | HRST 2 | 4h |  | 4 | 4 |  | 0% | 0% |  |
| 560 | 5.3.2.10 | Agendar job para carga de fotos |  | 0.5d | 2015-06-02 | 2015-06-02 | 559 |  |  | 2015-06-02 | 2015-06-02 | 0.5d | 35.5d | 0d |  | HRST 2 | 4h |  | 4 | 4 |  | 0% | 0% |  |
| 561 | 5.3.2.11 | Configurar Relatórios |  | 1d | 2015-06-02 | 2015-06-03 | 560 |  |  | 2015-06-02 | 2015-06-03 | 1d | 35.5d | 0d |  | HRST 2 | 8h |  | 8 | 8 |  | 0% | 0% |  |

| ID | WBS | Task | Type | Duration | Start | Finish | Predecessors | Baseline start | Baseline finish | Baseline duration | Total slack | Free slack | Constraint | Resources | Work | Cost | Baseline cost | % Planejado | % Realizado |
| --- | --- | --- | --- | --- | --- | --- | --- | --- | --- | --- | --- | --- | --- | --- | --- | --- | --- | --- | --- |
| 562 | 5.3.2.12 | **Onda 2 - Termo de Aceite - Realização** |  | 0d | 2015-06-03 | 2015-06-03 |  | 2015-06-03 | 2015-06-03 | 0d | 35.5d |  |  |  |  |  |  | 0% | 0% |
| 563 | 5.3.2.12.1 | Onda 2 - Assinatura Fase 3 - Realização - VE | milestone | 0d | 2015-06-03 | 2015-06-03 | 561 | 2015-06-03 | 2015-06-03 | 0d | 35.5d |  |  |  |  |  |  | 0% | 0% |
| 564 | 5.4 | **Fase 4 - Preparação Final** |  | 57d | 2015-04-16 | 2015-07-10 |  | 2015-04-16 | 2015-07-10 | 57d | 10d |  |  |  | 496h | 496 | 496 | 0% | 0% |
| 565 | 5.4.1 | **Testes Funcionais** |  | 37d | 2015-04-16 | 2015-06-12 |  | 2015-04-16 | 2015-06-12 | 37d | 30d |  |  |  | 32h | 32 | 32 | 0% | 0% |
| 566 | 5.4.1.1 | **Gestão de Competência VE** |  | 2d | 2015-04-16 | 2015-04-17 |  | 2015-04-16 | 2015-04-17 | 2d | 65d |  |  |  | 16h | 16 | 16 | 0% | 0% |
| 567 | 5.4.1.1.1 | Realizar Testes Funcionais - VE |  | 1d | 2015-04-16 | 2015-04-16 |  | 2015-04-16 | 2015-04-16 | 1d | 65d | 0d | start no earlier than 2015-04-16 | HRST 1 | 8h | 8 | 8 | 0% | 0% |
| 568 | 5.4.1.1.2 | Ajustes Testes Funcionais - VE |  | 1d | 2015-04-17 | 2015-04-17 | 567 | 2015-04-17 | 2015-04-17 | 1d | 65d | 0d |  | HRST 1 | 8h | 8 | 8 | 0% | 0% |
| 569 | 5.4.1.1.3 | Onda 1 - Entrega Testes Funcionais - VE | milestone | 0d | 2015-04-17 | 2015-04-17 | 568 | 2015-04-17 | 2015-04-17 | 0d | 65d |  |  |  |  |  |  | 0% | 0% |
| 570 | 5.4.1.2 | **Gestão de Metas VE** |  | 2d | 2015-06-11 | 2015-06-12 |  | 2015-06-11 | 2015-06-12 | 2d | 30d |  |  |  | 16h | 16 | 16 | 0% | 0% |
| 571 | 5.4.1.2.1 | Realizar Testes Funcionais - VE |  | 1d | 2015-06-11 | 2015-06-11 |  | 2015-06-11 | 2015-06-11 | 1d | 30d | 0d | start no earlier than 2015-06-11 | HRST 4 | 8h | 8 | 8 | 0% | 0% |
| 572 | 5.4.1.2.2 | Ajustes Testes Funcionais - VE |  | 1d | 2015-06-12 | 2015-06-12 | 571 | 2015-06-12 | 2015-06-12 | 1d | 30d | 0d |  | HRST 4 | 8h | 8 | 8 | 0% | 0% |
| 573 | 5.4.1.2.3 | Onda 2 - Entrega Testes Funcionais - VE | milestone | 0d | 2015-06-12 | 2015-06-12 | 572 | 2015-06-12 | 2015-06-12 | 0d | 30d |  |  |  |  |  |  | 0% | 0% |
| 574 | 5.4.2 | **Testes Unitários** |  | 41d | 2015-04-28 | 2015-06-26 |  | 2015-04-28 | 2015-06-26 | 41d | 20d |  |  |  | 64h | 64 | 64 | 0% | 0% |
| 575 | 5.4.2.1 | **Gestão de Competência VE** |  | 3d | 2015-04-28 | 2015-04-30 |  | 2015-04-28 | 2015-04-30 | 3d | 35d |  |  |  | 32h | 32 | 32 | 0% | 0% |
| 576 | 5.4.2.1.1 | Realizar Testes Unitários - VE |  | 1d | 2015-04-28 | 2015-04-28 |  | 2015-04-28 | 2015-04-28 | 1d | 35d | 0d | start no earlier than 2015-04-28 | HRST 2; Juraci Silva | 16h | 16 | 16 | 0% | 0% |
| 577 | 5.4.2.1.2 | Ajustes Testes Unitários - VE |  | 2d | 2015-04-29 | 2015-04-30 | 576 | 2015-04-29 | 2015-04-30 | 2d | 35d | 0d |  | HRST 2 | 16h | 16 | 16 | 0% | 0% |
| 578 | 5.4.2.1.3 | Onda 1 - Entrega Testes Unitários - VE | milestone | 0d | 2015-04-30 | 2015-04-30 | 577 | 2015-04-30 | 2015-04-30 | 0d | 58d |  |  |  |  |  |  | 0% | 0% |
| 579 | 5.4.2.2 | **Gestão de Metas VE** |  | 4d | 2015-06-23 | 2015-06-26 |  | 2015-06-23 | 2015-06-26 | 4d | 0d |  |  |  | 32h | 32 | 32 | 0% | 0% |
| 580 | 5.4.2.2.1 | Realizar Testes Unitários - VE |  | 2d | 2015-06-23 | 2015-06-24 |  | 2015-06-23 | 2015-06-24 | 2d | 0d |  | start no earlier than 2015-06-23 | Juraci Silva | 16h | 16 | 16 | 0% | 0% |
| 581 | 5.4.2.2.2 | Ajustes de Testes Unitários - VE |  | 2d | 2015-06-25 | 2015-06-26 | 580 | 2015-06-25 | 2015-06-26 | 2d | 0d |  |  | HRST 1 | 16h | 16 | 16 | 0% | 0% |
| 582 | 5.4.2.2.3 | Onda 2 - Entrega Testes Unitários - VE | milestone | 0d | 2015-06-26 | 2015-06-26 | 581 | 2015-06-26 | 2015-06-26 | 0d | 20d |  |  |  |  |  |  | 0% | 0% |
| 583 | 5.4.3 | **Testes Integrados** |  | 48d | 2015-05-04 | 2015-07-10 |  | 2015-05-04 | 2015-07-10 | 48d | 10d |  |  |  | 400h | 400 | 400 | 0% | 0% |
| 584 | 5.4.3.1 | **Gestão de Competência VE** |  | 10d | 2015-05-04 | 2015-05-15 |  | 2015-05-04 | 2015-05-15 | 10d | 35d |  |  |  | 120h | 120 | 120 | 0% | 0% |
| 585 | 5.4.3.1.1 | Testes Integrados VE |  | 5d | 2015-05-04 | 2015-05-08 | 577 | 2015-05-04 | 2015-05-08 | 5d | 35d | 0d |  | Rodney; VE | 80h | 80 | 80 | 0% | 0% |
| 586 | 5.4.3.1.2 | Ajustes Testes Integrados VE |  | 5d | 2015-05-11 | 2015-05-15 | 585 | 2015-05-11 | 2015-05-15 | 5d | 35d | 0d |  | HRST 1 | 40h | 40 | 40 | 0% | 0% |

| ID | WBS | Task | Type | Duration | Start | Finish | Predecessors | Baseline start | Baseline finish | Baseline duration | Total slack | Free slack | Resources | Work | Cost | Baseline cost | % Planejado | % Realizado |
| --- | --- | --- | --- | --- | --- | --- | --- | --- | --- | --- | --- | --- | --- | --- | --- | --- | --- | --- |
| 587 | 5.4.3.1.3 | **Onda 1 - Termo de Aceite Fase 4** |  | 0d | 2015-05-15 | 2015-05-15 |  | 2015-05-15 | 2015-05-15 | 0d | 48d |  |  |  |  |  | 0% | 0% |
| 588 | 5.4.3.1.3.1 | Onda 1 - Assinatura Fase 4 - Preparação Final - VE | milestone | 0d | 2015-05-15 | 2015-05-15 | 586 | 2015-05-15 | 2015-05-15 | 0d | 48d |  |  |  |  |  | 0% | 0% |
| 589 | 5.4.3.2 | **Gestão de Metas VE** |  | 10d | 2015-06-29 | 2015-07-10 |  | 2015-06-29 | 2015-07-10 | 10d | 0d |  |  | 280h | 280 | 280 | 0% | 0% |
| 590 | 5.4.3.2.1 | Testes Integrados VE |  | 5d | 2015-06-29 | 2015-07-03 | 581 | 2015-06-29 | 2015-07-03 | 5d | 0d |  | HRST 1; HRST 2; Rodney | 120h | 120 | 120 | 0% | 0% |
| 591 | 5.4.3.2.2 | Ajustes Testes Integrados VE |  | 5d | 2015-07-06 | 2015-07-10 | 590 | 2015-07-06 | 2015-07-10 | 5d | 0d |  | HRST 1; HRST 2; HRST 3; Rodney | 160h | 160 | 160 | 0% | 0% |
| 592 | 5.4.3.2.3 | **Termo de Aceite Fase 4** |  | 0d | 2015-07-10 | 2015-07-10 |  | 2015-07-10 | 2015-07-10 | 0d | 10d |  |  |  |  |  | 0% | 0% |
| 593 | 5.4.3.2.3.1 | Onda 2 - Assinatura Fase 4 - Preparação Final - VE | milestone | 0d | 2015-07-10 | 2015-07-10 | 591 | 2015-07-10 | 2015-07-10 | 0d | 10d |  |  |  |  |  | 0% | 0% |
| 594 | 5.5 | **Fase 5 - Go Live e Operacao Assistida** |  | 48d | 2015-05-18 | 2015-07-24 |  | 2015-05-18 | 2015-07-24 | 48d | 0d |  |  | 616h | 616 | 616 | 0% | 0% |
| 595 | 5.5.1 | **Go Live - Onda 1 - Gestão de Competência** |  | 13d | 2015-05-18 | 2015-06-03 |  | 2015-05-18 | 2015-06-03 | 13d | 35d |  |  | 296h | 296 | 296 | 0% | 0% |
| 596 | 5.5.1.1 | Treinamento |  | 5d | 2015-05-18 | 2015-05-22 | 586 | 2015-05-18 | 2015-05-22 | 5d | 35d | 0d | HRST 1 | 40h | 40 | 40 | 0% | 0% |
| 597 | 5.5.1.2 | Cutover |  | 5d | 2015-05-25 | 2015-05-29 | 596 | 2015-05-25 | 2015-05-29 | 5d | 35d | 0d | HRST 1; HRST 2; HRST 3; Rodney | 160h | 160 | 160 | 0% | 0% |
| 598 | 5.5.1.3 | Onda 1 - Go Live | milestone | 0d | 2015-05-29 | 2015-05-29 | 597 | 2015-05-29 | 2015-05-29 | 0d | 38d |  |  |  |  |  | 0% | 0% |
| 599 | 5.5.1.4 | Operação Assistida |  | 3d | 2015-06-01 | 2015-06-03 | 597 | 2015-06-01 | 2015-06-03 | 3d | 35d |  | HRST 1; HRST 2; HRST 3; Rodney | 96h | 96 | 96 | 0% | 0% |
| 600 | 5.5.2 | **Go Live - Onda 2 - Gestão de Metas** |  | 10d | 2015-07-13 | 2015-07-24 |  | 2015-07-13 | 2015-07-24 | 10d | 0d |  |  | 320h | 320 | 320 | 0% | 0% |
| 601 | 5.5.2.1 | Treinamento |  | 5d | 2015-07-13 | 2015-07-17 | 591 | 2015-07-13 | 2015-07-17 | 5d | 5d |  | HRST 1 | 40h | 40 | 40 | 0% | 0% |
| 602 | 5.5.2.2 | Cutover |  | 5d | 2015-07-13 | 2015-07-17 | 591 | 2015-07-13 | 2015-07-17 | 5d | 0d |  | HRST 2; HRST 3; Rodney | 120h | 120 | 120 | 0% | 0% |
| 603 | 5.5.2.3 | Onda 2 - Go Live | milestone | 0d | 2015-07-17 | 2015-07-17 | 602 | 2015-07-17 | 2015-07-17 | 0d | 5d |  |  |  |  |  | 0% | 0% |
| 604 | 5.5.2.4 | Operação Assistida |  | 5d | 2015-07-20 | 2015-07-24 | 602 | 2015-07-20 | 2015-07-24 | 5d | 0d |  | HRST 1; HRST 2; HRST 3; Rodney | 160h | 160 | 160 | 0% | 0% |
