# 2_Onda 1_Projeto Gestão de Competências_v2

Schedule from MS Project, 2015-02-09 to 2015-06-03, status date 2015-04-02, costs in R$, A marks actual dates.
CPM Braxis

## Calendars

- Padrão: Mon-Fri 09:00-12:00, 13:00-18:00; Sat-Sun off. Exceptions (off unless hours are given): 2015-03-09 to 2015-03-20 (Congelamento das Instâncias), 2015-04-03 (Sexta-feira da Paixão), 2015-04-20 (Ponte Tiradentes), 2015-04-21 (Tiradentes), 2015-05-01 (Dia do Trabalho).

## Resources

| Resource | Rate |
| --- | --- |
| Leonardo | 1 |
| Rodney | 1 |
| HRST 1 | 1 |
| HRST 2 | 1 |
| HRST 3 | 1 |
| HRST 4 | 1 |
| ABAP 1 | 1 |
| ABAP 2 | 1 |
| Juraci Silva | 1 |
| VS | 1 |
| VM | 1 |
| VID São Paulo | 1 |
| VID Curitiba | 1 |
| VE | 1 |
| TI Votorantim | 1 |
| HRST | 1 |
| ABAP | 1 |

## Schedule

| ID | WBS | Task | Type | Duration | Start | Finish | Predecessors | Complete | Remaining | Baseline start | Baseline finish | Baseline duration | Total slack | Free slack | Constraint | Resources | Work | Actual work | Cost | Baseline cost | Actual cost | % Planejado | % Realizado | .SPI. |
| --- | --- | --- | --- | --- | --- | --- | --- | --- | --- | --- | --- | --- | --- | --- | --- | --- | --- | --- | --- | --- | --- | --- | --- | --- |
| 1 | 1 | **Projeto Metas e Competência SuccessFactors** |  | 69d | 2015-02-09 A | 2015-06-03 |  | 24% | 52.54d | 2015-02-09 | 2015-06-03 | 69d | 0d |  |  |  | 2376h | 476.48h | 2,376 | 2,376 | 476.48 | 26% | 20% | 0,77 |
| 2 | 1.1 | **Fase 1 - Preparação do Projeto** |  | 10d | 2015-02-09 A | 2015-02-20 A |  | 100% |  | 2015-02-09 | 2015-02-20 | 10d |  |  |  |  | 120h | 120h | 120 | 120 | 120 | 100% | 100% |  |
| 3 | 1.1.1 | Confirmação e Mobilização de Equipe |  | 8d | 2015-02-09 A | 2015-02-18 A |  | 100% |  | 2015-02-09 | 2015-02-18 | 8d |  |  | start no earlier than 2015-02-09 | Rodney | 64h | 64h | 64 | 64 | 64 | 100% | 100% |  |
| 4 | 1.1.2 | Reunião Pré Kick-off |  | 1d | 2015-02-19 A | 2015-02-19 A | 3 | 100% |  | 2015-02-19 | 2015-02-19 | 1d |  |  |  | Leonardo; Rodney | 16h | 16h | 16 | 16 | 16 | 100% | 100% |  |
| 5 | 1.1.3 | Kick-Off |  | 1d | 2015-02-20 A | 2015-02-20 A | 4 | 100% |  | 2015-02-20 | 2015-02-20 | 1d |  |  |  | TI Votorantim | 8h | 8h | 8 | 8 | 8 | 100% | 100% |  |
| 6 | 1.1.4 | Identificação dos Usuários |  | 2d | 2015-02-19 A | 2015-02-20 A | 3 | 100% |  | 2015-02-19 | 2015-02-20 | 2d |  |  |  | Leonardo; Rodney | 32h | 32h | 32 | 32 | 32 | 100% | 100% |  |
| 7 | 1.1.5 | **Termo de Aceite Fase 1** |  | 0d | 2015-02-20 A | 2015-02-20 A |  | 100% |  | 2015-02-20 | 2015-02-20 | 0d |  |  |  |  |  |  |  |  |  | 100% | 100% |  |
| 8 | 1.1.5.1 | Assinatura Fase 1 - Preparação do Projeto | milestone | 0d | 2015-02-20 A | 2015-02-20 A | 6 | 100% |  | 2015-02-20 | 2015-02-20 | 0d |  |  |  |  |  |  |  |  |  | 100% | 100% |  |
| 9 | 1.2 | **Fase 2 - Business Blueprint** |  | 10d | 2015-02-23 A | 2015-03-06 |  | 90% | 1d | 2015-02-23 | 2015-03-06 | 10d | 49d |  |  |  | 256h | 236h | 256 | 256 | 236 | 100% | 92% | 0,92 |
| 10 | 1.2.1 | **Levantamento Gestão de Metas** |  | 5d | 2015-02-23 A | 2015-02-27 |  | 90% | 0.5d | 2015-02-23 | 2015-02-27 | 5d | 54d |  |  |  | 112h | 100h | 112 | 112 | 100 | 100% | 89% | 0,89 |
| 11 | 1.2.1.1 | Mapeamento dos Processos |  | 3d | 2015-02-23 A | 2015-02-25 A | 6 | 100% |  | 2015-02-23 | 2015-02-25 | 3d |  |  |  | HRST 1; HRST 2; Rodney | 72h | 72h | 72 | 72 | 72 | 100% | 100% |  |
| 12 | 1.2.1.2 | Elaboração dos BBPs |  | 1d | 2015-02-26 A | 2015-02-26 A | 11 | 100% |  | 2015-02-26 | 2015-02-26 | 1d |  |  |  | HRST 1; HRST 2 | 16h | 16h | 16 | 16 | 16 | 100% | 100% |  |
| 13 | 1.2.1.3 | Ajustes / Aprovação dos BBPs |  | 1d | 2015-02-27 A | 2015-02-27 | 12 | 50% | 0.5d | 2015-02-27 | 2015-02-27 | 1d | 54d |  |  | HRST 1; HRST 2; Rodney | 24h | 12h | 24 | 24 | 12 | 100% | 50% | 0,5 |
| 14 | 1.2.2 | **Levantamento Gestão de Competência** |  | 7d | 2015-02-26 A | 2015-03-06 |  | 90% | 0.7d | 2015-02-26 | 2015-03-06 | 7d | 49d |  |  |  | 144h | 136h | 144 | 144 | 136 | 100% | 94% | 0,94 |
| 15 | 1.2.2.1 | Mapeamento dos Processos |  | 4d | 2015-02-26 A | 2015-03-03 A | 11 | 100% |  | 2015-02-26 | 2015-03-03 | 4d |  |  |  | HRST 1; HRST 2; Rodney | 96h | 96h | 96 | 96 | 96 | 100% | 100% |  |
| 16 | 1.2.2.2 | **Elaboração dos BBPs** |  | 1d | 2015-03-04 A | 2015-03-04 A |  | 100% |  | 2015-03-04 | 2015-03-04 | 1d |  |  |  |  | 16h | 16h | 16 | 16 | 16 | 100% | 100% |  |
| 17 | 1.2.2.2.1 | EP |  | 0.5d | 2015-03-04 A | 2015-03-04 A | 15 | 100% |  | 2015-03-04 | 2015-03-04 | 0.5d |  |  |  | HRST 1 | 4h | 4h | 4 | 4 | 4 | 100% | 100% |  |
| 18 | 1.2.2.2.2 | PDI |  | 0.5d | 2015-03-04 A | 2015-03-04 A | 17 | 100% |  | 2015-03-04 | 2015-03-04 | 0.5d |  |  |  | HRST 1 | 4h | 4h | 4 | 4 | 4 | 100% | 100% |  |
| 19 | 1.2.2.2.3 | Competência |  | 0.5d | 2015-03-04 A | 2015-03-04 A | 15 | 100% |  | 2015-03-04 | 2015-03-04 | 0.5d |  |  | start no earlier than 2015-03-04 | HRST 2 | 4h | 4h | 4 | 4 | 4 | 100% | 100% |  |
| 20 | 1.2.2.2.4 | Sucessão |  | 0.5d | 2015-03-04 A | 2015-03-04 A | 19 | 100% |  | 2015-03-04 | 2015-03-04 | 0.5d |  |  |  | HRST 2 | 4h | 4h | 4 | 4 | 4 | 100% | 100% |  |
| 21 | 1.2.2.3 | **Ajustes / Aprovação dos BBPs** |  | 2d | 2015-03-05 A | 2015-03-06 |  | 75% | 0.5d | 2015-03-05 | 2015-03-06 | 2d | 49d |  |  |  | 32h | 24h | 32 | 32 | 24 | 100% | 75% | 0,75 |
| 22 | 1.2.2.3.1 | EP |  | 1d | 2015-03-05 A | 2015-03-05 | 20 | 75% | 0.25d | 2015-03-05 | 2015-03-05 | 1d | 0.75d | 0d | start no earlier than 2015-03-05 | HRST 1 | 8h | 6h | 8 | 8 | 6 | 100% | 75% | 0,75 |
| 23 | 1.2.2.3.2 | PDI |  | 1d | 2015-03-06 A | 2015-03-06 | 22 | 75% | 0.25d | 2015-03-06 | 2015-03-06 | 1d | 49d |  |  | HRST 1 | 8h | 6h | 8 | 8 | 6 | 100% | 75% | 0,75 |
| 24 | 1.2.2.3.3 | Competência |  | 1d | 2015-03-05 A | 2015-03-05 | 20 | 75% | 0.25d | 2015-03-05 | 2015-03-05 | 1d | 0.75d | 0d | start no earlier than 2015-03-05 | HRST 2 | 8h | 6h | 8 | 8 | 6 | 100% | 75% | 0,75 |
| 25 | 1.2.2.3.4 | Sucesão |  | 1d | 2015-03-06 A | 2015-03-06 | 24 | 75% | 0.25d | 2015-03-06 | 2015-03-06 | 1d | 49d | 0d |  | HRST 2 | 8h | 6h | 8 | 8 | 6 | 100% | 75% | 0,75 |

| ID | WBS | Task | Type | Duration | Start | Finish | Predecessors | Complete | Remaining | Baseline start | Baseline finish | Baseline duration | Total slack | Free slack | Constraint | Resources | Work | Actual work | Cost | Baseline cost | Actual cost | % Planejado | % Realizado | .SPI. |
| --- | --- | --- | --- | --- | --- | --- | --- | --- | --- | --- | --- | --- | --- | --- | --- | --- | --- | --- | --- | --- | --- | --- | --- | --- |
| 26 | 1.2.2.4 | **Termo de Aceite Fase 2** |  | 0d | 2015-03-06 | 2015-03-06 |  |  |  | 2015-03-06 | 2015-03-06 | 0d | 49d |  |  |  |  |  |  |  |  | 100% | 0% |  |
| 27 | 1.2.2.4.1 | Assinatura Fase 2 - Business Blueprint | milestone | 0d | 2015-03-06 | 2015-03-06 | 25 |  |  | 2015-03-06 | 2015-03-06 | 0d | 49d |  |  |  |  |  |  |  |  | 100% | 0% |  |
| 28 | 1.3 | **Fase 3 - Realização** |  | 14d | 2015-03-23 A | 2015-04-10 |  | 35% | 9.1d | 2015-03-23 | 2015-04-10 | 14d | 35d |  |  |  | 416h | 120.48h | 416 | 416 | 120.48 | 58% | 29% | 0,5 |
| 29 | 1.3.1 | **Gestão de Competência** |  | 14d | 2015-03-23 A | 2015-04-10 |  | 35% | 9.1d | 2015-03-23 | 2015-04-10 | 14d | 35d |  |  |  | 416h | 120.48h | 416 | 416 | 120.48 | 58% | 29% | 0,5 |
| 30 | 1.3.1.1 | **EP** |  | 5d | 2015-03-23 A | 2015-03-27 A |  | 100% |  | 2015-03-23 | 2015-03-27 | 5d |  |  |  |  | 40h | 40h | 40 | 40 | 40 | 100% | 100% |  |
| 31 | 1.3.1.1.1 | Configurar EP (Employee Profile) - VE |  | 2d | 2015-03-23 A | 2015-03-24 A |  | 100% |  | 2015-03-23 | 2015-03-24 | 2d |  |  | start no earlier than 2015-03-23 | HRST 1 | 16h | 16h | 16 | 16 | 16 | 100% | 100% |  |
| 32 | 1.3.1.1.2 | Configurar EP (Employee Profile) - VS |  | 1d | 2015-03-25 A | 2015-03-25 A | 31 | 100% |  | 2015-03-25 | 2015-03-25 | 1d |  |  |  | HRST 1 | 8h | 8h | 8 | 8 | 8 | 100% | 100% |  |
| 33 | 1.3.1.1.3 | Configurar EP (Employee Profile) - VM |  | 1d | 2015-03-26 A | 2015-03-26 A | 32 | 100% |  | 2015-03-26 | 2015-03-26 | 1d |  |  |  | HRST 1 | 8h | 8h | 8 | 8 | 8 | 100% | 100% |  |
| 34 | 1.3.1.1.4 | Configurar EP (Employee Profile) - VID São Paulo e Curitiba |  | 1d | 2015-03-27 A | 2015-03-27 A | 33 | 100% |  | 2015-03-27 | 2015-03-27 | 1d |  |  |  | HRST 1 | 8h | 8h | 8 | 8 | 8 | 100% | 100% |  |
| 35 | 1.3.1.1.5 | Onda 1 - Entrega Fase 3 - Realização - EP | milestone | 0d | 2015-03-27 A | 2015-03-27 A | 34 | 100% |  | 2015-03-27 | 2015-03-27 | 0d |  |  |  |  |  |  |  |  |  | 100% | 100% |  |
| 36 | 1.3.1.2 | **PDI** |  | 5d | 2015-03-23 A | 2015-03-27 |  | 98% | 0.1d | 2015-03-23 | 2015-03-27 | 5d | 0.75d |  |  |  | 40h | 39.2h | 40 | 40 | 39.2 | 100% | 98% | 0,98 |
| 37 | 1.3.1.2.1 | Configurar PDI (Palno de Desenvolvimento Individual) - VS |  | 2d | 2015-03-23 A | 2015-03-24 A |  | 100% |  | 2015-03-23 | 2015-03-24 | 2d |  |  | start no earlier than 2015-03-23 | HRST 2 | 16h | 16h | 16 | 16 | 16 | 100% | 100% |  |
| 38 | 1.3.1.2.2 | Configurar PDI (Palno de Desenvolvimento Individual) - VE |  | 1d | 2015-03-25 A | 2015-03-25 A | 31 | 100% |  | 2015-03-25 | 2015-03-25 | 1d |  |  |  | HRST 2 | 8h | 8h | 8 | 8 | 8 | 100% | 100% |  |
| 39 | 1.3.1.2.3 | Configurar PDI (Palno de Desenvolvimento Individual) - VM |  | 1d | 2015-03-26 A | 2015-03-26 A | 32 | 100% |  | 2015-03-26 | 2015-03-26 | 1d |  |  |  | HRST 2 | 8h | 8h | 8 | 8 | 8 | 100% | 100% |  |
| 40 | 1.3.1.2.4 | Configurar PDI (Palno de Desenvolvimento Individual) - VID São Paulo e Curitiba |  | 1d | 2015-03-27 A | 2015-03-27 | 33 | 90% | 0.1d | 2015-03-27 | 2015-03-27 | 1d | 0.75d | 0d |  | HRST 2 | 8h | 7.2h | 8 | 8 | 7.2 | 100% | 90% | 0,9 |
| 41 | 1.3.1.2.5 | Onda 1 - Entrega Fase 3 - Realização - PDI | milestone | 0d | 2015-03-27 A | 2015-03-27 A | 40 | 100% |  | 2015-03-27 | 2015-03-27 | 0d |  |  |  |  |  |  |  |  |  | 100% | 100% |  |
| 42 | 1.3.1.3 | **Sucessão** |  | 5d | 2015-03-30 A | 2015-04-06 |  | 55% | 2.25d | 2015-03-30 | 2015-04-06 | 5d | 39d |  |  |  | 40h | 22h | 40 | 40 | 22 | 80% | 55% | 0,69 |
| 43 | 1.3.1.3.1 | Configurar Sucessão - VS |  | 2d | 2015-03-30 A | 2015-03-31 | 34 | 50% | 1d | 2015-03-30 | 2015-03-31 | 2d | 0.5d | 0d | start no earlier than 2015-03-30 | HRST 3 | 16h | 8h | 16 | 16 | 8 | 100% | 50% | 0,5 |
| 44 | 1.3.1.3.2 | Configurar Sucessão - VM |  | 1d | 2015-04-01 A | 2015-04-01 | 43 | 50% | 0.5d | 2015-04-01 | 2015-04-01 | 1d | 0.75d | 0d |  | HRST 3 | 8h | 4h | 8 | 8 | 4 | 100% | 50% | 0,5 |
| 45 | 1.3.1.3.3 | Configurar Sucessão - VID São Paulo e Curitiba |  | 1d | 2015-04-02 A | 2015-04-02 | 44 | 75% | 0.25d | 2015-04-02 | 2015-04-02 | 1d | 0.5d | 0d |  | HRST 3 | 8h | 6h | 8 | 8 | 6 | 100% | 75% | 0,75 |
| 46 | 1.3.1.3.4 | Configurar Sucessão - VE |  | 1d | 2015-04-06 A | 2015-04-06 | 45 | 50% | 0.5d | 2015-04-06 | 2015-04-06 | 1d | 36d | 0d |  | HRST 3 | 8h | 4h | 8 | 8 | 4 | 0% | 50% | 1,5 |
| 47 | 1.3.1.3.5 | Onda 1 - Entrega Fase 3 - Realização - Sucessão | milestone | 0d | 2015-04-06 | 2015-04-06 | 46 |  |  | 2015-04-06 | 2015-04-06 | 0d | 39d |  |  |  |  |  |  |  |  | 0% | 0% |  |
| 48 | 1.3.1.4 | **PM** |  | 8d | 2015-03-30 A | 2015-04-09 |  | 17% | 6.62d | 2015-03-30 | 2015-04-09 | 8d | 36d |  |  |  | 112h | 19.28h | 112 | 112 | 19.28 | 57% | 17% | 0,3 |
| 49 | 1.3.1.4.1 | **Configurar PM - VS** |  | 4d | 2015-03-30 A | 2015-04-02 |  | 42% | 2.34d | 2015-03-30 | 2015-04-02 | 4d | 35d | 0d |  |  | 32h | 13.28h | 32 | 32 | 13.28 | 100% | 42% | 0,42 |
| 50 | 1.3.1.4.1.1 | Learning Agility |  | 1d | 2015-03-30 A | 2015-03-30 A | 34 | 100% |  | 2015-03-30 | 2015-03-30 | 1d |  |  |  | HRST 1 | 8h | 8h | 8 | 8 | 8 | 100% | 100% |  |
| 51 | 1.3.1.4.1.2 | Desempenho na Função e Crenças |  | 1d | 2015-03-31 A | 2015-03-31 | 50 | 66% | 0.34d | 2015-03-31 | 2015-03-31 | 1d | 35d | 0d |  | HRST 1 | 8h | 5.28h | 8 | 8 | 5.28 | 100% | 66% | 0,66 |
| 52 | 1.3.1.4.1.3 | Metas, Desempenho na Função e Crenças |  | 1d | 2015-04-01 | 2015-04-01 | 51 |  |  | 2015-04-01 | 2015-04-01 | 1d | 35d | 0d |  | HRST 1 | 8h |  | 8 | 8 |  | 100% | 0% |  |
| 53 | 1.3.1.4.1.4 | Pré Comitê |  | 1d | 2015-04-02 | 2015-04-02 | 52 |  |  | 2015-04-02 | 2015-04-02 | 1d | 35d |  |  | HRST 1 | 8h |  | 8 | 8 |  | 100% | 0% |  |

| ID | WBS | Task | Type | Duration | Start | Finish | Predecessors | Complete | Remaining | Baseline start | Baseline finish | Baseline duration | Total slack | Free slack | Resources | Work | Actual work | Cost | Baseline cost | Actual cost | % Planejado | % Realizado | .SPI. |
| --- | --- | --- | --- | --- | --- | --- | --- | --- | --- | --- | --- | --- | --- | --- | --- | --- | --- | --- | --- | --- | --- | --- | --- |
| 54 | 1.3.1.4.2 | **Configurar PM - VID São Paulo e CTB** |  | 4d | 2015-03-30 A | 2015-04-02 |  | 19% | 3.25d | 2015-03-30 | 2015-04-02 | 4d | 35d |  |  | 32h | 6h | 32 | 32 | 6 | 100% | 19% | 0,19 |
| 55 | 1.3.1.4.2.1 | Metas, Desempenho na Função e Crenças |  | 1d | 2015-03-30 A | 2015-03-30 | 40 | 75% | 0.25d | 2015-03-30 | 2015-03-30 | 1d | 35d | 0d | HRST 2 | 8h | 6h | 8 | 8 | 6 | 100% | 75% | 0,75 |
| 56 | 1.3.1.4.2.2 | Desempenho na Função e Crenças |  | 1d | 2015-03-31 | 2015-03-31 | 55 |  |  | 2015-03-31 | 2015-03-31 | 1d | 35d | 0d | HRST 2 | 8h |  | 8 | 8 |  | 100% | 0% |  |
| 57 | 1.3.1.4.2.3 | Pré Comitê |  | 1d | 2015-04-01 | 2015-04-01 | 56 |  |  | 2015-04-01 | 2015-04-01 | 1d | 35d | 0d | HRST 2 | 8h |  | 8 | 8 |  | 100% | 0% |  |
| 58 | 1.3.1.4.2.4 | Learning Agility |  | 1d | 2015-04-02 | 2015-04-02 | 57 |  |  | 2015-04-02 | 2015-04-02 | 1d | 35d | 0d | HRST 2 | 8h |  | 8 | 8 |  | 100% | 0% |  |
| 59 | 1.3.1.4.3 | **Configurar PM - VM** |  | 3d | 2015-04-06 | 2015-04-08 |  |  |  | 2015-04-06 | 2015-04-08 | 3d | 35d | 0d |  | 24h |  | 24 | 24 |  | 0% | 0% |  |
| 60 | 1.3.1.4.3.1 | Metas, Desempenho na Função e Crenças |  | 1d | 2015-04-06 | 2015-04-06 | 58 |  |  | 2015-04-06 | 2015-04-06 | 1d | 35d | 0d | HRST 3 | 8h |  | 8 | 8 |  | 0% | 0% |  |
| 61 | 1.3.1.4.3.2 | Desempenho na Função e Crenças |  | 1d | 2015-04-07 | 2015-04-07 | 60 |  |  | 2015-04-07 | 2015-04-07 | 1d | 35d | 0d | HRST 3 | 8h |  | 8 | 8 |  | 0% | 0% |  |
| 62 | 1.3.1.4.3.3 | Pré Comitê |  | 0.5d | 2015-04-08 | 2015-04-08 | 61 |  |  | 2015-04-08 | 2015-04-08 | 0.5d | 35d | 0d | HRST 3 | 4h |  | 4 | 4 |  | 0% | 0% |  |
| 63 | 1.3.1.4.3.4 | Learning Agility |  | 0.5d | 2015-04-08 | 2015-04-08 | 62 |  |  | 2015-04-08 | 2015-04-08 | 0.5d | 35d |  | HRST 3 | 4h |  | 4 | 4 |  | 0% | 0% |  |
| 64 | 1.3.1.4.4 | **Configurar PM - VE** |  | 3d | 2015-04-07 | 2015-04-09 |  |  |  | 2015-04-07 | 2015-04-09 | 3d | 36d |  |  | 24h |  | 24 | 24 |  | 0% | 0% |  |
| 65 | 1.3.1.4.4.1 | Metas, Desempenho na Função e Crenças |  | 1d | 2015-04-07 | 2015-04-07 | 46 |  |  | 2015-04-07 | 2015-04-07 | 1d | 36d | 0d | HRST 2 | 8h |  | 8 | 8 |  | 0% | 0% |  |
| 66 | 1.3.1.4.4.2 | Desempenho na Função e Crenças |  | 1d | 2015-04-08 | 2015-04-08 | 65 |  |  | 2015-04-08 | 2015-04-08 | 1d | 36d | 0d | HRST 2 | 8h |  | 8 | 8 |  | 0% | 0% |  |
| 67 | 1.3.1.4.4.3 | Pré Comitê |  | 0.5d | 2015-04-09 | 2015-04-09 | 66 |  |  | 2015-04-09 | 2015-04-09 | 0.5d | 36d | 0d | HRST 2 | 4h |  | 4 | 4 |  | 0% | 0% |  |
| 68 | 1.3.1.4.4.4 | Learning Agility |  | 0.5d | 2015-04-09 | 2015-04-09 | 67 |  |  | 2015-04-09 | 2015-04-09 | 0.5d | 36d | 0d | HRST 2 | 4h |  | 4 | 4 |  | 0% | 0% |  |
| 69 | 1.3.1.4.5 | Onda 1 - Entrega Fase 3 - Realização - PM | milestone | 0d | 2015-04-09 | 2015-04-09 | 68 |  |  | 2015-04-09 | 2015-04-09 | 0d | 36d |  |  |  |  |  |  |  | 0% | 0% |  |
| 70 | 1.3.1.5 | **Relatórios** |  | 5d | 2015-04-06 | 2015-04-10 |  |  |  | 2015-04-06 | 2015-04-10 | 5d | 35d |  |  | 40h |  | 40 | 40 |  | 0% | 0% |  |
| 71 | 1.3.1.5.1 | Configurar Relatórios - VS |  | 2d | 2015-04-06 | 2015-04-07 | 49 |  |  | 2015-04-06 | 2015-04-07 | 2d | 35d | 0d | HRST 1 | 16h |  | 16 | 16 |  | 0% | 0% |  |
| 72 | 1.3.1.5.2 | Configurar Relatórios - VM |  | 1d | 2015-04-08 | 2015-04-08 | 71 |  |  | 2015-04-08 | 2015-04-08 | 1d | 35d | 0d | HRST 1 | 8h |  | 8 | 8 |  | 0% | 0% |  |
| 73 | 1.3.1.5.3 | Configurar Relatórios - VID São Paulo e Curitiba |  | 1d | 2015-04-09 | 2015-04-09 | 72 |  |  | 2015-04-09 | 2015-04-09 | 1d | 35d | 0d | HRST 1 | 8h |  | 8 | 8 |  | 0% | 0% |  |
| 74 | 1.3.1.5.4 | Configurar Relatórios - VE |  | 1d | 2015-04-10 | 2015-04-10 | 73 |  |  | 2015-04-10 | 2015-04-10 | 1d | 35d | 0d | HRST 1 | 8h |  | 8 | 8 |  | 0% | 0% |  |
| 75 | 1.3.1.5.5 | Onda 1 - Entrega Fase 3 - Realização - Relatórios | milestone | 0d | 2015-04-10 | 2015-04-10 | 74 |  |  | 2015-04-10 | 2015-04-10 | 0d | 35d |  |  |  |  |  |  |  | 0% | 0% |  |
| 76 | 1.3.1.6 | Desenvolvimento Abap - Ajustes Integração |  | 9d | 2015-03-30 | 2015-04-10 | 34 |  |  | 2015-03-30 | 2015-04-10 | 9d | 0d |  | ABAP 1; ABAP 2 | 144h |  | 144 | 144 |  | 44% | 0% |  |
| 77 | 1.3.1.7 | **Onda 1 - Termo de Aceite Fase 3 - Realização** |  | 0d | 2015-04-10 | 2015-04-10 |  |  |  | 2015-04-10 | 2015-04-10 | 0d | 35d |  |  |  |  |  |  |  | 0% | 0% |  |
| 78 | 1.3.1.7.1 | Onda 1 - Assinatura Fase 3 - Realização | milestone | 0d | 2015-04-10 | 2015-04-10 | 76 |  |  | 2015-04-10 | 2015-04-10 | 0d | 35d |  |  |  |  |  |  |  | 0% | 0% |  |

| ID | WBS | Task | Type | Duration | Start | Finish | Predecessors | Baseline start | Baseline finish | Baseline duration | Total slack | Free slack | Resources | Work | Cost | Baseline cost | % Planejado | % Realizado |
| --- | --- | --- | --- | --- | --- | --- | --- | --- | --- | --- | --- | --- | --- | --- | --- | --- | --- | --- |
| 79 | 1.4 | **Fase 4 - Preparação Final** |  | 22d | 2015-04-13 | 2015-05-15 |  | 2015-04-13 | 2015-05-15 | 22d | 0d |  |  | 760h | 760 | 760 | 0% | 0% |
| 80 | 1.4.1 | **Testes Funcionais** |  | 5d | 2015-04-13 | 2015-04-17 |  | 2015-04-13 | 2015-04-17 | 5d | 0d |  |  | 88h | 88 | 88 | 0% | 0% |
| 81 | 1.4.1.1 | **Gestão de Competência** |  | 5d | 2015-04-13 | 2015-04-17 |  | 2015-04-13 | 2015-04-17 | 5d | 0d |  |  | 88h | 88 | 88 | 0% | 0% |
| 82 | 1.4.1.1.1 | **VS** |  | 3d | 2015-04-13 | 2015-04-15 |  | 2015-04-13 | 2015-04-15 | 3d | 0d |  |  | 24h | 24 | 24 | 0% | 0% |
| 83 | 1.4.1.1.1.1 | Realizar Testes Funcionais - VS |  | 1d | 2015-04-13 | 2015-04-13 | 76 | 2015-04-13 | 2015-04-13 | 1d | 0d |  | HRST 1 | 8h | 8 | 8 | 0% | 0% |
| 84 | 1.4.1.1.1.2 | Ajustes Testes Funcionais - VS |  | 2d | 2015-04-14 | 2015-04-15 | 83 | 2015-04-14 | 2015-04-15 | 2d | 0d |  | HRST 1 | 16h | 16 | 16 | 0% | 0% |
| 85 | 1.4.1.1.2 | **VM** |  | 3d | 2015-04-13 | 2015-04-15 |  | 2015-04-13 | 2015-04-15 | 3d | 32d |  |  | 24h | 24 | 24 | 0% | 0% |
| 86 | 1.4.1.1.2.1 | Realizar Testes Funcionais - VM |  | 1d | 2015-04-13 | 2015-04-13 | 76 | 2015-04-13 | 2015-04-13 | 1d | 32d | 0d | HRST 2 | 8h | 8 | 8 | 0% | 0% |
| 87 | 1.4.1.1.2.2 | Ajustes Testes Funcionais - VM |  | 2d | 2015-04-14 | 2015-04-15 | 86 | 2015-04-14 | 2015-04-15 | 2d | 32d | 0d | HRST 2 | 16h | 16 | 16 | 0% | 0% |
| 88 | 1.4.1.1.3 | Onda 1 - Entrega Testes Funcionais - VS e VM | milestone | 0d | 2015-04-15 | 2015-04-15 | 87 | 2015-04-15 | 2015-04-15 | 0d | 32d |  |  |  |  |  | 0% | 0% |
| 89 | 1.4.1.1.4 | **VID São Paulo e Curitiba** |  | 3d | 2015-04-13 | 2015-04-15 |  | 2015-04-13 | 2015-04-15 | 3d | 32d |  |  | 24h | 24 | 24 | 0% | 0% |
| 90 | 1.4.1.1.4.1 | Realizar Testes Funcionais - VID |  | 1d | 2015-04-13 | 2015-04-13 | 76 | 2015-04-13 | 2015-04-13 | 1d | 32d | 0d | HRST 3 | 8h | 8 | 8 | 0% | 0% |
| 91 | 1.4.1.1.4.2 | Ajustes Testes Funcionais - VID |  | 2d | 2015-04-14 | 2015-04-15 | 90 | 2015-04-14 | 2015-04-15 | 2d | 32d |  | HRST 3 | 16h | 16 | 16 | 0% | 0% |
| 92 | 1.4.1.1.5 | **VE** |  | 2d | 2015-04-16 | 2015-04-17 |  | 2015-04-16 | 2015-04-17 | 2d | 0d |  |  | 16h | 16 | 16 | 0% | 0% |
| 93 | 1.4.1.1.5.1 | Realizar Testes Funcionais - VE |  | 1d | 2015-04-16 | 2015-04-16 | 84 | 2015-04-16 | 2015-04-16 | 1d | 0d |  | HRST 1 | 8h | 8 | 8 | 0% | 0% |
| 94 | 1.4.1.1.5.2 | Ajustes Testes Funcionais - VE |  | 1d | 2015-04-17 | 2015-04-17 | 93 | 2015-04-17 | 2015-04-17 | 1d | 0d |  | HRST 1 | 8h | 8 | 8 | 0% | 0% |
| 95 | 1.4.1.1.6 | Onda 1 - Entrega Testes Funcionais - VID SP - VID CTB - VE | milestone | 0d | 2015-04-17 | 2015-04-17 | 94 | 2015-04-17 | 2015-04-17 | 0d | 30d |  |  |  |  |  | 0% | 0% |
| 96 | 1.4.2 | **Testes Unitários** |  | 7d | 2015-04-22 | 2015-04-30 |  | 2015-04-22 | 2015-04-30 | 7d | 0d |  |  | 152h | 152 | 152 | 0% | 0% |
| 97 | 1.4.2.1 | **Gestão de Competência** |  | 7d | 2015-04-22 | 2015-04-30 |  | 2015-04-22 | 2015-04-30 | 7d | 0d |  |  | 152h | 152 | 152 | 0% | 0% |
| 98 | 1.4.2.1.1 | **VS** |  | 5d | 2015-04-22 | 2015-04-28 |  | 2015-04-22 | 2015-04-28 | 5d | 0d |  |  | 56h | 56 | 56 | 0% | 0% |
| 99 | 1.4.2.1.1.1 | Realizar Testes Unitários |  | 2d | 2015-04-22 | 2015-04-23 | 94 | 2015-04-22 | 2015-04-23 | 2d | 0d |  | HRST 1; Juraci Silva | 32h | 32 | 32 | 0% | 0% |
| 100 | 1.4.2.1.1.2 | Ajustes Testes Unitários |  | 3d | 2015-04-24 | 2015-04-28 | 99 | 2015-04-24 | 2015-04-28 | 3d | 25d |  | HRST 1 | 24h | 24 | 24 | 0% | 0% |
| 101 | 1.4.2.1.2 | **VM** |  | 3d | 2015-04-24 | 2015-04-28 |  | 2015-04-24 | 2015-04-28 | 3d | 0d |  |  | 32h | 32 | 32 | 0% | 0% |
| 102 | 1.4.2.1.2.1 | Realizar Testes Unitários |  | 1d | 2015-04-24 | 2015-04-24 | 99 | 2015-04-24 | 2015-04-24 | 1d | 0d |  | HRST 2; Juraci Silva | 16h | 16 | 16 | 0% | 0% |
| 103 | 1.4.2.1.2.2 | Ajustes Testes Unitários |  | 2d | 2015-04-27 | 2015-04-28 | 102 | 2015-04-27 | 2015-04-28 | 2d | 25d | 0d | HRST 2 | 16h | 16 | 16 | 0% | 0% |
| 104 | 1.4.2.1.3 | Onda 1 - Entrega Testes Unitários - VS e VM | milestone | 0d | 2015-04-28 | 2015-04-28 | 103 | 2015-04-28 | 2015-04-28 | 0d | 25d |  |  |  |  |  | 0% | 0% |

| ID | WBS | Task | Type | Duration | Start | Finish | Predecessors | Baseline start | Baseline finish | Baseline duration | Total slack | Free slack | Resources | Work | Cost | Baseline cost | % Planejado | % Realizado |
| --- | --- | --- | --- | --- | --- | --- | --- | --- | --- | --- | --- | --- | --- | --- | --- | --- | --- | --- |
| 105 | 1.4.2.1.4 | **VID São Paulo e Curitiba** |  | 3d | 2015-04-27 | 2015-04-29 |  | 2015-04-27 | 2015-04-29 | 3d | 0d |  |  | 32h | 32 | 32 | 0% | 0% |
| 106 | 1.4.2.1.4.1 | Realizar Testes Unitários |  | 1d | 2015-04-27 | 2015-04-27 | 102 | 2015-04-27 | 2015-04-27 | 1d | 0d |  | HRST 3; Juraci Silva | 16h | 16 | 16 | 0% | 0% |
| 107 | 1.4.2.1.4.2 | Ajustes Testes Unitários |  | 2d | 2015-04-28 | 2015-04-29 | 106 | 2015-04-28 | 2015-04-29 | 2d | 24d |  | HRST 3 | 16h | 16 | 16 | 0% | 0% |
| 108 | 1.4.2.1.5 | **VE** |  | 3d | 2015-04-28 | 2015-04-30 |  | 2015-04-28 | 2015-04-30 | 3d | 0d |  |  | 32h | 32 | 32 | 0% | 0% |
| 109 | 1.4.2.1.5.1 | Realizar Testes Unitários |  | 1d | 2015-04-28 | 2015-04-28 | 106 | 2015-04-28 | 2015-04-28 | 1d | 0d |  | HRST 2; Juraci Silva | 16h | 16 | 16 | 0% | 0% |
| 110 | 1.4.2.1.5.2 | Ajustes Testes Unitários |  | 2d | 2015-04-29 | 2015-04-30 | 109 | 2015-04-29 | 2015-04-30 | 2d | 0d |  | HRST 2 | 16h | 16 | 16 | 0% | 0% |
| 111 | 1.4.2.1.6 | Onda 1 - Entrega Testes Unitários - VID SP - VID CTB - VE | milestone | 0d | 2015-04-30 | 2015-04-30 | 110 | 2015-04-30 | 2015-04-30 | 0d | 23d |  |  |  |  |  | 0% | 0% |
| 112 | 1.4.3 | **Testes Integrados** |  | 10d | 2015-05-04 | 2015-05-15 |  | 2015-05-04 | 2015-05-15 | 10d | 0d |  |  | 520h | 520 | 520 | 0% | 0% |
| 113 | 1.4.3.1 | **Gestão de Competência** |  | 10d | 2015-05-04 | 2015-05-15 |  | 2015-05-04 | 2015-05-15 | 10d | 0d |  |  | 520h | 520 | 520 | 0% | 0% |
| 114 | 1.4.3.1.1 | Testes Integrados VS |  | 5d | 2015-05-04 | 2015-05-08 | 110 | 2015-05-04 | 2015-05-08 | 5d | 13d | 0d | VS; Rodney | 80h | 80 | 80 | 0% | 0% |
| 115 | 1.4.3.1.2 | Testes Integrados VM |  | 5d | 2015-05-04 | 2015-05-08 | 110 | 2015-05-04 | 2015-05-08 | 5d | 13d | 0d | VM; Rodney | 80h | 80 | 80 | 0% | 0% |
| 116 | 1.4.3.1.3 | Testes Integrados VID São Paulo e Curitiba |  | 5d | 2015-05-04 | 2015-05-08 | 110 | 2015-05-04 | 2015-05-08 | 5d | 13d | 0d | Rodney; VID Curitiba; VID São Paulo | 120h | 120 | 120 | 0% | 0% |
| 117 | 1.4.3.1.4 | Testes Integrados VE |  | 5d | 2015-05-04 | 2015-05-08 | 110 | 2015-05-04 | 2015-05-08 | 5d | 0d |  | Rodney; VE | 80h | 80 | 80 | 0% | 0% |
| 118 | 1.4.3.1.5 | **Ajustes Testes Integrados** |  | 5d | 2015-05-11 | 2015-05-15 |  | 2015-05-11 | 2015-05-15 | 5d | 0d |  |  | 160h | 160 | 160 | 0% | 0% |
| 119 | 1.4.3.1.5.1 | VS |  | 5d | 2015-05-11 | 2015-05-15 | 114 | 2015-05-11 | 2015-05-15 | 5d | 13d |  | HRST 1 | 40h | 40 | 40 | 0% | 0% |
| 120 | 1.4.3.1.5.2 | VM |  | 5d | 2015-05-11 | 2015-05-15 | 115 | 2015-05-11 | 2015-05-15 | 5d | 13d |  | HRST 1 | 40h | 40 | 40 | 0% | 0% |
| 121 | 1.4.3.1.5.3 | VID São Paulo e Curitiba |  | 5d | 2015-05-11 | 2015-05-15 | 116 | 2015-05-11 | 2015-05-15 | 5d | 13d |  | HRST 1 | 40h | 40 | 40 | 0% | 0% |
| 122 | 1.4.3.1.5.4 | VE |  | 5d | 2015-05-11 | 2015-05-15 | 117 | 2015-05-11 | 2015-05-15 | 5d | 0d |  | HRST 1 | 40h | 40 | 40 | 0% | 0% |
| 123 | 1.4.3.1.6 | **Termo de Aceite Fase 4** |  | 0d | 2015-05-15 | 2015-05-15 |  | 2015-05-15 | 2015-05-15 | 0d | 13d |  |  |  |  |  | 0% | 0% |
| 124 | 1.4.3.1.6.1 | Onda 1 - Assinatura Fase 4 - Preparação Final | milestone | 0d | 2015-05-15 | 2015-05-15 | 122 | 2015-05-15 | 2015-05-15 | 0d | 13d |  |  |  |  |  | 0% | 0% |
| 125 | 1.5 | **Fase 5 - Go Live e Operação Assistida** |  | 35d | 2015-04-13 | 2015-06-03 |  | 2015-04-13 | 2015-06-03 | 35d | 0d |  |  | 824h | 824 | 824 | 0% | 0% |
| 126 | 1.5.1 | **Go Live - Onda 1 - Gestão de Competência** |  | 35d | 2015-04-13 | 2015-06-03 |  | 2015-04-13 | 2015-06-03 | 35d | 0d |  |  | 824h | 824 | 824 | 0% | 0% |
| 127 | 1.5.1.1 | **Treinamento** |  | 27d | 2015-04-13 | 2015-05-22 |  | 2015-04-13 | 2015-05-22 | 27d | 8d |  |  | 568h | 568 | 568 | 0% | 0% |
| 128 | 1.5.1.1.1 | Elaborar Material de Treinamento |  | 12d | 2015-04-13 | 2015-04-30 | 76 | 2015-04-13 | 2015-04-30 | 12d | 13d | 0d | HRST 1; HRST 2; HRST 3 | 288h | 288 | 288 | 0% | 0% |
| 129 | 1.5.1.1.2 | Validação/Ajustes Material de Treinamento | milestone | 0d | 2015-04-30 | 2015-04-30 | 128 | 2015-04-30 | 2015-04-30 |  | 13d | 0d |  |  |  |  | 0% | 0% |
| 130 | 1.5.1.1.3 | Validação/Ajustes Material de Treinamento |  | 10d | 2015-05-04 | 2015-05-15 | 129 | 2015-05-04 | 2015-05-15 | 10d | 13d | 0d | HRST 1; HRST 2; HRST 3 | 240h | 240 | 240 | 0% | 0% |
| 131 | 1.5.1.1.4 | Conclusão Validação do Material de Treinamento | milestone | 0d | 2015-05-15 | 2015-05-15 | 130 | 2015-05-15 | 2015-05-15 |  | 13d |  |  |  |  |  | 0% | 0% |
| 132 | 1.5.1.1.5 | Treinamento - Realização |  | 5d | 2015-05-18 | 2015-05-22 | 122 | 2015-05-18 | 2015-05-22 | 5d | 0d |  | HRST 1 | 40h | 40 | 40 | 0% | 0% |
| 133 | 1.5.1.1.6 | Onda 1 - Conclusão do Treinamento | milestone | 0d | 2015-05-22 | 2015-05-22 | 132 | 2015-05-22 | 2015-05-22 | 0d | 8d |  |  |  |  |  | 0% | 0% |
| 134 | 1.5.1.2 | Cutover |  | 5d | 2015-05-25 | 2015-05-29 | 132 | 2015-05-25 | 2015-05-29 | 5d | 0d |  | HRST 1; HRST 2; HRST 3; Rodney | 160h | 160 | 160 | 0% | 0% |
| 135 | 1.5.1.3 | Onda 1 - Go Live | milestone | 0d | 2015-05-29 | 2015-05-29 | 134 | 2015-05-29 | 2015-05-29 | 0d | 3d |  |  |  |  |  | 0% | 0% |
| 136 | 1.5.1.4 | Operação Assistida |  | 3d | 2015-06-01 | 2015-06-03 | 134 | 2015-06-01 | 2015-06-03 | 3d | 0d |  | HRST 1; HRST 2; HRST 3; Rodney | 96h | 96 | 96 | 0% | 0% |

| ID | WBS | Task | Type | Duration | Start | Finish | Predecessors | Complete | Remaining | Baseline start | Baseline finish | Baseline duration | Total slack | Free slack | Resources | Work | Actual work | Cost | Baseline cost | Actual cost | % Planejado | % Realizado | .SPI. | Text29 |
| --- | --- | --- | --- | --- | --- | --- | --- | --- | --- | --- | --- | --- | --- | --- | --- | --- | --- | --- | --- | --- | --- | --- | --- | --- |
| 137 | 2 | **(1) Projeto Metas e Competência - VS** |  | 69d | 2015-02-09 A | 2015-06-03 |  | 45% | 37.76d | 2015-02-09 | 2015-06-03 | 69d | 0d |  |  | 1248h | 524.8h | 1,248 | 1,248 | 524.8 | 49% | 42% | 0,85 | 25/07 |
| 138 | 2.1 | **Fase 1 - Preparação do Projeto** |  | 10d | 2015-02-09 A | 2015-02-20 A |  | 100% |  | 2015-02-09 | 2015-02-20 | 10d |  |  |  | 120h | 120h | 120 | 120 | 120 | 100% | 100% |  |  |
| 139 | 2.1.1 | Confirmação e Mobilização de Equipe |  | 8d | 2015-02-09 A | 2015-02-18 A |  | 100% |  | 2015-02-09 | 2015-02-18 | 8d |  |  | Rodney | 64h | 64h | 64 | 64 | 64 | 100% | 100% |  |  |
| 140 | 2.1.2 | Reunião Pré Kick-off |  | 1d | 2015-02-19 A | 2015-02-19 A | 139 | 100% |  | 2015-02-19 | 2015-02-19 | 1d |  |  | Leonardo; Rodney | 16h | 16h | 16 | 16 | 16 | 100% | 100% |  |  |
| 141 | 2.1.3 | Kick-off |  | 1d | 2015-02-20 A | 2015-02-20 A | 140 | 100% |  | 2015-02-20 | 2015-02-20 | 1d |  |  | TI Votorantim | 8h | 8h | 8 | 8 | 8 | 100% | 100% |  |  |
| 142 | 2.1.4 | Identificação dos Usuários |  | 2d | 2015-02-19 A | 2015-02-20 A | 139 | 100% |  | 2015-02-19 | 2015-02-20 | 2d |  |  | Leonardo; Rodney | 32h | 32h | 32 | 32 | 32 | 100% | 100% |  |  |
| 143 | 2.1.5 | **Termo de Aceite Fase 1** |  | 0d | 2015-02-20 A | 2015-02-20 A |  | 100% |  | 2015-02-20 | 2015-02-20 | 0d |  |  |  |  |  |  |  |  | 100% | 100% |  |  |
| 144 | 2.1.5.1 | Assiantura Fase 1 - Preparação do Projeto | milestone | 0d | 2015-02-20 A | 2015-02-20 A | 142 | 100% |  | 2015-02-20 | 2015-02-20 | 0d |  |  |  |  |  |  |  |  | 100% | 100% |  |  |
| 145 | 2.2 | **Fase 2 - Business Blueprint** |  | 10d | 2015-02-23 A | 2015-03-06 |  | 95% | 0.5d | 2015-02-23 | 2015-03-06 | 10d | 49d |  |  | 256h | 246h | 256 | 256 | 246 | 100% | 96% | 0,96 |  |
| 146 | 2.2.1 | **Levantamento Gestão de Metas** |  | 5d | 2015-02-23 A | 2015-02-27 |  | 95% | 0.25d | 2015-02-23 | 2015-02-27 | 5d | 54d |  |  | 112h | 106h | 112 | 112 | 106 | 100% | 95% | 0,95 |  |
| 147 | 2.2.1.1 | Mapeamento dos Processos |  | 3d | 2015-02-23 A | 2015-02-25 A | 142 | 100% |  | 2015-02-23 | 2015-02-25 | 3d |  |  | HRST 1; HRST 2; Rodney | 72h | 72h | 72 | 72 | 72 | 100% | 100% |  |  |
| 148 | 2.2.1.2 | Elaboração dos BBPs |  | 1d | 2015-02-26 A | 2015-02-26 A | 147 | 100% |  | 2015-02-26 | 2015-02-26 | 1d |  |  | HRST 1; HRST 2 | 16h | 16h | 16 | 16 | 16 | 100% | 100% |  |  |
| 149 | 2.2.1.3 | Ajustes / Aprovação dos BBPs |  | 1d | 2015-02-27 A | 2015-02-27 | 148 | 75% | 0.25d | 2015-02-27 | 2015-02-27 | 1d | 54d |  | HRST 1; HRST 2; Rodney | 24h | 18h | 24 | 24 | 18 | 100% | 75% | 0,75 |  |
| 150 | 2.2.2 | **Levantamento Gestão de Competência** |  | 7d | 2015-02-26 A | 2015-03-06 |  | 95% | 0.35d | 2015-02-26 | 2015-03-06 | 7d | 49d |  |  | 144h | 140h | 144 | 144 | 140 | 100% | 97% | 0,97 |  |
| 151 | 2.2.2.1 | Mapeamento dos Processos |  | 4d | 2015-02-26 A | 2015-03-03 A | 147 | 100% |  | 2015-02-26 | 2015-03-03 | 4d |  |  | HRST 1; HRST 2; Rodney | 96h | 96h | 96 | 96 | 96 | 100% | 100% |  |  |
| 152 | 2.2.2.2 | **Elaboração dos BBPs** |  | 1d | 2015-03-04 A | 2015-03-04 A |  | 100% |  | 2015-03-04 | 2015-03-04 | 1d |  |  |  | 16h | 16h | 16 | 16 | 16 | 100% | 100% |  |  |
| 153 | 2.2.2.2.1 | EP |  | 0.5d | 2015-03-04 A | 2015-03-04 A | 151 | 100% |  | 2015-03-04 | 2015-03-04 | 0.5d |  |  | HRST 1 | 4h | 4h | 4 | 4 | 4 | 100% | 100% |  |  |
| 154 | 2.2.2.2.2 | PDI |  | 0.5d | 2015-03-04 A | 2015-03-04 A | 153 | 100% |  | 2015-03-04 | 2015-03-04 | 0.5d |  |  | HRST 1 | 4h | 4h | 4 | 4 | 4 | 100% | 100% |  |  |
| 155 | 2.2.2.2.3 | Competência |  | 0.5d | 2015-03-04 A | 2015-03-04 A | 151 | 100% |  | 2015-03-04 | 2015-03-04 | 0.5d |  |  | HRST 2 | 4h | 4h | 4 | 4 | 4 | 100% | 100% |  |  |
| 156 | 2.2.2.2.4 | Sucessão |  | 0.5d | 2015-03-04 A | 2015-03-04 A | 155 | 100% |  | 2015-03-04 | 2015-03-04 | 0.5d |  |  | HRST 2 | 4h | 4h | 4 | 4 | 4 | 100% | 100% |  |  |
| 157 | 2.2.2.3 | **Ajustes / Aprovação dos BBPs** |  | 2d | 2015-03-05 A | 2015-03-06 |  | 88% | 0.25d | 2015-03-05 | 2015-03-06 | 2d | 49d |  |  | 32h | 28h | 32 | 32 | 28 | 100% | 88% | 0,88 |  |
| 158 | 2.2.2.3.1 | EP |  | 1d | 2015-03-05 A | 2015-03-05 A | 156 | 100% |  | 2015-03-05 | 2015-03-05 | 1d |  |  | HRST 1 | 8h | 8h | 8 | 8 | 8 | 100% | 100% |  |  |
| 159 | 2.2.2.3.2 | PDI |  | 1d | 2015-03-06 A | 2015-03-06 A | 158 | 100% |  | 2015-03-06 | 2015-03-06 | 1d |  |  | HRST 1 | 8h | 8h | 8 | 8 | 8 | 100% | 100% |  |  |
| 160 | 2.2.2.3.3 | Competência |  | 1d | 2015-03-05 A | 2015-03-05 | 156 | 75% | 0.25d | 2015-03-05 | 2015-03-05 | 1d | 0.75d | 0d | HRST 2 | 8h | 6h | 8 | 8 | 6 | 100% | 75% | 0,75 |  |
| 161 | 2.2.2.3.4 | Sucessão |  | 1d | 2015-03-06 A | 2015-03-06 | 160 | 75% | 0.25d | 2015-03-06 | 2015-03-06 | 1d | 49d | 0d | HRST 2 | 8h | 6h | 8 | 8 | 6 | 100% | 75% | 0,75 |  |

| ID | WBS | Task | Type | Duration | Start | Finish | Predecessors | Complete | Remaining | Baseline start | Baseline finish | Baseline duration | Total slack | Free slack | Constraint | Resources | Work | Actual work | Cost | Baseline cost | Actual cost | % Planejado | % Realizado | .SPI. |
| --- | --- | --- | --- | --- | --- | --- | --- | --- | --- | --- | --- | --- | --- | --- | --- | --- | --- | --- | --- | --- | --- | --- | --- | --- |
| 162 | 2.2.2.4 | **Termo de Aceite Fase 2** |  | 0d | 2015-03-06 | 2015-03-06 |  |  |  | 2015-03-06 | 2015-03-06 | 0d | 49d |  |  |  |  |  |  |  |  | 100% | 0% |  |
| 163 | 2.2.2.4.1 | Assinatura Fase 2 - Business Blueprint | milestone | 0d | 2015-03-06 | 2015-03-06 | 161 |  |  | 2015-03-06 | 2015-03-06 | 0d | 49d |  |  |  |  |  |  |  |  | 100% | 0% |  |
| 164 | 2.3 | **Fase 3 - Realização** |  | 14d | 2015-03-23 A | 2015-04-10 |  | 45% | 7.66d | 2015-03-23 | 2015-04-10 | 14d | 35d |  |  |  | 376h | 158.8h | 376 | 376 | 158.8 | 64% | 42% | 0,66 |
| 165 | 2.3.1 | **Gestão de Competência VS** |  | 14d | 2015-03-23 A | 2015-04-10 |  | 45% | 7.66d | 2015-03-23 | 2015-04-10 | 14d | 35d |  |  |  | 376h | 158.8h | 376 | 376 | 158.8 | 64% | 42% | 0,66 |
| 166 | 2.3.1.1 | Configurar EP (Employee Profile) - VS |  | 5d | 2015-03-23 A | 2015-03-27 A |  | 100% |  | 2015-03-23 | 2015-03-27 | 5d |  |  | start no earlier than 2015-03-23 | HRST 1 | 40h | 40h | 40 | 40 | 40 | 100% | 100% |  |
| 167 | 2.3.1.2 | Configurar PDI (Palno de Desenvolvimento Individual) - VS |  | 5d | 2015-03-23 A | 2015-03-27 A |  | 100% |  | 2015-03-23 | 2015-03-27 | 5d |  |  | start no earlier than 2015-03-23 | HRST 2 | 40h | 40h | 40 | 40 | 40 | 100% | 100% |  |
| 168 | 2.3.1.3 | Configurar Sucessão - VS |  | 5d | 2015-03-30 A | 2015-04-06 | 166, 167 | 50% | 2.5d | 2015-03-30 | 2015-04-06 | 5d | 39d |  |  | HRST 3 | 40h | 20h | 40 | 40 | 20 | 80% | 50% | 0,63 |
| 169 | 2.3.1.4 | Configurar PM - VS |  | 7d | 2015-03-30 A | 2015-04-08 | 166, 167 | 35% | 4.55d | 2015-03-30 | 2015-04-08 | 7d | 32d | 0d |  | HRST 1; HRST 2; HRST 3 | 168h | 58.8h | 168 | 168 | 58.8 | 57% | 35% | 0,61 |
| 170 | 2.3.1.5 | **Configurar Relatórios** |  | 2d | 2015-04-09 | 2015-04-10 |  |  |  | 2015-04-09 | 2015-04-10 | 2d | 32d |  |  |  | 16h |  | 16 | 16 |  | 0% | 0% |  |
| 171 | 2.3.1.5.1 | Cópia dos Relatórios da VC - VS |  | 0.5d | 2015-04-09 | 2015-04-09 | 169 |  |  | 2015-04-09 | 2015-04-09 | 0.5d | 32d | 0d |  | HRST 1 | 4h |  | 4 | 4 |  | 0% | 0% |  |
| 172 | 2.3.1.5.2 | Escala - Descrição e Pontuação - VS |  | 0.5d | 2015-04-09 | 2015-04-09 | 171 |  |  | 2015-04-09 | 2015-04-09 | 0.5d | 32d | 0d |  | HRST 1 | 4h |  | 4 | 4 |  | 0% | 0% |  |
| 173 | 2.3.1.5.3 | Comparativo entre Desempenho na Função e Crenças - VS |  | 1d | 2015-04-10 | 2015-04-10 | 172 |  |  | 2015-04-10 | 2015-04-10 | 1d | 32d | 0d |  | HRST 1 | 8h |  | 8 | 8 |  | 0% | 0% |  |
| 174 | 2.3.1.6 | Desenvolvimento Abap - Ajustes Integração |  | 9d | 2015-03-30 | 2015-04-10 | 166, 167 |  |  | 2015-03-30 | 2015-04-10 | 9d | 35d | 0d |  | HRST 1 | 72h |  | 72 | 72 |  | 44% | 0% |  |
| 175 | 2.3.1.7 | **Termo de Aceite Fase 3 - Realização** |  | 0d | 2015-04-10 | 2015-04-10 |  |  |  | 2015-04-10 | 2015-04-10 | 0d | 35d |  |  |  |  |  |  |  |  | 0% | 0% |  |
| 176 | 2.3.1.7.1 | Onda 1 - Assinatura Fase 3 - Realização - VS | milestone | 0d | 2015-04-10 | 2015-04-10 | 174 |  |  | 2015-04-10 | 2015-04-10 | 0d | 35d |  |  |  |  |  |  |  |  | 0% | 0% |  |
| 177 | 2.4 | **Fase 4 - Preparação Final** |  | 22d | 2015-04-13 | 2015-05-15 |  |  |  | 2015-04-13 | 2015-05-15 | 22d | 12d |  |  |  | 200h |  | 200 | 200 |  | 0% | 0% |  |
| 178 | 2.4.1 | **Testes Funcionais** |  | 3d | 2015-04-13 | 2015-04-15 |  |  |  | 2015-04-13 | 2015-04-15 | 3d | 32d |  |  |  | 24h |  | 24 | 24 |  | 0% | 0% |  |
| 179 | 2.4.1.1 | **Gestão de Competência VS** |  | 3d | 2015-04-13 | 2015-04-15 |  |  |  | 2015-04-13 | 2015-04-15 | 3d | 32d |  |  |  | 24h |  | 24 | 24 |  | 0% | 0% |  |
| 180 | 2.4.1.1.1 | Realizar Testes Funcionais - VS |  | 1d | 2015-04-13 | 2015-04-13 | 173 |  |  | 2015-04-13 | 2015-04-13 | 1d | 32d | 0d |  | HRST 1 | 8h |  | 8 | 8 |  | 0% | 0% |  |
| 181 | 2.4.1.1.2 | Ajustes Testes Funcionais - VS |  | 2d | 2015-04-14 | 2015-04-15 | 180 |  |  | 2015-04-14 | 2015-04-15 | 2d | 32d | 0d |  | HRST 1 | 16h |  | 16 | 16 |  | 0% | 0% |  |
| 182 | 2.4.1.1.3 | Onda 1 - Entrega Testes Funcionais - VS | milestone | 0d | 2015-04-15 | 2015-04-15 | 181 |  |  | 2015-04-15 | 2015-04-15 | 0d | 32d |  |  |  |  |  |  |  |  | 0% | 0% |  |
| 183 | 2.4.2 | **Testes Unitários** |  | 5d | 2015-04-22 | 2015-04-28 |  |  |  | 2015-04-22 | 2015-04-28 | 5d | 25d |  |  |  | 56h |  | 56 | 56 |  | 0% | 0% |  |
| 184 | 2.4.2.1 | **Gestão de Competência VS** |  | 5d | 2015-04-22 | 2015-04-28 |  |  |  | 2015-04-22 | 2015-04-28 | 5d | 25d |  |  |  | 56h |  | 56 | 56 |  | 0% | 0% |  |
| 185 | 2.4.2.1.1 | Realizar Testes Unitários - VS |  | 2d | 2015-04-22 | 2015-04-23 |  |  |  | 2015-04-22 | 2015-04-23 | 2d | 25d | 0d | start no earlier than 2015-04-22 | HRST 1; Juraci Silva | 32h |  | 32 | 32 |  | 0% | 0% |  |
| 186 | 2.4.2.1.2 | Ajustes Testes Unitários - VS |  | 3d | 2015-04-24 | 2015-04-28 | 185 |  |  | 2015-04-24 | 2015-04-28 | 3d | 25d | 0d |  | HRST 1 | 24h |  | 24 | 24 |  | 0% | 0% |  |
| 187 | 2.4.2.1.3 | Onda 1 - Entrega Testes Unitários - VS | milestone | 0d | 2015-04-28 | 2015-04-28 | 186 |  |  | 2015-04-28 | 2015-04-28 | 0d | 25d |  |  |  |  |  |  |  |  | 0% | 0% |  |

| ID | WBS | Task | Type | Duration | Start | Finish | Predecessors | Complete | Remaining | Baseline start | Baseline finish | Baseline duration | Total slack | Constraint | Resources | Work | Actual work | Cost | Baseline cost | Actual cost | % Planejado | % Realizado | .SPI. |
| --- | --- | --- | --- | --- | --- | --- | --- | --- | --- | --- | --- | --- | --- | --- | --- | --- | --- | --- | --- | --- | --- | --- | --- |
| 188 | 2.4.3 | **Testes Integrados** |  | 10d | 2015-05-04 | 2015-05-15 |  |  |  | 2015-05-04 | 2015-05-15 | 10d | 0d |  |  | 120h |  | 120 | 120 |  | 0% | 0% |  |
| 189 | 2.4.3.1 | **Gestão de Competência VS** |  | 10d | 2015-05-04 | 2015-05-15 |  |  |  | 2015-05-04 | 2015-05-15 | 10d | 0d |  |  | 120h |  | 120 | 120 |  | 0% | 0% |  |
| 190 | 2.4.3.1.1 | Testes Integrados VS |  | 5d | 2015-05-04 | 2015-05-08 |  |  |  | 2015-05-04 | 2015-05-08 | 5d | 0d | start no earlier than 2015-05-04 | VS; Rodney | 80h |  | 80 | 80 |  | 0% | 0% |  |
| 191 | 2.4.3.1.2 | Ajustes Testes Integrados VS |  | 5d | 2015-05-11 | 2015-05-15 | 190 |  |  | 2015-05-11 | 2015-05-15 | 5d | 0d |  | HRST 1 | 40h |  | 40 | 40 |  | 0% | 0% |  |
| 192 | 2.4.3.1.3 | **Onda 1 - Termo de Aceite Fase 4** |  | 0d | 2015-05-15 | 2015-05-15 |  |  |  | 2015-05-15 | 2015-05-15 | 0d | 13d |  |  |  |  |  |  |  | 0% | 0% |  |
| 193 | 2.4.3.1.3.1 | Onda 1 - Assinatura Fase 4 - Preparação Final - VS | milestone | 0d | 2015-05-15 | 2015-05-15 | 191 |  |  | 2015-05-15 | 2015-05-15 | 0d | 13d |  |  |  |  |  |  |  | 0% | 0% |  |
| 194 | 2.5 | **Fase 5 - Go Live e Operacao Assistida** |  | 13d | 2015-05-18 | 2015-06-03 |  |  |  | 2015-05-18 | 2015-06-03 | 13d | 0d |  |  | 296h |  | 296 | 296 |  | 0% | 0% |  |
| 195 | 2.5.1 | **Go Live - Onda 1 - Gestão de Competência** |  | 13d | 2015-05-18 | 2015-06-03 |  |  |  | 2015-05-18 | 2015-06-03 | 13d | 0d |  |  | 296h |  | 296 | 296 |  | 0% | 0% |  |
| 196 | 2.5.1.1 | Treinamento |  | 5d | 2015-05-18 | 2015-05-22 | 191 |  |  | 2015-05-18 | 2015-05-22 | 5d | 0d |  | HRST 1 | 40h |  | 40 | 40 |  | 0% | 0% |  |
| 197 | 2.5.1.2 | Cutover |  | 5d | 2015-05-25 | 2015-05-29 | 196 |  |  | 2015-05-25 | 2015-05-29 | 5d | 0d |  | HRST 1; HRST 2; HRST 3; Rodney | 160h |  | 160 | 160 |  | 0% | 0% |  |
| 198 | 2.5.1.3 | Onda 1 - Go Live | milestone | 0d | 2015-05-29 | 2015-05-29 | 197 |  |  | 2015-05-29 | 2015-05-29 | 0d | 3d |  |  |  |  |  |  |  | 0% | 0% |  |
| 199 | 2.5.1.4 | Operação Assistida |  | 3d | 2015-06-01 | 2015-06-03 | 197 |  |  | 2015-06-01 | 2015-06-03 | 3d | 0d |  | HRST 1; HRST 2; HRST 3; Rodney | 96h |  | 96 | 96 |  | 0% | 0% |  |
| 200 | 3 | **(2) Projeto Metas e Competência - VM** |  | 69d | 2015-02-09 A | 2015-06-03 |  | 46% | 37.54d | 2015-02-09 | 2015-06-03 | 69d | 0d |  |  | 1128h | 466h | 1,128 | 1,128 | 466 | 46% | 41% | 0,9 |
| 201 | 3.1 | **Fase 1 - Preparação do Projeto** |  | 10d | 2015-02-09 A | 2015-02-20 A |  | 100% |  | 2015-02-09 | 2015-02-20 | 10d |  |  |  | 120h | 120h | 120 | 120 | 120 | 100% | 100% |  |
| 202 | 3.1.1 | Confirmação e Mobilização de Equipe |  | 8d | 2015-02-09 A | 2015-02-18 A |  | 100% |  | 2015-02-09 | 2015-02-18 | 8d |  |  | Rodney | 64h | 64h | 64 | 64 | 64 | 100% | 100% |  |
| 203 | 3.1.2 | Reunião Pré Kick-off |  | 1d | 2015-02-19 A | 2015-02-19 A | 202 | 100% |  | 2015-02-19 | 2015-02-19 | 1d |  |  | Leonardo; Rodney | 16h | 16h | 16 | 16 | 16 | 100% | 100% |  |
| 204 | 3.1.3 | Kick-Off |  | 1d | 2015-02-20 A | 2015-02-20 A | 203 | 100% |  | 2015-02-20 | 2015-02-20 | 1d |  |  | TI Votorantim | 8h | 8h | 8 | 8 | 8 | 100% | 100% |  |
| 205 | 3.1.4 | Identificação dos Usuários |  | 2d | 2015-02-19 A | 2015-02-20 A | 202 | 100% |  | 2015-02-19 | 2015-02-20 | 2d |  |  | Leonardo; Rodney | 32h | 32h | 32 | 32 | 32 | 100% | 100% |  |
| 206 | 3.1.5 | **Termo de Aceite Fase 1** |  | 0d | 2015-02-20 A | 2015-02-20 A |  | 100% |  | 2015-02-20 | 2015-02-20 | 0d |  |  |  |  |  |  |  |  | 100% | 100% |  |
| 207 | 3.1.5.1 | Assinatura Fase 1 - Preparação do Projeto | milestone | 0d | 2015-02-20 A | 2015-02-20 A | 205 | 100% |  | 2015-02-20 | 2015-02-20 | 0d |  |  |  |  |  |  |  |  | 100% | 100% |  |
| 208 | 3.2 | **Fase 2 - Business Blueprint** |  | 10d | 2015-02-23 A | 2015-03-06 |  | 95% | 0.5d | 2015-02-23 | 2015-03-06 | 10d | 49d |  |  | 256h | 246h | 256 | 256 | 246 | 100% | 96% | 0,96 |
| 209 | 3.2.1 | **Levantamento Gestão de Metas** |  | 5d | 2015-02-23 A | 2015-02-27 |  | 95% | 0.25d | 2015-02-23 | 2015-02-27 | 5d | 54d |  |  | 112h | 106h | 112 | 112 | 106 | 100% | 95% | 0,95 |
| 210 | 3.2.1.1 | Mapeamento dos Processos |  | 3d | 2015-02-23 A | 2015-02-25 A | 205 | 100% |  | 2015-02-23 | 2015-02-25 | 3d |  |  | HRST 1; HRST 2; Rodney | 72h | 72h | 72 | 72 | 72 | 100% | 100% |  |
| 211 | 3.2.1.2 | Elaboração dos BBPs |  | 1d | 2015-02-26 A | 2015-02-26 A | 210 | 100% |  | 2015-02-26 | 2015-02-26 | 1d |  |  | HRST 1; HRST 2 | 16h | 16h | 16 | 16 | 16 | 100% | 100% |  |
| 212 | 3.2.1.3 | Ajustes / Aprovação dos BBPs |  | 1d | 2015-02-27 A | 2015-02-27 | 211 | 75% | 0.25d | 2015-02-27 | 2015-02-27 | 1d | 54d |  | HRST 1; HRST 2; Rodney | 24h | 18h | 24 | 24 | 18 | 100% | 75% | 0,75 |

| ID | WBS | Task | Type | Duration | Start | Finish | Predecessors | Complete | Remaining | Baseline start | Baseline finish | Baseline duration | Total slack | Free slack | Constraint | Resources | Work | Actual work | Cost | Baseline cost | Actual cost | % Planejado | % Realizado | .SPI. |
| --- | --- | --- | --- | --- | --- | --- | --- | --- | --- | --- | --- | --- | --- | --- | --- | --- | --- | --- | --- | --- | --- | --- | --- | --- |
| 213 | 3.2.2 | **Levantamento Gestão de Competência** |  | 7d | 2015-02-26 A | 2015-03-06 |  | 95% | 0.35d | 2015-02-26 | 2015-03-06 | 7d | 49d |  |  |  | 144h | 140h | 144 | 144 | 140 | 100% | 97% | 0,97 |
| 214 | 3.2.2.1 | Mapeamento dos Processos |  | 4d | 2015-02-26 A | 2015-03-03 A | 210 | 100% |  | 2015-02-26 | 2015-03-03 | 4d |  |  |  | HRST 1; HRST 2; Rodney | 96h | 96h | 96 | 96 | 96 | 100% | 100% |  |
| 215 | 3.2.2.2 | **Elaboração dos BBPs** |  | 1d | 2015-03-04 A | 2015-03-04 A |  | 100% |  | 2015-03-04 | 2015-03-04 | 1d |  |  |  |  | 16h | 16h | 16 | 16 | 16 | 100% | 100% |  |
| 216 | 3.2.2.2.1 | EP |  | 0.5d | 2015-03-04 A | 2015-03-04 A | 214 | 100% |  | 2015-03-04 | 2015-03-04 | 0.5d |  |  |  | HRST 1 | 4h | 4h | 4 | 4 | 4 | 100% | 100% |  |
| 217 | 3.2.2.2.2 | PDI |  | 0.5d | 2015-03-04 A | 2015-03-04 A | 216 | 100% |  | 2015-03-04 | 2015-03-04 | 0.5d |  |  |  | HRST 1 | 4h | 4h | 4 | 4 | 4 | 100% | 100% |  |
| 218 | 3.2.2.2.3 | Competência |  | 0.5d | 2015-03-04 A | 2015-03-04 A | 214 | 100% |  | 2015-03-04 | 2015-03-04 | 0.5d |  |  |  | HRST 2 | 4h | 4h | 4 | 4 | 4 | 100% | 100% |  |
| 219 | 3.2.2.2.4 | Sucessão |  | 0.5d | 2015-03-04 A | 2015-03-04 A | 218 | 100% |  | 2015-03-04 | 2015-03-04 | 0.5d |  |  |  | HRST 2 | 4h | 4h | 4 | 4 | 4 | 100% | 100% |  |
| 220 | 3.2.2.3 | **Ajustes / Aprovação dos BBPs** |  | 2d | 2015-03-05 A | 2015-03-06 |  | 88% | 0.25d | 2015-03-05 | 2015-03-06 | 2d | 49d |  |  |  | 32h | 28h | 32 | 32 | 28 | 100% | 88% | 0,88 |
| 221 | 3.2.2.3.1 | EP |  | 1d | 2015-03-05 A | 2015-03-05 A | 219 | 100% |  | 2015-03-05 | 2015-03-05 | 1d |  |  |  | HRST 1 | 8h | 8h | 8 | 8 | 8 | 100% | 100% |  |
| 222 | 3.2.2.3.2 | PDI |  | 1d | 2015-03-06 A | 2015-03-06 A | 221 | 100% |  | 2015-03-06 | 2015-03-06 | 1d |  |  |  | HRST 1 | 8h | 8h | 8 | 8 | 8 | 100% | 100% |  |
| 223 | 3.2.2.3.3 | Competência |  | 1d | 2015-03-05 A | 2015-03-05 | 219 | 75% | 0.25d | 2015-03-05 | 2015-03-05 | 1d | 0.75d | 0d |  | HRST 2 | 8h | 6h | 8 | 8 | 6 | 100% | 75% | 0,75 |
| 224 | 3.2.2.3.4 | Sucessão |  | 1d | 2015-03-06 A | 2015-03-06 | 223 | 75% | 0.25d | 2015-03-06 | 2015-03-06 | 1d | 49d | 0d |  | HRST 2 | 8h | 6h | 8 | 8 | 6 | 100% | 75% | 0,75 |
| 225 | 3.2.2.4 | **Termo de Aceite Fase 2** |  | 0d | 2015-03-06 | 2015-03-06 |  |  |  | 2015-03-06 | 2015-03-06 | 0d | 49d |  |  |  |  |  |  |  |  | 100% | 0% |  |
| 226 | 3.2.2.4.1 | Assinatura Fase 2 - Business Blueprint | milestone | 0d | 2015-03-06 | 2015-03-06 | 224 |  |  | 2015-03-06 | 2015-03-06 | 0d | 49d |  |  |  |  |  |  |  |  | 100% | 0% |  |
| 227 | 3.3 | **Fase 3 - Realização** |  | 14d | 2015-03-23 A | 2015-04-10 |  | 43% | 7.97d | 2015-03-23 | 2015-04-10 | 14d | 35d |  |  |  | 280h | 100h | 280 | 280 | 100 | 51% | 36% | 0,69 |
| 228 | 3.3.1 | **Gestão de Competência VM** |  | 14d | 2015-03-23 A | 2015-04-10 |  | 43% | 7.97d | 2015-03-23 | 2015-04-10 | 14d | 35d |  |  |  | 280h | 100h | 280 | 280 | 100 | 51% | 36% | 0,69 |
| 229 | 3.3.1.1 | Configurar EP (Employee Profile) - VM |  | 5d | 2015-03-23 A | 2015-03-27 A |  | 100% |  | 2015-03-23 | 2015-03-27 | 5d |  |  | start no earlier than 2015-03-23 | HRST 1 | 40h | 40h | 40 | 40 | 40 | 100% | 100% |  |
| 230 | 3.3.1.2 | Configurar PDI (Palno de Desenvolvimento Individual) - VM |  | 5d | 2015-03-23 A | 2015-03-27 A |  | 100% |  | 2015-03-23 | 2015-03-27 | 5d |  |  | start no earlier than 2015-03-23 | HRST 2 | 40h | 40h | 40 | 40 | 40 | 100% | 100% |  |
| 231 | 3.3.1.3 | Configurar Sucessão - VM |  | 5d | 2015-03-30 A | 2015-04-06 | 229, 230 | 50% | 2.5d | 2015-03-30 | 2015-04-06 | 5d | 39d |  |  | HRST 3 | 40h | 20h | 40 | 40 | 20 | 80% | 50% | 0,63 |
| 232 | 3.3.1.4 | Configurar PM - VM |  | 3d | 2015-04-06 | 2015-04-08 |  |  |  | 2015-04-06 | 2015-04-08 | 3d | 32d | 0d | start no earlier than 2015-04-06 | HRST 1; HRST 2; HRST 3 | 72h |  | 72 | 72 |  | 0% | 0% |  |
| 233 | 3.3.1.5 | **Configurar Relatórios** |  | 2d | 2015-04-09 | 2015-04-10 |  |  |  | 2015-04-09 | 2015-04-10 | 2d | 32d |  |  |  | 16h |  | 16 | 16 |  | 0% | 0% |  |
| 234 | 3.3.1.5.1 | Cópia dos Relatórios da VC - VM |  | 0.5d | 2015-04-09 | 2015-04-09 | 232 |  |  | 2015-04-09 | 2015-04-09 | 0.5d | 32d | 0d |  | HRST 1 | 4h |  | 4 | 4 |  | 0% | 0% |  |
| 235 | 3.3.1.5.2 | Escala - Descrição e Pontuação - VM |  | 0.5d | 2015-04-09 | 2015-04-09 | 234 |  |  | 2015-04-09 | 2015-04-09 | 0.5d | 32d | 0d |  | HRST 1 | 4h |  | 4 | 4 |  | 0% | 0% |  |
| 236 | 3.3.1.5.3 | Comparativo entre Desempenho na Função e Crenças - VM |  | 1d | 2015-04-10 | 2015-04-10 | 235 |  |  | 2015-04-10 | 2015-04-10 | 1d | 32d | 0d |  | HRST 1 | 8h |  | 8 | 8 |  | 0% | 0% |  |
| 237 | 3.3.1.6 | Desenvolvimento Abap - Ajustes Integração |  | 9d | 2015-03-30 | 2015-04-10 | 229, 230 |  |  | 2015-03-30 | 2015-04-10 | 9d | 35d | 0d |  | HRST 1 | 72h |  | 72 | 72 |  | 44% | 0% |  |

| ID | WBS | Task | Type | Duration | Start | Finish | Predecessors | Baseline start | Baseline finish | Baseline duration | Total slack | Free slack | Constraint | Resources | Work | Cost | Baseline cost | % Planejado | % Realizado |
| --- | --- | --- | --- | --- | --- | --- | --- | --- | --- | --- | --- | --- | --- | --- | --- | --- | --- | --- | --- |
| 238 | 3.3.1.7 | **Onda 1 - Termo de Aceite Fase 3 - Realização** |  | 0d | 2015-04-10 | 2015-04-10 |  | 2015-04-10 | 2015-04-10 | 0d | 35d |  |  |  |  |  |  | 0% | 0% |
| 239 | 3.3.1.7.1 | Onda 1 - Assinatura Fase 3 - Realização - VM | milestone | 0d | 2015-04-10 | 2015-04-10 | 237 | 2015-04-10 | 2015-04-10 | 0d | 35d |  |  |  |  |  |  | 0% | 0% |
| 240 | 3.4 | **Fase 4 - Preparação Final** |  | 22d | 2015-04-13 | 2015-05-15 |  | 2015-04-13 | 2015-05-15 | 22d | 12d |  |  |  | 176h | 176 | 176 | 0% | 0% |
| 241 | 3.4.1 | **Testes Funcionais** |  | 3d | 2015-04-13 | 2015-04-15 |  | 2015-04-13 | 2015-04-15 | 3d | 32d |  |  |  | 24h | 24 | 24 | 0% | 0% |
| 242 | 3.4.1.1 | **Gestão de Competência VM** |  | 3d | 2015-04-13 | 2015-04-15 |  | 2015-04-13 | 2015-04-15 | 3d | 32d |  |  |  | 24h | 24 | 24 | 0% | 0% |
| 243 | 3.4.1.1.1 | Realizar Testes Funcionais - VM |  | 1d | 2015-04-13 | 2015-04-13 | 236 | 2015-04-13 | 2015-04-13 | 1d | 32d | 0d |  | HRST 2 | 8h | 8 | 8 | 0% | 0% |
| 244 | 3.4.1.1.2 | Ajustes Testes Funcionais - VM |  | 2d | 2015-04-14 | 2015-04-15 | 243 | 2015-04-14 | 2015-04-15 | 2d | 32d | 0d |  | HRST 2 | 16h | 16 | 16 | 0% | 0% |
| 245 | 3.4.1.1.3 | Onda 1 - Entrega Testes Funcionais - VM | milestone | 0d | 2015-04-15 | 2015-04-15 | 244 | 2015-04-15 | 2015-04-15 | 0d | 32d |  |  |  |  |  |  | 0% | 0% |
| 246 | 3.4.2 | **Testes Unitários** |  | 3d | 2015-04-24 | 2015-04-28 |  | 2015-04-24 | 2015-04-28 | 3d | 25d |  |  |  | 32h | 32 | 32 | 0% | 0% |
| 247 | 3.4.2.1 | **Gestão de Competência VM** |  | 3d | 2015-04-24 | 2015-04-28 |  | 2015-04-24 | 2015-04-28 | 3d | 25d |  |  |  | 32h | 32 | 32 | 0% | 0% |
| 248 | 3.4.2.1.1 | Realizar Testes Unitários - VM |  | 1d | 2015-04-24 | 2015-04-24 |  | 2015-04-24 | 2015-04-24 | 1d | 25d | 0d | start no earlier than 2015-04-24 | HRST 2; Juraci Silva | 16h | 16 | 16 | 0% | 0% |
| 249 | 3.4.2.1.2 | Ajustes Testes Unitários - VM |  | 2d | 2015-04-27 | 2015-04-28 | 248 | 2015-04-27 | 2015-04-28 | 2d | 25d | 0d |  | HRST 2 | 16h | 16 | 16 | 0% | 0% |
| 250 | 3.4.2.1.3 | Onda 1 - Entrega Testes Unitários - VM | milestone | 0d | 2015-04-28 | 2015-04-28 | 249 | 2015-04-28 | 2015-04-28 | 0d | 25d |  |  |  |  |  |  | 0% | 0% |
| 251 | 3.4.3 | **Testes Integrados** |  | 10d | 2015-05-04 | 2015-05-15 |  | 2015-05-04 | 2015-05-15 | 10d | 0d |  |  |  | 120h | 120 | 120 | 0% | 0% |
| 252 | 3.4.3.1 | **Gestão de Competência VM** |  | 10d | 2015-05-04 | 2015-05-15 |  | 2015-05-04 | 2015-05-15 | 10d | 0d |  |  |  | 120h | 120 | 120 | 0% | 0% |
| 253 | 3.4.3.1.1 | Testes Integrados VM |  | 5d | 2015-05-04 | 2015-05-08 |  | 2015-05-04 | 2015-05-08 | 5d | 0d |  | start no earlier than 2015-05-04 | VM; Rodney | 80h | 80 | 80 | 0% | 0% |
| 254 | 3.4.3.1.2 | Ajustes Testes Integrados VM |  | 5d | 2015-05-11 | 2015-05-15 | 253 | 2015-05-11 | 2015-05-15 | 5d | 0d |  |  | HRST 1 | 40h | 40 | 40 | 0% | 0% |
| 255 | 3.4.3.1.3 | **Onda 1 - Termo de Aceite Fase 4** |  | 0d | 2015-05-15 | 2015-05-15 |  | 2015-05-15 | 2015-05-15 | 0d | 13d |  |  |  |  |  |  | 0% | 0% |
| 256 | 3.4.3.1.3.1 | Onda 1 - Assinatura Fase 4 - Preparação Final - VM | milestone | 0d | 2015-05-15 | 2015-05-15 | 254 | 2015-05-15 | 2015-05-15 | 0d | 13d |  |  |  |  |  |  | 0% | 0% |
| 257 | 3.5 | **Fase 5 - Go Live e Operacao Assistida** |  | 13d | 2015-05-18 | 2015-06-03 |  | 2015-05-18 | 2015-06-03 | 13d | 0d |  |  |  | 296h | 296 | 296 | 0% | 0% |
| 258 | 3.5.1 | **Go Live - Onda 1 - Gestão de Competência** |  | 13d | 2015-05-18 | 2015-06-03 |  | 2015-05-18 | 2015-06-03 | 13d | 0d |  |  |  | 296h | 296 | 296 | 0% | 0% |
| 259 | 3.5.1.1 | Treinamento |  | 5d | 2015-05-18 | 2015-05-22 | 254 | 2015-05-18 | 2015-05-22 | 5d | 0d |  |  | HRST 1 | 40h | 40 | 40 | 0% | 0% |
| 260 | 3.5.1.2 | Cutover |  | 5d | 2015-05-25 | 2015-05-29 | 259 | 2015-05-25 | 2015-05-29 | 5d | 0d |  |  | HRST 1; HRST 2; HRST 3; Rodney | 160h | 160 | 160 | 0% | 0% |
| 261 | 3.5.1.3 | Onda 1 - Go Live | milestone | 0d | 2015-05-29 | 2015-05-29 | 260 | 2015-05-29 | 2015-05-29 | 0d | 3d |  |  |  |  |  |  | 0% | 0% |
| 262 | 3.5.1.4 | Operação Assistida |  | 3d | 2015-06-01 | 2015-06-03 | 260 | 2015-06-01 | 2015-06-03 | 3d | 0d |  |  | HRST 1; HRST 2; HRST 3; Rodney | 96h | 96 | 96 | 0% | 0% |

| ID | WBS | Task | Type | Duration | Start | Finish | Predecessors | Complete | Remaining | Baseline start | Baseline finish | Baseline duration | Total slack | Resources | Work | Actual work | Cost | Baseline cost | Actual cost | % Planejado | % Realizado | .SPI. | Text29 |
| --- | --- | --- | --- | --- | --- | --- | --- | --- | --- | --- | --- | --- | --- | --- | --- | --- | --- | --- | --- | --- | --- | --- | --- |
| 263 | 4 | **(3) Projeto Metas e Competência - VID São Paulo e Curitiba** |  | 69d | 2015-02-09 A | 2015-06-03 |  | 46% | 37.1d | 2015-02-09 | 2015-06-03 | 69d | 0d |  | 1264h | 507.6h | 1,264 | 1,264 | 507.6 | 49% | 40% | 0,82 | 20/09 |
| 264 | 4.1 | **Fase 1 - Preparação do Projeto** |  | 10d | 2015-02-09 A | 2015-02-20 A |  | 100% |  | 2015-02-09 | 2015-02-20 | 10d |  |  | 120h | 120h | 120 | 120 | 120 | 100% | 100% |  |  |
| 265 | 4.1.1 | Confirmação e Mobilização de Equipe |  | 8d | 2015-02-09 A | 2015-02-18 A |  | 100% |  | 2015-02-09 | 2015-02-18 | 8d |  | Rodney | 64h | 64h | 64 | 64 | 64 | 100% | 100% |  |  |
| 266 | 4.1.2 | Reunião Pré Kick-off |  | 1d | 2015-02-19 A | 2015-02-19 A | 265 | 100% |  | 2015-02-19 | 2015-02-19 | 1d |  | Leonardo; Rodney | 16h | 16h | 16 | 16 | 16 | 100% | 100% |  |  |
| 267 | 4.1.3 | Kick-Off |  | 1d | 2015-02-20 A | 2015-02-20 A | 266 | 100% |  | 2015-02-20 | 2015-02-20 | 1d |  | TI Votorantim | 8h | 8h | 8 | 8 | 8 | 100% | 100% |  |  |
| 268 | 4.1.4 | Identificação dos Usuários |  | 2d | 2015-02-19 A | 2015-02-20 A | 265 | 100% |  | 2015-02-19 | 2015-02-20 | 2d |  | Leonardo; Rodney | 32h | 32h | 32 | 32 | 32 | 100% | 100% |  |  |
| 269 | 4.1.5 | **Termo de Aceite Fase 1** |  | 0d | 2015-02-20 A | 2015-02-20 A |  | 100% |  | 2015-02-20 | 2015-02-20 | 0d |  |  |  |  |  |  |  | 100% | 100% |  |  |
| 270 | 4.1.5.1 | Assinatura Fase 1 - Preparação do Projeto | milestone | 0d | 2015-02-20 A | 2015-02-20 A | 268 | 100% |  | 2015-02-20 | 2015-02-20 | 0d |  |  |  |  |  |  |  | 100% | 100% |  |  |
| 271 | 4.2 | **Fase 2 - Business Blueprint** |  | 10d | 2015-02-23 A | 2015-03-06 |  | 97% | 0.33d | 2015-02-23 | 2015-03-06 | 10d | 49d |  | 256h | 248h | 256 | 256 | 248 | 100% | 97% | 0,97 |  |
| 272 | 4.2.1 | **Levantamento Gestão de Metas** |  | 5d | 2015-02-23 A | 2015-02-27 |  | 95% | 0.25d | 2015-02-23 | 2015-02-27 | 5d | 54d |  | 112h | 106h | 112 | 112 | 106 | 100% | 95% | 0,95 |  |
| 273 | 4.2.1.1 | Mapeamento dos Processos |  | 3d | 2015-02-23 A | 2015-02-25 A | 268 | 100% |  | 2015-02-23 | 2015-02-25 | 3d |  | HRST 1; HRST 2; Rodney | 72h | 72h | 72 | 72 | 72 | 100% | 100% |  |  |
| 274 | 4.2.1.2 | Elaboração dos BBPs |  | 1d | 2015-02-26 A | 2015-02-26 A | 273 | 100% |  | 2015-02-26 | 2015-02-26 | 1d |  | HRST 1; HRST 2 | 16h | 16h | 16 | 16 | 16 | 100% | 100% |  |  |
| 275 | 4.2.1.3 | Ajustes / Aprovação dos BBPs |  | 1d | 2015-02-27 A | 2015-02-27 | 274 | 75% | 0.25d | 2015-02-27 | 2015-02-27 | 1d | 54d | HRST 1; HRST 2; Rodney | 24h | 18h | 24 | 24 | 18 | 100% | 75% | 0,75 |  |
| 276 | 4.2.2 | **Levantamento Gestão de Competência** |  | 7d | 2015-02-26 A | 2015-03-06 |  | 98% | 0.17d | 2015-02-26 | 2015-03-06 | 7d | 49d |  | 144h | 142h | 144 | 144 | 142 | 100% | 99% | 0,99 |  |
| 277 | 4.2.2.1 | Mapeamento dos Processos |  | 4d | 2015-02-26 A | 2015-03-03 A | 273 | 100% |  | 2015-02-26 | 2015-03-03 | 4d |  | HRST 1; HRST 2; Rodney | 96h | 96h | 96 | 96 | 96 | 100% | 100% |  |  |
| 278 | 4.2.2.2 | **Elaboração dos BBPs** |  | 1d | 2015-03-04 A | 2015-03-04 A |  | 100% |  | 2015-03-04 | 2015-03-04 | 1d |  |  | 16h | 16h | 16 | 16 | 16 | 100% | 100% |  |  |
| 279 | 4.2.2.2.1 | EP |  | 0.5d | 2015-03-04 A | 2015-03-04 A | 277 | 100% |  | 2015-03-04 | 2015-03-04 | 0.5d |  | HRST 1 | 4h | 4h | 4 | 4 | 4 | 100% | 100% |  |  |
| 280 | 4.2.2.2.2 | PDI |  | 0.5d | 2015-03-04 A | 2015-03-04 A | 279 | 100% |  | 2015-03-04 | 2015-03-04 | 0.5d |  | HRST 1 | 4h | 4h | 4 | 4 | 4 | 100% | 100% |  |  |
| 281 | 4.2.2.2.3 | Competência |  | 0.5d | 2015-03-04 A | 2015-03-04 A | 277 | 100% |  | 2015-03-04 | 2015-03-04 | 0.5d |  | HRST 2 | 4h | 4h | 4 | 4 | 4 | 100% | 100% |  |  |
| 282 | 4.2.2.2.4 | Sucessão |  | 0.5d | 2015-03-04 A | 2015-03-04 A | 281 | 100% |  | 2015-03-04 | 2015-03-04 | 0.5d |  | HRST 2 | 4h | 4h | 4 | 4 | 4 | 100% | 100% |  |  |
| 283 | 4.2.2.3 | **Ajustes / Aprovação dos BBPs** |  | 2d | 2015-03-05 A | 2015-03-06 |  | 94% | 0.12d | 2015-03-05 | 2015-03-06 | 2d | 49d |  | 32h | 30h | 32 | 32 | 30 | 100% | 94% | 0,94 |  |
| 284 | 4.2.2.3.1 | EP |  | 1d | 2015-03-05 A | 2015-03-05 A | 282 | 100% |  | 2015-03-05 | 2015-03-05 | 1d |  | HRST 1 | 8h | 8h | 8 | 8 | 8 | 100% | 100% |  |  |
| 285 | 4.2.2.3.2 | PDI |  | 1d | 2015-03-06 A | 2015-03-06 A | 284 | 100% |  | 2015-03-06 | 2015-03-06 | 1d |  | HRST 1 | 8h | 8h | 8 | 8 | 8 | 100% | 100% |  |  |
| 286 | 4.2.2.3.3 | Competência |  | 1d | 2015-03-05 A | 2015-03-05 | 282 | 75% | 0.25d | 2015-03-05 | 2015-03-05 | 1d | 50d | HRST 2 | 8h | 6h | 8 | 8 | 6 | 100% | 75% | 0,75 |  |
| 287 | 4.2.2.3.4 | Sucessão |  | 1d | 2015-03-06 A | 2015-03-06 A | 286 | 100% |  | 2015-03-06 | 2015-03-06 | 1d |  | HRST 2 | 8h | 8h | 8 | 8 | 8 | 100% | 100% |  |  |

| ID | WBS | Task | Type | Duration | Start | Finish | Predecessors | Complete | Remaining | Baseline start | Baseline finish | Baseline duration | Total slack | Free slack | Constraint | Resources | Work | Actual work | Cost | Baseline cost | Actual cost | % Planejado | % Realizado | .SPI. |
| --- | --- | --- | --- | --- | --- | --- | --- | --- | --- | --- | --- | --- | --- | --- | --- | --- | --- | --- | --- | --- | --- | --- | --- | --- |
| 288 | 4.2.2.4 | **Termo de Aceite Fase 2** |  | 0d | 2015-03-06 | 2015-03-06 |  |  |  | 2015-03-06 | 2015-03-06 | 0d | 49d |  |  |  |  |  |  |  |  | 100% | 0% |  |
| 289 | 4.2.2.4.1 | Assinatura Fase 2 - Business Blueprint | milestone | 0d | 2015-03-06 | 2015-03-06 | 287 |  |  | 2015-03-06 | 2015-03-06 | 0d | 49d |  |  |  |  |  |  |  |  | 100% | 0% |  |
| 290 | 4.3 | **Fase 3 - Realização** |  | 14d | 2015-03-23 A | 2015-04-10 |  | 44% | 7.78d | 2015-03-23 | 2015-04-10 | 14d | 35d |  |  |  | 376h | 139.6h | 376 | 376 | 139.6 | 64% | 37% | 0,58 |
| 291 | 4.3.1 | **Gestão de Competência VID** |  | 14d | 2015-03-23 A | 2015-04-10 |  | 44% | 7.78d | 2015-03-23 | 2015-04-10 | 14d | 35d |  |  |  | 376h | 139.6h | 376 | 376 | 139.6 | 64% | 37% | 0,58 |
| 292 | 4.3.1.1 | Configurar EP (Employee Profile) - VID |  | 5d | 2015-03-23 A | 2015-03-27 A |  | 100% |  | 2015-03-23 | 2015-03-27 | 5d |  |  | start no earlier than 2015-03-23 | HRST 1 | 40h | 40h | 40 | 40 | 40 | 100% | 100% |  |
| 293 | 4.3.1.2 | Configurar PDI (Palno de Desenvolvimento Individual) - VID |  | 5d | 2015-03-23 A | 2015-03-27 |  | 90% | 0.5d | 2015-03-23 | 2015-03-27 | 5d | 1.4d | 0d | start no earlier than 2015-03-23 | HRST 2 | 40h | 36h | 40 | 40 | 36 | 100% | 90% | 0,9 |
| 294 | 4.3.1.3 | Configurar Sucessão - VID |  | 5d | 2015-03-30 A | 2015-04-06 | 292, 293 | 75% | 1.25d | 2015-03-30 | 2015-04-06 | 5d | 39d |  |  | HRST 3 | 40h | 30h | 40 | 40 | 30 | 80% | 75% | 0,94 |
| 295 | 4.3.1.4 | Configurar PM - VID |  | 7d | 2015-03-30 A | 2015-04-08 | 292, 293 | 20% | 5.6d | 2015-03-30 | 2015-04-08 | 7d | 35d | 0d |  | HRST 1; HRST 2; HRST 3 | 168h | 33.6h | 168 | 168 | 33.6 | 57% | 20% | 0,35 |
| 296 | 4.3.1.5 | **Configurar Relatórios** |  | 2d | 2015-04-09 | 2015-04-10 |  |  |  | 2015-04-09 | 2015-04-10 | 2d | 35d |  |  |  | 16h |  | 16 | 16 |  | 0% | 0% |  |
| 297 | 4.3.1.5.1 | Cópia dos Relatórios da VC - VID |  | 0.5d | 2015-04-09 | 2015-04-09 | 295 |  |  | 2015-04-09 | 2015-04-09 | 0.5d | 35d | 0d |  | HRST 1 | 4h |  | 4 | 4 |  | 0% | 0% |  |
| 298 | 4.3.1.5.2 | Escala - Descrição e Pontuação - VID |  | 0.5d | 2015-04-09 | 2015-04-09 | 297 |  |  | 2015-04-09 | 2015-04-09 | 0.5d | 35d | 0d |  | HRST 1 | 4h |  | 4 | 4 |  | 0% | 0% |  |
| 299 | 4.3.1.5.3 | Comparativo entre Desempenho na Função e Crenças - VID |  | 1d | 2015-04-10 | 2015-04-10 | 298 |  |  | 2015-04-10 | 2015-04-10 | 1d | 35d |  |  | HRST 1 | 8h |  | 8 | 8 |  | 0% | 0% |  |
| 300 | 4.3.1.6 | Desenvolvimento Abap - Ajustes Integração |  | 9d | 2015-03-30 | 2015-04-10 | 292, 293 |  |  | 2015-03-30 | 2015-04-10 | 9d | 32d | 0d |  | HRST 1 | 72h |  | 72 | 72 |  | 44% | 0% |  |
| 301 | 4.3.1.7 | **Termo de Aceite Fase 3 - Realização** |  | 0d | 2015-04-10 | 2015-04-10 |  |  |  | 2015-04-10 | 2015-04-10 | 0d | 35d |  |  |  |  |  |  |  |  | 0% | 0% |  |
| 302 | 4.3.1.7.1 | Onda 1 - Assinatura Fase 3 - Realização - VID | milestone | 0d | 2015-04-10 | 2015-04-10 | 300 |  |  | 2015-04-10 | 2015-04-10 | 0d | 35d |  |  |  |  |  |  |  |  | 0% | 0% |  |
| 303 | 4.4 | **Fase 4 - Preparação Final** |  | 22d | 2015-04-13 | 2015-05-15 |  |  |  | 2015-04-13 | 2015-05-15 | 22d | 12d |  |  |  | 216h |  | 216 | 216 |  | 0% | 0% |  |
| 304 | 4.4.1 | **Testes Funcionais** |  | 3d | 2015-04-13 | 2015-04-15 |  |  |  | 2015-04-13 | 2015-04-15 | 3d | 32d |  |  |  | 24h |  | 24 | 24 |  | 0% | 0% |  |
| 305 | 4.4.1.1 | **Gestão de Competência VID** |  | 3d | 2015-04-13 | 2015-04-15 |  |  |  | 2015-04-13 | 2015-04-15 | 3d | 32d |  |  |  | 24h |  | 24 | 24 |  | 0% | 0% |  |
| 306 | 4.4.1.1.1 | Realizar Testes Funcionais - VID |  | 1d | 2015-04-13 | 2015-04-13 | 300 |  |  | 2015-04-13 | 2015-04-13 | 1d | 32d | 0d |  | HRST 3 | 8h |  | 8 | 8 |  | 0% | 0% |  |
| 307 | 4.4.1.1.2 | Ajustes Testes Funcionais - VID |  | 2d | 2015-04-14 | 2015-04-15 | 306 |  |  | 2015-04-14 | 2015-04-15 | 2d | 32d | 0d |  | HRST 3 | 16h |  | 16 | 16 |  | 0% | 0% |  |
| 308 | 4.4.1.1.3 | Onda 1 - Entrega Testes Funcionais - VID | milestone | 0d | 2015-04-15 | 2015-04-15 | 307 |  |  | 2015-04-15 | 2015-04-15 | 0d | 32d |  |  |  |  |  |  |  |  | 0% | 0% |  |
| 309 | 4.4.2 | **Testes Unitários** |  | 3d | 2015-04-27 | 2015-04-29 |  |  |  | 2015-04-27 | 2015-04-29 | 3d | 24d |  |  |  | 32h |  | 32 | 32 |  | 0% | 0% |  |
| 310 | 4.4.2.1 | **Gestão de Competência VID** |  | 3d | 2015-04-27 | 2015-04-29 |  |  |  | 2015-04-27 | 2015-04-29 | 3d | 24d |  |  |  | 32h |  | 32 | 32 |  | 0% | 0% |  |
| 311 | 4.4.2.1.1 | Realizar Testes Unitários - VID |  | 1d | 2015-04-27 | 2015-04-27 |  |  |  | 2015-04-27 | 2015-04-27 | 1d | 24d | 0d | start no earlier than 2015-04-27 | HRST 3; Juraci Silva | 16h |  | 16 | 16 |  | 0% | 0% |  |
| 312 | 4.4.2.1.2 | Ajustes Testes Unitários - VID |  | 2d | 2015-04-28 | 2015-04-29 | 311 |  |  | 2015-04-28 | 2015-04-29 | 2d | 24d | 0d |  | HRST 3 | 16h |  | 16 | 16 |  | 0% | 0% |  |
| 313 | 4.4.2.1.3 | Onda 1 - Entrega Testes Unitários - VID | milestone | 0d | 2015-04-29 | 2015-04-29 | 312 |  |  | 2015-04-29 | 2015-04-29 | 0d | 24d |  |  |  |  |  |  |  |  | 0% | 0% |  |

| ID | WBS | Task | Type | Duration | Start | Finish | Predecessors | Complete | Remaining | Baseline start | Baseline finish | Baseline duration | Total slack | Constraint | Resources | Work | Actual work | Cost | Baseline cost | Actual cost | % Planejado | % Realizado | .SPI. | Text29 |
| --- | --- | --- | --- | --- | --- | --- | --- | --- | --- | --- | --- | --- | --- | --- | --- | --- | --- | --- | --- | --- | --- | --- | --- | --- |
| 314 | 4.4.3 | **Testes Integrados** |  | 10d | 2015-05-04 | 2015-05-15 |  |  |  | 2015-05-04 | 2015-05-15 | 10d | 0d |  |  | 160h |  | 160 | 160 |  | 0% | 0% |  |  |
| 315 | 4.4.3.1 | **Gestão de Competência VID** |  | 10d | 2015-05-04 | 2015-05-15 |  |  |  | 2015-05-04 | 2015-05-15 | 10d | 0d |  |  | 160h |  | 160 | 160 |  | 0% | 0% |  |  |
| 316 | 4.4.3.1.1 | Testes Integrados VID |  | 5d | 2015-05-04 | 2015-05-08 |  |  |  | 2015-05-04 | 2015-05-08 | 5d | 0d | start no earlier than 2015-05-04 | Rodney; VID Curitiba; VID São Paulo | 120h |  | 120 | 120 |  | 0% | 0% |  |  |
| 317 | 4.4.3.1.2 | Ajustes Testes Integrados VID |  | 5d | 2015-05-11 | 2015-05-15 | 316 |  |  | 2015-05-11 | 2015-05-15 | 5d | 0d |  | HRST 1 | 40h |  | 40 | 40 |  | 0% | 0% |  |  |
| 318 | 4.4.3.1.3 | **Onda 1 - Termo de Aceite Fase 4** |  | 0d | 2015-05-15 | 2015-05-15 |  |  |  | 2015-05-15 | 2015-05-15 | 0d | 13d |  |  |  |  |  |  |  | 0% | 0% |  |  |
| 319 | 4.4.3.1.3.1 | Onda 1 - Assinatura Fase 4 - Preparação Final - VID | milestone | 0d | 2015-05-15 | 2015-05-15 | 317 |  |  | 2015-05-15 | 2015-05-15 | 0d | 13d |  |  |  |  |  |  |  | 0% | 0% |  |  |
| 320 | 4.5 | **Fase 5 - Go Live e Operacao Assistida** |  | 13d | 2015-05-18 | 2015-06-03 |  |  |  | 2015-05-18 | 2015-06-03 | 13d | 0d |  |  | 296h |  | 296 | 296 |  | 0% | 0% |  |  |
| 321 | 4.5.1 | **Go Live - Onda 1 - Gestão de Competência** |  | 13d | 2015-05-18 | 2015-06-03 |  |  |  | 2015-05-18 | 2015-06-03 | 13d | 0d |  |  | 296h |  | 296 | 296 |  | 0% | 0% |  |  |
| 322 | 4.5.1.1 | Treinamento |  | 5d | 2015-05-18 | 2015-05-22 | 317 |  |  | 2015-05-18 | 2015-05-22 | 5d | 0d |  | HRST 1 | 40h |  | 40 | 40 |  | 0% | 0% |  |  |
| 323 | 4.5.1.2 | Cutover |  | 5d | 2015-05-25 | 2015-05-29 | 322 |  |  | 2015-05-25 | 2015-05-29 | 5d | 0d |  | HRST 1; HRST 2; HRST 3; Rodney | 160h |  | 160 | 160 |  | 0% | 0% |  |  |
| 324 | 4.5.1.3 | Onda 1 - Go Live | milestone | 0d | 2015-05-29 | 2015-05-29 | 323 |  |  | 2015-05-29 | 2015-05-29 | 0d | 3d |  |  |  |  |  |  |  | 0% | 0% |  |  |
| 325 | 4.5.1.4 | Operação Assistida |  | 3d | 2015-06-01 | 2015-06-03 | 323 |  |  | 2015-06-01 | 2015-06-03 | 3d | 0d |  | HRST 1; HRST 2; HRST 3; Rodney | 96h |  | 96 | 96 |  | 0% | 0% |  |  |
| 326 | 5 | **(4) Projeto Metas e Competência - VE** |  | 69d | 2015-02-09 A | 2015-06-03 |  | 47% | 36.55d | 2015-02-09 | 2015-06-03 | 69d | 0d |  |  | 1200h | 484h | 1,200 | 1,200 | 484 | 47% | 40% | 0,86 | 20/08 |
| 327 | 5.1 | **Fase 1 - Preparação do Projeto** |  | 10d | 2015-02-09 A | 2015-02-20 A |  | 100% |  | 2015-02-09 | 2015-02-20 | 10d |  |  |  | 120h | 120h | 120 | 120 | 120 | 100% | 100% |  |  |
| 328 | 5.1.1 | Confirmação e Mobilização de Equipe |  | 8d | 2015-02-09 A | 2015-02-18 A |  | 100% |  | 2015-02-09 | 2015-02-18 | 8d |  | start no earlier than 2015-02-09 | Rodney | 64h | 64h | 64 | 64 | 64 | 100% | 100% |  |  |
| 329 | 5.1.2 | Reunião Pré Kick-off |  | 1d | 2015-02-19 A | 2015-02-19 A | 328 | 100% |  | 2015-02-19 | 2015-02-19 | 1d |  |  | Leonardo; Rodney | 16h | 16h | 16 | 16 | 16 | 100% | 100% |  |  |
| 330 | 5.1.3 | Kick-Off |  | 1d | 2015-02-20 A | 2015-02-20 A | 329 | 100% |  | 2015-02-20 | 2015-02-20 | 1d |  |  | TI Votorantim | 8h | 8h | 8 | 8 | 8 | 100% | 100% |  |  |
| 331 | 5.1.4 | Identificação dos Usuários |  | 2d | 2015-02-19 A | 2015-02-20 A | 328 | 100% |  | 2015-02-19 | 2015-02-20 | 2d |  |  | Leonardo; Rodney | 32h | 32h | 32 | 32 | 32 | 100% | 100% |  |  |
| 332 | 5.1.5 | **Termo de Aceite Fase 1** |  | 0d | 2015-02-20 A | 2015-02-20 A |  | 100% |  | 2015-02-20 | 2015-02-20 | 0d |  |  |  |  |  |  |  |  | 100% | 100% |  |  |
| 333 | 5.1.5.1 | Assinatura Fase 1 - Preparação do Projeto | milestone | 0d | 2015-02-20 A | 2015-02-20 A | 331 | 100% |  | 2015-02-20 | 2015-02-20 | 0d |  |  |  |  |  |  |  |  | 100% | 100% |  |  |
| 334 | 5.2 | **Fase 2 - Business Blueprint** |  | 10d | 2015-02-23 A | 2015-03-06 A |  | 100% |  | 2015-02-23 | 2015-03-06 | 10d |  |  |  | 264h | 264h | 264 | 264 | 264 | 100% | 100% |  |  |
| 335 | 5.2.1 | **Levantamento Gestão de Metas** |  | 5d | 2015-02-23 A | 2015-02-27 A |  | 100% |  | 2015-02-23 | 2015-02-27 | 5d |  |  |  | 120h | 120h | 120 | 120 | 120 | 100% | 100% |  |  |
| 336 | 5.2.1.1 | Mapeamento dos Processos |  | 3d | 2015-02-23 A | 2015-02-25 A | 331 | 100% |  | 2015-02-23 | 2015-02-25 | 3d |  |  | HRST 1; HRST 2; Rodney | 72h | 72h | 72 | 72 | 72 | 100% | 100% |  |  |
| 337 | 5.2.1.2 | Elaboração dos BBPs |  | 1d | 2015-02-26 A | 2015-02-26 A | 336 | 100% |  | 2015-02-26 | 2015-02-26 | 1d |  |  | HRST 1; HRST 2; Rodney | 24h | 24h | 24 | 24 | 24 | 100% | 100% |  |  |
| 338 | 5.2.1.3 | Ajustes / Aprovação dos BBPs |  | 1d | 2015-02-27 A | 2015-02-27 A | 337 | 100% |  | 2015-02-27 | 2015-02-27 | 1d |  |  | HRST 1; HRST 2; Rodney | 24h | 24h | 24 | 24 | 24 | 100% | 100% |  |  |

| ID | WBS | Task | Type | Duration | Start | Finish | Predecessors | Complete | Remaining | Baseline start | Baseline finish | Baseline duration | Total slack | Free slack | Constraint | Resources | Work | Actual work | Cost | Baseline cost | Actual cost | % Planejado | % Realizado | .SPI. |
| --- | --- | --- | --- | --- | --- | --- | --- | --- | --- | --- | --- | --- | --- | --- | --- | --- | --- | --- | --- | --- | --- | --- | --- | --- |
| 339 | 5.2.2 | **Levantamento Gestão de Competência** |  | 7d | 2015-02-26 A | 2015-03-06 A |  | 100% |  | 2015-02-26 | 2015-03-06 | 7d |  |  |  |  | 144h | 144h | 144 | 144 | 144 | 100% | 100% |  |
| 340 | 5.2.2.1 | Mapeamento dos Processos |  | 4d | 2015-02-26 A | 2015-03-03 A | 336 | 100% |  | 2015-02-26 | 2015-03-03 | 4d |  |  |  | HRST 1; HRST 2; Rodney | 96h | 96h | 96 | 96 | 96 | 100% | 100% |  |
| 341 | 5.2.2.2 | **Elaboração dos BBPs** |  | 1d | 2015-03-04 A | 2015-03-04 A |  | 100% |  | 2015-03-04 | 2015-03-04 | 1d |  |  |  |  | 16h | 16h | 16 | 16 | 16 | 100% | 100% |  |
| 342 | 5.2.2.2.1 | EP |  | 0.5d | 2015-03-04 A | 2015-03-04 A | 340 | 100% |  | 2015-03-04 | 2015-03-04 | 0.5d |  |  |  | HRST 1 | 4h | 4h | 4 | 4 | 4 | 100% | 100% |  |
| 343 | 5.2.2.2.2 | PDI |  | 0.5d | 2015-03-04 A | 2015-03-04 A | 342 | 100% |  | 2015-03-04 | 2015-03-04 | 0.5d |  |  |  | HRST 1 | 4h | 4h | 4 | 4 | 4 | 100% | 100% |  |
| 344 | 5.2.2.2.3 | Competência |  | 0.5d | 2015-03-04 A | 2015-03-04 A | 340 | 100% |  | 2015-03-04 | 2015-03-04 | 0.5d |  |  |  | HRST 2 | 4h | 4h | 4 | 4 | 4 | 100% | 100% |  |
| 345 | 5.2.2.2.4 | Sucessão |  | 0.5d | 2015-03-04 A | 2015-03-04 A | 344 | 100% |  | 2015-03-04 | 2015-03-04 | 0.5d |  |  |  | HRST 2 | 4h | 4h | 4 | 4 | 4 | 100% | 100% |  |
| 346 | 5.2.2.3 | **Ajustes / Aprovação dos BBPs** |  | 2d | 2015-03-05 A | 2015-03-06 A |  | 100% |  | 2015-03-05 | 2015-03-06 | 2d |  |  |  |  | 32h | 32h | 32 | 32 | 32 | 100% | 100% |  |
| 347 | 5.2.2.3.1 | EP |  | 1d | 2015-03-05 A | 2015-03-05 A | 345 | 100% |  | 2015-03-05 | 2015-03-05 | 1d |  |  |  | HRST 1 | 8h | 8h | 8 | 8 | 8 | 100% | 100% |  |
| 348 | 5.2.2.3.2 | PDI |  | 1d | 2015-03-06 A | 2015-03-06 A | 347 | 100% |  | 2015-03-06 | 2015-03-06 | 1d |  |  |  | HRST 1 | 8h | 8h | 8 | 8 | 8 | 100% | 100% |  |
| 349 | 5.2.2.3.3 | Competência |  | 1d | 2015-03-05 A | 2015-03-05 A | 345 | 100% |  | 2015-03-05 | 2015-03-05 | 1d |  |  |  | HRST 2 | 8h | 8h | 8 | 8 | 8 | 100% | 100% |  |
| 350 | 5.2.2.3.4 | Sucessão |  | 1d | 2015-03-06 A | 2015-03-06 A | 349 | 100% |  | 2015-03-06 | 2015-03-06 | 1d |  |  |  | HRST 2 | 8h | 8h | 8 | 8 | 8 | 100% | 100% |  |
| 351 | 5.2.2.4 | **Termo de Aceite Fase 2** |  | 0d | 2015-03-06 A | 2015-03-06 A |  | 100% |  | 2015-03-06 | 2015-03-06 | 0d |  |  |  |  |  |  |  |  |  | 100% | 100% |  |
| 352 | 5.2.2.4.1 | Assinatura Fase 2 - Business Blueprint | milestone | 0d | 2015-03-06 A | 2015-03-06 A | 350 | 100% |  | 2015-03-06 | 2015-03-06 | 0d |  |  |  |  |  |  |  |  |  | 100% | 100% |  |
| 353 | 5.3 | **Faze 3 - Realização** |  | 14d | 2015-03-23 A | 2015-04-10 |  | 43% | 7.97d | 2015-03-23 | 2015-04-10 | 14d | 35d |  |  |  | 352h | 100h | 352 | 352 | 100 | 50% | 28% | 0,57 |
| 354 | 5.3.1 | **Gestão de Competência VE** |  | 14d | 2015-03-23 A | 2015-04-10 |  | 43% | 7.97d | 2015-03-23 | 2015-04-10 | 14d | 35d |  |  |  | 352h | 100h | 352 | 352 | 100 | 50% | 28% | 0,57 |
| 355 | 5.3.1.1 | Configurar EP (Employee Profile) - VE |  | 5d | 2015-03-23 A | 2015-03-27 A |  | 100% |  | 2015-03-23 | 2015-03-27 | 5d |  |  | start no earlier than 2015-03-23 | HRST 1 | 40h | 40h | 40 | 40 | 40 | 100% | 100% |  |
| 356 | 5.3.1.2 | Configurar PDI (Palno de Desenvolvimento Individual) - VE |  | 5d | 2015-03-23 A | 2015-03-27 A |  | 100% |  | 2015-03-23 | 2015-03-27 | 5d |  |  | start no earlier than 2015-03-23 | HRST 2 | 40h | 40h | 40 | 40 | 40 | 100% | 100% |  |
| 357 | 5.3.1.3 | Configurar Sucessão - VE |  | 5d | 2015-03-30 A | 2015-04-06 | 355, 356 | 50% | 2.5d | 2015-03-30 | 2015-04-06 | 5d | 36d | 0d |  | HRST 3 | 40h | 20h | 40 | 40 | 20 | 80% | 50% | 0,63 |
| 358 | 5.3.1.4 | Configurar PM - VE |  | 3d | 2015-04-07 | 2015-04-09 | 357 |  |  | 2015-04-07 | 2015-04-09 | 3d | 36d |  |  | HRST 1; HRST 2; HRST 3 | 72h |  | 72 | 72 |  | 0% | 0% |  |
| 359 | 5.3.1.5 | **Configurar Relatórios** |  | 2d | 2015-04-09 | 2015-04-10 |  |  |  | 2015-04-09 | 2015-04-10 | 2d | 35d |  |  |  | 16h |  | 16 | 16 |  | 0% | 0% |  |
| 360 | 5.3.1.5.1 | Cópia dos Relatórios da VC - VE |  | 0.5d | 2015-04-09 | 2015-04-09 | 59 |  |  | 2015-04-09 | 2015-04-09 | 0.5d | 35d | 0d |  | HRST 1 | 4h |  | 4 | 4 |  | 0% | 0% |  |
| 361 | 5.3.1.5.2 | Escala - Descrição e Pontuação - VE |  | 0.5d | 2015-04-09 | 2015-04-09 | 360 |  |  | 2015-04-09 | 2015-04-09 | 0.5d | 35d | 0d |  | HRST 1 | 4h |  | 4 | 4 |  | 0% | 0% |  |
| 362 | 5.3.1.5.3 | Comparativo entre Desempenho na Função e Crenças - VE |  | 1d | 2015-04-10 | 2015-04-10 | 361 |  |  | 2015-04-10 | 2015-04-10 | 1d | 35d |  |  | HRST 1 | 8h |  | 8 | 8 |  | 0% | 0% |  |
| 363 | 5.3.1.6 | Desenvolvimento Abap - Ajustes Integração |  | 9d | 2015-03-30 | 2015-04-10 | 355, 356 |  |  | 2015-03-30 | 2015-04-10 | 9d | 35d | 0d |  | ABAP 1; ABAP 2 | 144h |  | 144 | 144 |  | 44% | 0% |  |

| ID | WBS | Task | Type | Duration | Start | Finish | Predecessors | Baseline start | Baseline finish | Baseline duration | Total slack | Free slack | Constraint | Resources | Work | Cost | Baseline cost | % Planejado | % Realizado |
| --- | --- | --- | --- | --- | --- | --- | --- | --- | --- | --- | --- | --- | --- | --- | --- | --- | --- | --- | --- |
| 364 | 5.3.1.7 | **Termo de Aceite Fase 3 - Realização** |  | 0d | 2015-04-10 | 2015-04-10 |  | 2015-04-10 | 2015-04-10 | 0d | 35d |  |  | HRST 1 |  |  |  | 0% | 0% |
| 365 | 5.3.1.7.1 | Onda 1 - Assinatura Fase 3 - Realização - VE | milestone | 0d | 2015-04-10 | 2015-04-10 | 363 | 2015-04-10 | 2015-04-10 | 0d | 35d |  |  |  |  |  |  | 0% | 0% |
| 366 | 5.4 | **Fase 4 - Preparação Final** |  | 19d | 2015-04-16 | 2015-05-15 |  | 2015-04-16 | 2015-05-15 | 19d | 6d |  |  |  | 168h | 168 | 168 | 0% | 0% |
| 367 | 5.4.1 | **Testes Funcionais** |  | 2d | 2015-04-16 | 2015-04-17 |  | 2015-04-16 | 2015-04-17 | 2d | 30d |  |  |  | 16h | 16 | 16 | 0% | 0% |
| 368 | 5.4.1.1 | **Gestão de Competência VE** |  | 2d | 2015-04-16 | 2015-04-17 |  | 2015-04-16 | 2015-04-17 | 2d | 30d |  |  |  | 16h | 16 | 16 | 0% | 0% |
| 369 | 5.4.1.1.1 | Realizar Testes Funcionais - VE |  | 1d | 2015-04-16 | 2015-04-16 |  | 2015-04-16 | 2015-04-16 | 1d | 30d | 0d | start no earlier than 2015-04-16 | HRST 1 | 8h | 8 | 8 | 0% | 0% |
| 370 | 5.4.1.1.2 | Ajustes Testes Funcionais - VE |  | 1d | 2015-04-17 | 2015-04-17 | 369 | 2015-04-17 | 2015-04-17 | 1d | 30d | 0d |  | HRST 1 | 8h | 8 | 8 | 0% | 0% |
| 371 | 5.4.1.1.3 | Onda 1 - Entrega Testes Funcionais - VE | milestone | 0d | 2015-04-17 | 2015-04-17 | 370 | 2015-04-17 | 2015-04-17 | 0d | 30d |  |  |  |  |  |  | 0% | 0% |
| 372 | 5.4.2 | **Testes Unitários** |  | 3d | 2015-04-28 | 2015-04-30 |  | 2015-04-28 | 2015-04-30 | 3d | 0d |  |  |  | 32h | 32 | 32 | 0% | 0% |
| 373 | 5.4.2.1 | **Gestão de Competência VE** |  | 3d | 2015-04-28 | 2015-04-30 |  | 2015-04-28 | 2015-04-30 | 3d | 0d |  |  |  | 32h | 32 | 32 | 0% | 0% |
| 374 | 5.4.2.1.1 | Realizar Testes Unitários - VE |  | 1d | 2015-04-28 | 2015-04-28 |  | 2015-04-28 | 2015-04-28 | 1d | 0d |  | start no earlier than 2015-04-28 | HRST 2; Juraci Silva | 16h | 16 | 16 | 0% | 0% |
| 375 | 5.4.2.1.2 | Ajustes Testes Unitários - VE |  | 2d | 2015-04-29 | 2015-04-30 | 374 | 2015-04-29 | 2015-04-30 | 2d | 0d |  |  | HRST 2 | 16h | 16 | 16 | 0% | 0% |
| 376 | 5.4.2.1.3 | Onda 1 - Entrega Testes Unitários - VE | milestone | 0d | 2015-04-30 | 2015-04-30 | 375 | 2015-04-30 | 2015-04-30 | 0d | 23d |  |  |  |  |  |  | 0% | 0% |
| 377 | 5.4.3 | **Testes Integrados** |  | 10d | 2015-05-04 | 2015-05-15 |  | 2015-05-04 | 2015-05-15 | 10d | 0d |  |  |  | 120h | 120 | 120 | 0% | 0% |
| 378 | 5.4.3.1 | **Gestão de Competência VE** |  | 10d | 2015-05-04 | 2015-05-15 |  | 2015-05-04 | 2015-05-15 | 10d | 0d |  |  |  | 120h | 120 | 120 | 0% | 0% |
| 379 | 5.4.3.1.1 | Testes Integrados VE |  | 5d | 2015-05-04 | 2015-05-08 | 375 | 2015-05-04 | 2015-05-08 | 5d | 0d |  |  | Rodney; VE | 80h | 80 | 80 | 0% | 0% |
| 380 | 5.4.3.1.2 | Ajustes Testes Integrados VE |  | 5d | 2015-05-11 | 2015-05-15 | 379 | 2015-05-11 | 2015-05-15 | 5d | 0d |  |  | HRST 1 | 40h | 40 | 40 | 0% | 0% |
| 381 | 5.4.3.1.3 | **Onda 1 - Termo de Aceite Fase 4** |  | 0d | 2015-05-15 | 2015-05-15 |  | 2015-05-15 | 2015-05-15 | 0d | 13d |  |  |  |  |  |  | 0% | 0% |
| 382 | 5.4.3.1.3.1 | Onda 1 - Assinatura Fase 4 - Preparação Final - VE | milestone | 0d | 2015-05-15 | 2015-05-15 | 380 | 2015-05-15 | 2015-05-15 | 0d | 13d |  |  |  |  |  |  | 0% | 0% |
| 383 | 5.5 | **Fase 5 - Go Live e Operacao Assistida** |  | 13d | 2015-05-18 | 2015-06-03 |  | 2015-05-18 | 2015-06-03 | 13d | 0d |  |  |  | 296h | 296 | 296 | 0% | 0% |
| 384 | 5.5.1 | **Go Live - Onda 1 - Gestão de Competência** |  | 13d | 2015-05-18 | 2015-06-03 |  | 2015-05-18 | 2015-06-03 | 13d | 0d |  |  |  | 296h | 296 | 296 | 0% | 0% |
| 385 | 5.5.1.1 | Treinamento |  | 5d | 2015-05-18 | 2015-05-22 | 380 | 2015-05-18 | 2015-05-22 | 5d | 0d |  |  | HRST 1 | 40h | 40 | 40 | 0% | 0% |
| 386 | 5.5.1.2 | Cutover |  | 5d | 2015-05-25 | 2015-05-29 | 385 | 2015-05-25 | 2015-05-29 | 5d | 0d |  |  | HRST 1; HRST 2; HRST 3; Rodney | 160h | 160 | 160 | 0% | 0% |
| 387 | 5.5.1.3 | Onda 1 - Go Live | milestone | 0d | 2015-05-29 | 2015-05-29 | 386 | 2015-05-29 | 2015-05-29 | 0d | 3d |  |  |  |  |  |  | 0% | 0% |
| 388 | 5.5.1.4 | Operação Assistida |  | 3d | 2015-06-01 | 2015-06-03 | 386 | 2015-06-01 | 2015-06-03 | 3d | 0d |  |  | HRST 1; HRST 2; HRST 3; Rodney | 96h | 96 | 96 | 0% | 0% |
