# Projeto Gestão de Competências

Schedule from MS Project, 2015-02-09 to 2015-06-11, status date 2015-03-20, A marks actual dates.

## Calendars

- Padrão: Mon-Fri 09:00-12:00, 13:00-18:00; Sat-Sun off. Exceptions (off unless hours are given): 2015-04-03 (Sexta-feira da Paixão), 2015-04-20 (Ponte Tiradentes), 2015-04-21 (Tiradentes), 2015-05-01 (Dia do Trabalho), 2015-06-04 (Corpus Christi), 2015-06-05 (Ponte Corpus Christi).

## Resources

| Resource |
| --- |
| Miguel Pafaro |
| Nayla Santos |
| Leonardo Amorim |
| Ana Carolina |
| Emerson Yamauchi |
| Juraci Silva |
| VID São Paulo |
| VID Curitiba |
| VS |
| VM |
| VE |
| HRST 1 |
| HRST 2 |
| HRST 3 |
| Rodney |
| HRST Fábrica |

## Schedule

| ID | WBS | Task | Type | Duration | Start | Finish | Predecessors | Complete | Remaining | Baseline start | Baseline finish | Baseline duration | Total slack | Free slack | Constraint | Resources | Work | Actual work |
| --- | --- | --- | --- | --- | --- | --- | --- | --- | --- | --- | --- | --- | --- | --- | --- | --- | --- | --- |
| 1 | A | **Projeto de Metas e Competências SuccessFactors** |  | 82.75d | 2015-02-09 A | 2015-06-11 |  | 18% | 68.06d | 2015-02-09 | 2015-03-13 | 25d? | 0d |  |  |  | 572h | 507.2h |
| 2 | A.1 | **Fase 1 - Preparação do Projeto** |  | 10d | 2015-02-09 A | 2015-02-20 A |  | 100% |  | 2015-02-09 | 2015-02-20 | 10d |  |  |  |  |  |  |
| 3 | 1.1.1 | Confirmação e Mobilização de Equipe |  | 8d | 2015-02-09 A | 2015-02-18 A |  | 100% |  | 2015-02-09 | 2015-02-18 | 8d |  |  |  |  |  |  |
| 4 | A.1.2 | Reunião Pré Kick-off |  | 1d | 2015-02-19 A | 2015-02-19 A | 3 | 100% |  | 2015-02-19 | 2015-02-19 | 1d |  |  | start no earlier than 2015-02-09 |  |  |  |
| 5 | A.1.3 | Kick-off |  | 1d | 2015-02-20 A | 2015-02-20 A | 4 | 100% |  | 2015-02-20 | 2015-02-20 | 1d |  |  |  |  |  |  |
| 6 | 1.1.4 | Identificação dos Usuários |  | 2d | 2015-02-19 A | 2015-02-20 A | 3 | 100% |  | 2015-02-19 | 2015-02-20 | 2d |  |  |  |  |  |  |
| 7 | 1.1.5 | Entrega Final Fase 1 - Preparação do Projeto | milestone | 0d | 2015-02-20 A | 2015-02-20 A | 6 | 100% |  |  |  |  |  |  |  |  |  |  |
| 8 | A.2 | **Fase 2 - Business BluePrint** |  | 13.75d | 2015-02-23 A | 2015-03-12 |  | 91% | 1.26d | 2015-02-23 | 2015-03-10 | 12d | 59d |  |  |  | 572h | 507.2h |
| 9 | 1.2.1 | **Levantamento Gestão de Metas** |  | 10d | 2015-02-23 A | 2015-03-06 |  | 91% | 0.92d | 2015-02-23 | 2015-03-06 | 10d | 62.75d |  |  |  | 264h | 235.2h |
| 10 | 1.2.1.1 | Mapeamento dos Processos |  | 6d | 2015-02-23 A | 2015-03-02 A | 6 | 100% |  | 2015-02-23 | 2015-02-25 | 3d |  |  |  | HRST 1; HRST 2; HRST 3 | 96h | 96h |
| 11 | 1.2.1.2 | Elaboração dos BBPs |  | 5d | 2015-02-26 A | 2015-03-04 A | 10 | 100% |  | 2015-02-26 | 2015-03-04 | 5d |  |  |  | HRST 1; HRST 2; HRST 3 | 120h | 120h |
| 12 | 1.2.1.3 | Aprovação / Ajustes dos BBPs |  | 2d | 2015-03-05 A | 2015-03-06 | 11 | 40% | 1.2d | 2015-03-05 | 2015-03-05 | 1d | 62.75d |  |  | HRST 1; HRST 2; HRST 3 | 48h | 19.2h |
| 13 | 1.2.2 | **Levantamento Gestão de Competência** |  | 10.75d | 2015-02-26 A | 2015-03-12 |  | 91% | 0.98d | 2015-02-26 | 2015-03-10 | 9d | 59d |  |  |  | 308h | 272h |
| 14 | 1.2.2.1 | Mapeamento dos Processos |  | 10d | 2015-02-26 A | 2015-03-11 A | 10 | 100% |  | 2015-02-26 | 2015-03-04 | 5d |  |  |  | HRST 1; HRST 2; HRST 3 | 160h | 160h |
| 15 | 1.2.2.2 | **Elaboração dos BBPs** |  | 5.5d | 2015-03-05 A | 2015-03-12 A |  | 100% |  | 2015-03-05 | 2015-03-06 | 2d |  |  |  |  | 52h | 52h |
| 16 | 1.2.2.2.1 | EP |  | 1d | 2015-03-05 A | 2015-03-12 A | 14 | 100% |  | 2015-03-05 | 2015-03-05 | 1d |  |  |  | HRST 1; HRST 2; HRST 3 | 16h | 16h |
| 17 | 1.2.2.2.2 | PDI |  | 0.5d | 2015-03-05 A | 2015-03-05 A | 14 | 100% |  | 2015-03-05 | 2015-03-06 | 2d |  |  |  | HRST 1; HRST 2; HRST 3 | 12h | 12h |
| 18 | 1.2.2.2.3 | Competência |  | 0.5d | 2015-03-05 A | 2015-03-05 A | 14 | 100% |  | 2015-03-05 | 2015-03-06 | 2d |  |  |  | HRST 1; HRST 2; HRST 3 | 12h | 12h |
| 19 | 1.2.2.2.4 | Sucessão |  | 0.5d | 2015-03-05 A | 2015-03-05 A | 14 | 100% |  | 2015-03-05 | 2015-03-06 | 2d |  |  |  | HRST 1; HRST 2; HRST 3 | 12h | 12h |
| 20 | 1.2.2.3 | **Aprovação / Ajustes dos BBPs** |  | 5.5d | 2015-03-05 A | 2015-03-12 |  | 63% | 2.06d | 2015-03-06 | 2015-03-09 | 2d | 59d |  |  |  | 96h | 60h |
| 21 | 1.2.2.3.1 | EP |  | 1d | 2015-03-05 A | 2015-03-12 | 16 | 75% | 0.25d | 2015-03-06 | 2015-03-06 | 1d | 0d |  |  | HRST 1; HRST 2; HRST 3 | 24h | 18h |
| 22 | 1.2.2.3.2 | PDI |  | 1d | 2015-03-05 A | 2015-03-06 | 17 | 75% | 0.25d | 2015-03-09 | 2015-03-09 | 1d | 63.5d |  |  | HRST 1; HRST 2; HRST 3 | 24h | 18h |
| 23 | 1.2.2.3.3 | Competência |  | 1d | 2015-03-05 A | 2015-03-06 | 18 | 50% | 0.5d | 2015-03-09 | 2015-03-09 | 1d | 63.5d |  |  | HRST 1; HRST 2; HRST 3 | 24h | 12h |
| 24 | 1.2.2.3.4 | Sucessão |  | 1d | 2015-03-05 A | 2015-03-06 | 19 | 50% | 0.5d | 2015-03-09 | 2015-03-09 | 1d | 63.5d | 0d |  | HRST 1; HRST 2; HRST 3 | 24h | 12h |
| 25 | 1.2.2.4 | Entrega Final Fase 2 - Business Blueprint | milestone | 0d | 2015-03-06 | 2015-03-06 | 24 |  |  |  |  |  | 59.75d |  |  |  |  |  |

| ID | WBS | Task | Type | Duration | Start | Finish | Predecessors | Baseline start | Baseline finish | Baseline duration | Total slack | Free slack | Constraint |
| --- | --- | --- | --- | --- | --- | --- | --- | --- | --- | --- | --- | --- | --- |
| 26 | A.3 | **Fase 3 - Execução** |  | 29d | 2015-03-12 | 2015-04-27 |  | 2015-02-09 | 2015-03-13 | 25d? | 0d |  |  |
| 27 | A.3.1 | **Gestão de Competência** |  | 29d | 2015-03-12 | 2015-04-27 |  | 2015-02-09 | 2015-03-13 | 25d? | 0d |  |  |
| 28 | 1.3.1.1 | **VS** |  | 14d | 2015-03-12 | 2015-04-01 |  | 2015-02-09 | 2015-02-09 | 1d? | 0d |  |  |
| 29 | 1.3.1.1.1 | Configurar EP (Employee Profile) |  | 3d | 2015-03-12 | 2015-03-17 | 21 |  |  |  | 0d |  | start no earlier than 2015-03-09 |
| 30 | A.3.1.2 | Configurar PDI (Palno de Desenvolvimento Individual) VS |  | 1d | 2015-03-17 | 2015-03-18 | 29 | 2015-02-09 | 2015-02-09 | 1d? | 0d |  |  |
| 31 | A.3.1.3 | Configurar PM - VS |  | 6d | 2015-03-18 | 2015-03-26 | 30 | 2015-02-09 | 2015-02-09 | 1d? | 0d |  |  |
| 32 | A.3.1.4 | Configurar Sucessão - VS |  | 3d | 2015-03-26 | 2015-03-31 | 31 | 2015-02-09 | 2015-02-09 | 1d? | 0d |  |  |
| 33 | 1.3.1.1.5 | **Configurar Relatórios** |  | 1d | 2015-03-31 | 2015-04-01 |  | 2015-02-09 | 2015-02-09 | 1d? | 0d |  |  |
| 34 | 1.3.1.1.5.1 | Cópia dos Relatórios da VC - VS |  | 0.5d | 2015-03-31 | 2015-04-01 | 32 | 2015-02-09 | 2015-02-09 | 1d? | 0d |  |  |
| 35 | 1.3.1.1.5.2 | Escala - Descrição e Pontuação - VS |  | 0.25d | 2015-04-01 | 2015-04-01 | 34 | 2015-02-09 | 2015-02-09 | 1d? | 0d |  |  |
| 36 | 1.3.1.1.5.3 | Comparativo entre Desempenho na Função e Crenças - VS |  | 0.25d | 2015-04-01 | 2015-04-01 | 35 | 2015-02-09 | 2015-02-09 | 1d? | 0d |  |  |
| 37 | 1.3.1.1.6 | Onda 1 - Entrega Fase 3 - Execução - VS | milestone | 0d | 2015-04-01 | 2015-04-01 | 36 |  |  |  | 45d |  |  |
| 38 | 1.3.1.2 | **VM** |  | 11d | 2015-03-17 | 2015-04-01 |  | 2015-02-09 | 2015-02-09 | 1d? | 23d |  |  |
| 39 | 1.3.1.2.1 | Configurar PDI (Palno de Desenvolvimento Individual) - VM |  | 1d | 2015-03-17 | 2015-03-18 | 29 | 2015-02-09 | 2015-02-09 | 1d? | 23d | 0d |  |
| 40 | 1.3.1.2.2 | Configurar PM - VM |  | 6d | 2015-03-18 | 2015-03-26 | 39 | 2015-02-09 | 2015-02-09 | 1d? | 23d | 0d |  |
| 41 | 1.3.1.2.3 | Configurar Sucessão - VM |  | 3d | 2015-03-26 | 2015-03-31 | 40 | 2015-02-09 | 2015-02-09 | 1d? | 23d | 0d |  |
| 42 | 1.3.1.2.4 | **Configurar Relatórios** |  | 1d | 2015-03-31 | 2015-04-01 |  | 2015-02-09 | 2015-02-09 | 1d? | 23d |  |  |
| 43 | 1.3.1.2.4.1 | Cópia dos Relatórios da VC - VM |  | 0.5d | 2015-03-31 | 2015-04-01 | 41 | 2015-02-09 | 2015-02-09 | 1d? | 23d | 0d |  |
| 44 | 1.3.1.2.4.2 | Escala - Descrição e Pontuação - VM |  | 0.25d | 2015-04-01 | 2015-04-01 | 43 | 2015-02-09 | 2015-02-09 | 1d? | 23d | 0d |  |
| 45 | 1.3.1.2.4.3 | Comparativo entre Desempenho na Função e Crenças - VM |  | 0.25d | 2015-04-01 | 2015-04-01 | 44 | 2015-02-09 | 2015-02-09 | 1d? | 23d | 0d |  |
| 46 | 1.3.1.2.5 | Onda 1 - Entrega Fase 3 - Execução - VM | milestone | 0d | 2015-04-01 | 2015-04-01 | 45 |  |  |  | 45d |  |  |
| 47 | 1.3.1.3 | **VID São Paulo e Curitiba** |  | 7d | 2015-04-01 | 2015-04-13 |  | 2015-02-09 | 2015-02-09 | 1d? | 0d |  |  |
| 48 | 1.3.1.3.1 | Configurar PDI (Palno de Desenvolvimento Individual) - VID |  | 1d | 2015-04-01 | 2015-04-02 | 36 | 2015-02-09 | 2015-02-09 | 1d? | 0d |  |  |
| 49 | 1.3.1.3.2 | Configurar PM - VID |  | 3d | 2015-04-02 | 2015-04-08 | 48 | 2015-02-09 | 2015-02-09 | 1d? | 0d |  |  |
| 50 | 1.3.1.3.3 | Configurar Sucessão - VID |  | 2d | 2015-04-08 | 2015-04-10 | 49 | 2015-02-09 | 2015-02-09 | 1d? | 0d |  |  |

| ID | WBS | Task | Type | Duration | Start | Finish | Predecessors | Baseline start | Baseline finish | Baseline duration | Total slack | Free slack |
| --- | --- | --- | --- | --- | --- | --- | --- | --- | --- | --- | --- | --- |
| 51 | 1.3.1.3.4 | **Configurar Relatórios** |  | 1d | 2015-04-10 | 2015-04-13 |  | 2015-02-09 | 2015-02-09 | 1d? | 0d |  |
| 52 | 1.3.1.3.4.1 | Cópia dos Relatórios da VC - VID |  | 0.5d | 2015-04-10 | 2015-04-13 | 50 | 2015-02-09 | 2015-02-09 | 1d? | 0d |  |
| 53 | 1.3.1.3.4.2 | Escala - Descrição e Pontuação - VID |  | 0.25d | 2015-04-13 | 2015-04-13 | 52 | 2015-02-09 | 2015-02-09 | 1d? | 0d |  |
| 54 | 1.3.1.3.4.3 | Comparativo entre Desempenho na Função e Crenças - VID |  | 0.25d | 2015-04-13 | 2015-04-13 | 53 | 2015-02-09 | 2015-02-09 | 1d? | 0d |  |
| 55 | 1.3.1.3.5 | Onda 1 - Entrega Fase 3 - Execução - VID São Paulo e Curitiba | milestone | 0d | 2015-04-13 | 2015-04-13 | 54 |  |  |  | 38d |  |
| 56 | 1.3.1.4 | **VE** |  | 7d | 2015-04-01 | 2015-04-13 |  | 2015-02-09 | 2015-02-09 | 1d? | 23d |  |
| 57 | 1.3.1.4.1 | Configurar PDI (Palno de Desenvolvimento Individual) - VE |  | 1d | 2015-04-01 | 2015-04-02 | 45 | 2015-02-09 | 2015-02-09 | 1d? | 23d | 0d |
| 58 | 1.3.1.4.2 | Configurar PM - VE |  | 3d | 2015-04-02 | 2015-04-08 | 57 | 2015-02-09 | 2015-02-09 | 1d? | 23d | 0d |
| 59 | 1.3.1.4.3 | Configurar Sucessão - VE |  | 2d | 2015-04-08 | 2015-04-10 | 58 | 2015-02-09 | 2015-02-09 | 1d? | 23d | 0d |
| 60 | 1.3.1.4.4 | **Configurar Relatórios** |  | 1d | 2015-04-10 | 2015-04-13 |  | 2015-02-09 | 2015-02-09 | 1d? | 23d |  |
| 61 | 1.3.1.4.4.1 | Cópia dos Relatórios da VC - VE |  | 0.5d | 2015-04-10 | 2015-04-13 | 59 | 2015-02-09 | 2015-02-09 | 1d? | 23d | 0d |
| 62 | 1.3.1.4.4.2 | Escala - Descrição e Pontuação - VE |  | 0.25d | 2015-04-13 | 2015-04-13 | 61 | 2015-02-09 | 2015-02-09 | 1d? | 23d | 0d |
| 63 | 1.3.1.4.4.3 | Comparativo entre Desempenho na Função e Crenças - VE |  | 0.25d | 2015-04-13 | 2015-04-13 | 62 | 2015-02-09 | 2015-02-09 | 1d? | 23d | 0d |
| 64 | 1.3.1.4.5 | Onda 1 - Entrega Fase 3 - Execução - VE | milestone | 0d | 2015-04-13 | 2015-04-13 | 63 |  |  |  | 38d |  |
| 65 | 1.3.1.5 | Desenvolvimento Abap - Ajustes Integração |  | 26d | 2015-03-17 | 2015-04-27 | 29 |  |  |  | 30d | 0d |
| 66 | 1.3.1.6 | Onda 1 - Entrega Final - Fase 3 - Execução | milestone | 0d | 2015-04-27 | 2015-04-27 | 65 |  |  |  | 30d |  |
| 67 | A.4 | **Fase 4 - Preparação Final** |  | 32d | 2015-04-01 | 2015-05-21 |  | 2015-02-09 | 2015-02-09 | 1d? | 5d |  |
| 68 | A.4.1 | **Testes Funcionais** |  | 13d | 2015-04-01 | 2015-04-23 |  | 2015-02-09 | 2015-02-09 | 1d? | 5d |  |
| 69 | 1.4.1.1 | **Gestão de Competência** |  | 13d | 2015-04-01 | 2015-04-23 |  | 2015-02-09 | 2015-02-09 | 1d? | 5d |  |
| 70 | A.4.1.1 | **VS** |  | 5d | 2015-04-01 | 2015-04-09 |  | 2015-02-09 | 2015-02-09 | 1d? | 5d |  |
| 71 | 1.4.1.1.1.1 | Realizar Testes Funcionais - VS |  | 2.5d | 2015-04-01 | 2015-04-07 | 36 | 2015-02-09 | 2015-02-09 | 1d? | 5d | 0d |
| 72 | 1.4.1.1.1.2 | Ajustes Testes Funcionais - VS |  | 2.5d | 2015-04-07 | 2015-04-09 | 71 | 2015-02-09 | 2015-02-09 | 1d? | 5d | 0d |
| 73 | A.4.1.2 | **VM** |  | 5d | 2015-04-01 | 2015-04-09 |  | 2015-02-09 | 2015-02-09 | 1d? | 27d |  |
| 74 | 1.4.1.1.2.1 | Realizar Testes Funcionais - VM |  | 2.5d | 2015-04-01 | 2015-04-07 | 45 | 2015-02-09 | 2015-02-09 | 1d? | 27d | 0d |
| 75 | 1.4.1.1.2.2 | Ajustes Testes Funcionais - VM |  | 2.5d | 2015-04-07 | 2015-04-09 | 74 | 2015-02-09 | 2015-02-09 | 1d? | 27d | 0d |
| 76 | 1.4.1.1.3 | Onda 1 - Entrega Testes Funcionais - VS e VM | milestone | 0d | 2015-04-09 | 2015-04-09 | 72, 75 |  |  |  | 40d |  |

| ID | WBS | Task | Type | Duration | Start | Finish | Predecessors | Baseline start | Baseline finish | Baseline duration | Total slack | Free slack |
| --- | --- | --- | --- | --- | --- | --- | --- | --- | --- | --- | --- | --- |
| 77 | 1.4.1.1.4 | **VID São Paulo e Curitiba** |  | 6d | 2015-04-13 | 2015-04-23 |  |  |  |  | 0d |  |
| 78 | 1.4.1.1.4.1 | Realizar Testes Funcionais - VID |  | 3d | 2015-04-13 | 2015-04-16 | 54 |  |  |  | 0d |  |
| 79 | 1.4.1.1.4.2 | Ajustes Testes Funcionais - VID |  | 3d | 2015-04-16 | 2015-04-23 | 78 |  |  |  | 0d |  |
| 80 | 1.4.1.1.5 | **VE** |  | 6d | 2015-04-13 | 2015-04-23 |  |  |  |  | 23d |  |
| 81 | 1.4.1.1.5.1 | Realizar Testes Funcionais - VE |  | 3d | 2015-04-13 | 2015-04-16 | 63 |  |  |  | 23d | 0d |
| 82 | 1.4.1.1.5.2 | Ajustes Testes Funcionais - VE |  | 3d | 2015-04-16 | 2015-04-23 | 81 |  |  |  | 23d | 0d |
| 83 | 1.4.1.1.6 | Onda 1 - Entrega Testes Funcionais - VID SP - VID CTB - VE | milestone | 0d | 2015-04-23 | 2015-04-23 | 79, 82 |  |  |  | 32d |  |
| 84 | A.4.2 | **Testes Unitários** |  | 17d | 2015-04-09 | 2015-05-07 |  | 2015-02-09 | 2015-02-09 | 1d? | 5d |  |
| 85 | 1.4.2.1 | **Gestão de Competência** |  | 17d | 2015-04-09 | 2015-05-07 |  | 2015-02-09 | 2015-02-09 | 1d? | 5d |  |
| 86 | 1.4.2.1.1 | **VS** |  | 5d | 2015-04-09 | 2015-04-16 |  |  |  |  | 5d |  |
| 87 | A.4.2.1 | Realizar Testes Unitários |  | 2.5d | 2015-04-09 | 2015-04-14 | 72 | 2015-02-09 | 2015-02-09 | 1d? | 5d | 0d |
| 88 | A.4.2.2 | Ajustes Testes Unitários |  | 2.5d | 2015-04-14 | 2015-04-16 | 87 | 2015-02-09 | 2015-02-09 | 1d? | 5d | 0d |
| 89 | 1.4.2.1.2 | **VM** |  | 5d | 2015-04-09 | 2015-04-16 |  |  |  |  | 27d |  |
| 90 | 1.4.2.1.2.1 | Realizar Testes Unitários |  | 2.5d | 2015-04-09 | 2015-04-14 | 75 |  |  |  | 27d | 0d |
| 91 | 1.4.2.1.2.2 | Ajustes Testes Unitários |  | 2.5d | 2015-04-14 | 2015-04-16 | 90 |  |  |  | 27d | 0d |
| 92 | 1.4.2.1.3 | Onda 1 - Entrega Testes Unitários - VS e VM | milestone | 0d | 2015-04-16 | 2015-04-16 | 88, 91 |  |  |  | 35d |  |
| 93 | 1.4.2.1.4 | **VID São Paulo e Curitiba** |  | 9d | 2015-04-23 | 2015-05-07 |  |  |  |  | 0d |  |
| 94 | 1.4.2.1.4.1 | Realizar Testes Unitários |  | 5d | 2015-04-23 | 2015-04-30 | 79 |  |  |  | 0d |  |
| 95 | 1.4.2.1.4.2 | Ajustes Testes Unitários |  | 4d | 2015-04-30 | 2015-05-07 | 94 |  |  |  | 0d |  |
| 96 | 1.4.2.1.5 | **VE** |  | 9d | 2015-04-23 | 2015-05-07 |  |  |  |  | 23d |  |
| 97 | 1.4.2.1.5.1 | Realizar Testes Unitários |  | 5d | 2015-04-23 | 2015-04-30 | 82 |  |  |  | 23d | 0d |
| 98 | 1.4.2.1.5.2 | Ajustes Testes Unitários |  | 4d | 2015-04-30 | 2015-05-07 | 97 |  |  |  | 23d | 0d |
| 99 | 1.4.2.1.6 | Onda 1 - Entrega Testes Unitários - VID SP - VID CTB - VE | milestone | 0d | 2015-05-07 | 2015-05-07 | 95, 98 |  |  |  | 23d |  |
| 100 | 1.4.3 | **Testes Integrados** |  | 22d | 2015-04-16 | 2015-05-21 |  | 2015-02-09 | 2015-02-09 | 1d? | 5d |  |
| 101 | 1.4.3.1 | **Gestão de Competência** |  | 22d | 2015-04-16 | 2015-05-21 |  |  |  |  | 5d |  |
| 102 | 1.4.3.1.1 | Testes Integrados VS |  | 8d | 2015-04-16 | 2015-04-30 | 88 | 2015-02-09 | 2015-02-09 | 1d? | 5d | 0d |
| 103 | 1.4.3.1.2 | Testes Integrados VM |  | 8d | 2015-04-16 | 2015-04-30 | 91 | 2015-02-09 | 2015-02-09 | 1d? | 27d |  |
| 104 | 1.4.3.1.3 | Testes Integrados VID São Paulo e Curitiba |  | 5d | 2015-05-07 | 2015-05-14 | 95 | 2015-02-09 | 2015-02-09 | 1d? | 0d |  |
| 105 | A.4.5 | Testes Integrados VE |  | 5d | 2015-05-07 | 2015-05-14 | 95 | 2015-02-09 | 2015-02-09 | 1d? | 0d |  |

| ID | WBS | Task | Type | Duration | Start | Finish | Predecessors | Baseline start | Baseline finish | Baseline duration | Total slack |
| --- | --- | --- | --- | --- | --- | --- | --- | --- | --- | --- | --- |
| 106 | A.4.6 | **Ajustes Testes Integrados** |  | 14d | 2015-04-30 | 2015-05-21 |  | 2015-02-09 | 2015-02-09 | 1d? | 0d |
| 107 | 1.4.3.1.5.1 | VS |  | 4d | 2015-04-30 | 2015-05-07 | 102 |  |  |  | 10d |
| 108 | 1.4.3.1.5.2 | VM |  | 9d | 2015-04-30 | 2015-05-14 | 102 |  |  |  | 5d |
| 109 | 1.4.3.1.5.3 | VID São Paulo e Curitiba |  | 5d | 2015-05-14 | 2015-05-21 | 104 |  |  |  | 0d |
| 110 | 1.4.3.1.5.4 | VE |  | 5d | 2015-05-14 | 2015-05-21 | 105 |  |  |  | 0d |
| 111 | 1.4.3.1.6 | Onda 1 - Entrega Fase 4 - Preparação Final | milestone | 0d | 2015-05-21 | 2015-05-21 | 110 |  |  |  | 13d |
| 112 | A.5 | **Fase 5 - Go Live e Operação Assistida** |  | 13d | 2015-05-21 | 2015-06-11 |  | 2015-02-09 | 2015-02-09 | 1d? | 0d |
| 113 | A.5.1 | **Go Live - Onda 1 - Gestão de Competência** |  | 13d | 2015-05-21 | 2015-06-11 |  | 2015-02-09 | 2015-02-09 | 1d? | 0d |
| 114 | A.5.1.1 | Treinamento |  | 5d | 2015-05-21 | 2015-05-28 | 106 | 2015-02-09 | 2015-02-09 | 1d? | 0d |
| 115 | A.5.1.2 | Cutover |  | 5d | 2015-05-28 | 2015-06-08 | 114 | 2015-02-09 | 2015-02-09 | 1d? | 0d |
| 116 | A.5.1.3 | Onda 1 - Go Live | milestone | 0d | 2015-06-08 | 2015-06-08 | 115 | 2015-02-09 | 2015-02-09 | 1d? | 0d |
| 117 | A.5.1.4 | Operação Assistida |  | 3d | 2015-06-08 | 2015-06-11 | 116 | 2015-02-09 | 2015-02-09 | 1d? | 0d |
