# Projeto Gestão de Metas

Schedule from MS Project, 2015-02-09 to 2015-07-24, status date 2015-03-19, A marks actual dates.

## Calendars

- Padrão: Mon-Fri 09:00-12:00, 13:00-18:00; Sat-Sun off. Exceptions (off unless hours are given): 2015-04-03 (Sexta-feira da Paixão), 2015-04-20 (Ponte Tiradentes), 2015-04-21 (Tiradentes), 2015-05-01 (Dia do Trabalho), 2015-06-04 (Corpus Christi), 2015-06-05 (Ponte Corpus Christi).

## Resources

| Resource |
| --- |
| Miguel Pafaro |
| Nayla Santos |
| Leonardo Amorim |
| Ana Carolina |
| Emerson Yamauchi |
| Juraci Silva |
| VID São Paulo |
| VID Curitiba |
| VS |
| VM |
| VE |
| HRST 1 |
| HRST 2 |
| HRST 3 |

## Schedule

| ID | WBS | Task | Type | Duration | Start | Finish | Predecessors | Complete | Remaining | Baseline start | Baseline finish | Baseline duration | Total slack | Free slack | Constraint | Resources | Work | Actual work |
| --- | --- | --- | --- | --- | --- | --- | --- | --- | --- | --- | --- | --- | --- | --- | --- | --- | --- | --- |
| 1 | A | **Projeto de Metas e Competências SuccessFactors** |  | 114d | 2015-02-09 A | 2015-07-24 |  | 9% | 104.03d | 2015-02-09 | 2015-03-13 | 25d? | 0d |  |  |  | 1648h | 32h |
| 2 | A.1 | **Fase 1 - Preparação do Projeto** |  | 10d | 2015-02-09 A | 2015-02-20 A |  | 100% |  | 2015-02-09 | 2015-02-20 | 10d |  |  |  |  |  |  |
| 3 | 1.1.1 | Confirmação e Mobilização de Equipe |  | 8d | 2015-02-09 A | 2015-02-18 A |  | 100% |  | 2015-02-09 | 2015-02-18 | 8d |  |  |  |  |  |  |
| 4 | A.1.2 | Reunião Pré Kick-off |  | 1d | 2015-02-19 A | 2015-02-19 A | 3 | 100% |  | 2015-02-19 | 2015-02-19 | 1d |  |  | start no earlier than 2015-02-09 |  |  |  |
| 5 | A.1.3 | Kick-off |  | 1d | 2015-02-20 A | 2015-02-20 A | 4 | 100% |  | 2015-02-20 | 2015-02-20 | 1d |  |  |  |  |  |  |
| 6 | 1.1.4 | Identificação dos Usuários |  | 2d | 2015-02-19 A | 2015-02-20 A | 3 | 100% |  | 2015-02-19 | 2015-02-20 | 2d |  |  |  |  |  |  |
| 7 | 1.1.5 | Entrega Final Fase 1 - Preparação do Projeto | milestone | 0d | 2015-02-20 A | 2015-02-20 A | 6 | 100% |  |  |  |  |  |  |  |  |  |  |
| 8 | A.2 | **Fase 2 - Business BluePrint** |  | 10d | 2015-02-23 A | 2015-03-06 |  | 86% | 1.43d | 2015-02-23 | 2015-03-10 | 12d | 94d |  |  |  | 48h | 32h |
| 9 | 1.2.1 | **Levantamento Gestão de Metas** |  | 10d | 2015-02-23 A | 2015-03-06 |  | 90% | 1d | 2015-02-23 | 2015-03-06 | 10d | 94d |  |  |  |  |  |
| 10 | 1.2.1.1 | Mapeamento dos Processos |  | 3d | 2015-02-23 A | 2015-02-25 A | 6 | 100% |  | 2015-02-23 | 2015-02-25 | 3d |  |  |  |  |  |  |
| 11 | 1.2.1.2 | Elaboração dos BBPs |  | 5d | 2015-02-26 A | 2015-03-04 A | 10 | 100% |  | 2015-02-26 | 2015-03-04 | 5d |  |  |  |  |  |  |
| 12 | 1.2.1.3 | Aprovação / Ajustes dos BBPs |  | 2d | 2015-03-05 A | 2015-03-06 | 11 | 50% | 1d | 2015-03-05 | 2015-03-05 | 1d | 94d |  |  |  |  |  |
| 13 | 1.2.2 | **Levantamento Gestão de Competência** |  | 6.25d | 2015-02-26 A | 2015-03-06 |  | 82% | 1.14d | 2015-02-26 | 2015-03-10 | 9d | 94.75d |  |  |  | 48h | 32h |
| 14 | 1.2.2.1 | Mapeamento dos Processos |  | 5d | 2015-02-26 A | 2015-03-04 A | 10 | 100% |  | 2015-02-26 | 2015-03-04 | 5d |  |  |  |  |  |  |
| 15 | 1.2.2.2 | **Elaboração dos BBPs** |  | 0.5d | 2015-03-05 A | 2015-03-05 A |  | 100% |  | 2015-03-05 | 2015-03-06 | 2d |  |  |  |  | 16h | 16h |
| 16 | 1.2.2.2.1 | EP |  | 0.5d | 2015-03-05 A | 2015-03-05 A | 14 | 100% |  | 2015-03-05 | 2015-03-05 | 1d |  |  |  | HRST 1 | 4h | 4h |
| 17 | 1.2.2.2.2 | PDI |  | 0.5d | 2015-03-05 A | 2015-03-05 A | 14 | 100% |  | 2015-03-05 | 2015-03-06 | 2d |  |  |  | HRST 1 | 4h | 4h |
| 18 | 1.2.2.2.3 | Competência |  | 0.5d | 2015-03-05 A | 2015-03-05 A | 14 | 100% |  | 2015-03-05 | 2015-03-06 | 2d |  |  |  | HRST 2 | 4h | 4h |
| 19 | 1.2.2.2.4 | Sucessão |  | 0.5d | 2015-03-05 A | 2015-03-05 A | 14 | 100% |  | 2015-03-05 | 2015-03-06 | 2d |  |  |  | HRST 2 | 4h | 4h |
| 20 | 1.2.2.3 | **Aprovação / Ajustes dos BBPs** |  | 1d | 2015-03-05 A | 2015-03-06 |  | 50% | 0.5d | 2015-03-06 | 2015-03-09 | 2d | 94.75d |  |  |  | 32h | 16h |
| 21 | 1.2.2.3.1 | EP |  | 1d | 2015-03-05 A | 2015-03-06 | 16 | 50% | 0.5d | 2015-03-06 | 2015-03-06 | 1d | 0.75d |  |  | HRST 1 | 8h | 4h |
| 22 | 1.2.2.3.2 | PDI |  | 1d | 2015-03-05 A | 2015-03-06 | 17 | 50% | 0.5d | 2015-03-09 | 2015-03-09 | 1d | 94.75d |  |  | HRST 1 | 8h | 4h |
| 23 | 1.2.2.3.3 | Competência |  | 1d | 2015-03-05 A | 2015-03-06 | 18 | 50% | 0.5d | 2015-03-09 | 2015-03-09 | 1d | 94.75d |  |  | HRST 2 | 8h | 4h |
| 24 | 1.2.2.3.4 | Sucessão |  | 1d | 2015-03-05 A | 2015-03-06 | 19 | 50% | 0.5d | 2015-03-09 | 2015-03-09 | 1d | 94.75d | 0d |  | HRST 2 | 8h | 4h |
| 25 | 1.2.2.4 | Entrega Final Fase 2 - Business Blueprint | milestone | 0d | 2015-03-06 | 2015-03-06 | 24 |  |  |  |  |  | 94.75d |  |  |  |  |  |

| ID | WBS | Task | Type | Duration | Start | Finish | Predecessors | Baseline start | Baseline finish | Baseline duration | Total slack | Free slack | Constraint | Resources | Work |
| --- | --- | --- | --- | --- | --- | --- | --- | --- | --- | --- | --- | --- | --- | --- | --- |
| 26 | A.3 | **Fase 3 - Execução** |  | 59d | 2015-03-09 | 2015-06-03 |  | 2015-02-09 | 2015-03-13 | 25d? | 0d |  |  |  | 544h |
| 27 | A.3.1 | **Gestão de Competência** |  | 29d | 2015-03-09 | 2015-04-17 |  | 2015-02-09 | 2015-03-13 | 25d? | 0d |  |  |  | 544h |
| 28 | 1.3.1.1 | **VS** |  | 14d | 2015-03-09 | 2015-03-26 |  | 2015-02-09 | 2015-02-09 | 1d? | 0d |  |  |  | 136h |
| 29 | 1.3.1.1.1 | Configurar EP (Employee Profile) |  | 3d | 2015-03-09 | 2015-03-11 | 21 |  |  |  | 0d |  | start no earlier than 2015-03-09 | HRST 1; HRST 2 | 48h |
| 30 | A.3.1.2 | Configurar PDI (Palno de Desenvolvimento Individual) VS |  | 1d | 2015-03-12 | 2015-03-12 | 29 | 2015-02-09 | 2015-02-09 | 1d? | 0d |  |  | HRST 1 | 8h |
| 31 | A.3.1.3 | Configurar PM - VS |  | 6d | 2015-03-13 | 2015-03-20 | 30 | 2015-02-09 | 2015-02-09 | 1d? | 0d |  |  | HRST 1 | 48h |
| 32 | A.3.1.4 | Configurar Sucessão - VS |  | 3d | 2015-03-23 | 2015-03-25 | 31 | 2015-02-09 | 2015-02-09 | 1d? | 0d |  |  | HRST 1 | 24h |
| 33 | 1.3.1.1.5 | **Configurar Relatórios** |  | 1d | 2015-03-26 | 2015-03-26 |  | 2015-02-09 | 2015-02-09 | 1d? | 0d |  |  |  | 8h |
| 34 | 1.3.1.1.5.1 | Cópia dos Relatórios da VC - VS |  | 0.5d | 2015-03-26 | 2015-03-26 | 32 | 2015-02-09 | 2015-02-09 | 1d? | 0d |  |  | HRST 1 | 4h |
| 35 | 1.3.1.1.5.2 | Escala - Descrição e Pontuação - VS |  | 0.25d | 2015-03-26 | 2015-03-26 | 34 | 2015-02-09 | 2015-02-09 | 1d? | 0d |  |  | HRST 1 | 2h |
| 36 | 1.3.1.1.5.3 | Comparativo entre Desempenho na Função e Crenças - VS |  | 0.25d | 2015-03-26 | 2015-03-26 | 35 | 2015-02-09 | 2015-02-09 | 1d? | 0d |  |  | HRST 1 | 2h |
| 37 | 1.3.1.1.6 | Onda 1 - Entrega Fase 3 - Execução - VS | milestone | 0d | 2015-03-26 | 2015-03-26 | 36 |  |  |  | 80d |  |  |  |  |
| 38 | 1.3.1.2 | **VM** |  | 11d | 2015-03-12 | 2015-03-26 |  | 2015-02-09 | 2015-02-09 | 1d? | 58d |  |  |  | 88h |
| 39 | 1.3.1.2.1 | Configurar PDI (Palno de Desenvolvimento Individual) - VM |  | 1d | 2015-03-12 | 2015-03-12 | 29 | 2015-02-09 | 2015-02-09 | 1d? | 58d | 0d |  | HRST 2 | 8h |
| 40 | 1.3.1.2.2 | Configurar PM - VM |  | 6d | 2015-03-13 | 2015-03-20 | 39 | 2015-02-09 | 2015-02-09 | 1d? | 58d | 0d |  | HRST 2 | 48h |
| 41 | 1.3.1.2.3 | Configurar Sucessão - VM |  | 3d | 2015-03-23 | 2015-03-25 | 40 | 2015-02-09 | 2015-02-09 | 1d? | 58d | 0d |  | HRST 2 | 24h |
| 42 | 1.3.1.2.4 | **Configurar Relatórios** |  | 1d | 2015-03-26 | 2015-03-26 |  | 2015-02-09 | 2015-02-09 | 1d? | 58d |  |  |  | 8h |
| 43 | 1.3.1.2.4.1 | Cópia dos Relatórios da VC - VM |  | 0.5d | 2015-03-26 | 2015-03-26 | 41 | 2015-02-09 | 2015-02-09 | 1d? | 58d | 0d |  | HRST 2 | 4h |
| 44 | 1.3.1.2.4.2 | Escala - Descrição e Pontuação - VM |  | 0.25d | 2015-03-26 | 2015-03-26 | 43 | 2015-02-09 | 2015-02-09 | 1d? | 58d | 0d |  | HRST 2 | 2h |
| 45 | 1.3.1.2.4.3 | Comparativo entre Desempenho na Função e Crenças - VM |  | 0.25d | 2015-03-26 | 2015-03-26 | 44 | 2015-02-09 | 2015-02-09 | 1d? | 58d | 0d |  | HRST 2 | 2h |
| 46 | 1.3.1.2.5 | Onda 1 - Entrega Fase 3 - Execução - VM | milestone | 0d | 2015-03-26 | 2015-03-26 | 45 |  |  |  | 80d |  |  |  |  |
| 47 | 1.3.1.3 | **VID São Paulo e Curitiba** |  | 7d | 2015-03-27 | 2015-04-07 |  | 2015-02-09 | 2015-02-09 | 1d? | 0d |  |  |  | 56h |
| 48 | 1.3.1.3.1 | Configurar PDI (Palno de Desenvolvimento Individual) - VID |  | 1d | 2015-03-27 | 2015-03-27 | 36 | 2015-02-09 | 2015-02-09 | 1d? | 0d |  |  | HRST 1 | 8h |
| 49 | 1.3.1.3.2 | Configurar PM - VID |  | 3d | 2015-03-30 | 2015-04-01 | 48 | 2015-02-09 | 2015-02-09 | 1d? | 0d |  |  | HRST 1 | 24h |
| 50 | 1.3.1.3.3 | Configurar Sucessão - VID |  | 2d | 2015-04-02 | 2015-04-06 | 49 | 2015-02-09 | 2015-02-09 | 1d? | 0d |  |  | HRST 1 | 16h |

| ID | WBS | Task | Type | Duration | Start | Finish | Predecessors | Baseline start | Baseline finish | Baseline duration | Total slack | Free slack | Resources | Work |
| --- | --- | --- | --- | --- | --- | --- | --- | --- | --- | --- | --- | --- | --- | --- |
| 51 | 1.3.1.3.4 | **Configurar Relatórios** |  | 1d | 2015-04-07 | 2015-04-07 |  | 2015-02-09 | 2015-02-09 | 1d? | 0d |  |  | 8h |
| 52 | 1.3.1.3.4.1 | Cópia dos Relatórios da VC - VID |  | 0.5d | 2015-04-07 | 2015-04-07 | 50 | 2015-02-09 | 2015-02-09 | 1d? | 0d |  | HRST 1 | 4h |
| 53 | 1.3.1.3.4.2 | Escala - Descrição e Pontuação - VID |  | 0.25d | 2015-04-07 | 2015-04-07 | 52 | 2015-02-09 | 2015-02-09 | 1d? | 0d |  | HRST 1 | 2h |
| 54 | 1.3.1.3.4.3 | Comparativo entre Desempenho na Função e Crenças - VID |  | 0.25d | 2015-04-07 | 2015-04-07 | 53 | 2015-02-09 | 2015-02-09 | 1d? | 0d |  | HRST 1 | 2h |
| 55 | 1.3.1.3.5 | Onda 1 - Entrega Fase 3 - Execução - VID São Paulo e Curitiba | milestone | 0d | 2015-04-07 | 2015-04-07 | 54 |  |  |  | 73d |  |  |  |
| 56 | 1.3.1.4 | **VE** |  | 7d | 2015-03-27 | 2015-04-07 |  | 2015-02-09 | 2015-02-09 | 1d? | 58d |  |  | 56h |
| 57 | 1.3.1.4.1 | Configurar PDI (Palno de Desenvolvimento Individual) - VE |  | 1d | 2015-03-27 | 2015-03-27 | 45 | 2015-02-09 | 2015-02-09 | 1d? | 58d | 0d | HRST 2 | 8h |
| 58 | 1.3.1.4.2 | Configurar PM - VE |  | 3d | 2015-03-30 | 2015-04-01 | 57 | 2015-02-09 | 2015-02-09 | 1d? | 58d | 0d | HRST 2 | 24h |
| 59 | 1.3.1.4.3 | Configurar Sucessão - VE |  | 2d | 2015-04-02 | 2015-04-06 | 58 | 2015-02-09 | 2015-02-09 | 1d? | 58d | 0d | HRST 2 | 16h |
| 60 | 1.3.1.4.4 | **Configurar Relatórios** |  | 1d | 2015-04-07 | 2015-04-07 |  | 2015-02-09 | 2015-02-09 | 1d? | 58d |  |  | 8h |
| 61 | 1.3.1.4.4.1 | Cópia dos Relatórios da VC - VE |  | 0.5d | 2015-04-07 | 2015-04-07 | 59 | 2015-02-09 | 2015-02-09 | 1d? | 58d | 0d | HRST 2 | 4h |
| 62 | 1.3.1.4.4.2 | Escala - Descrição e Pontuação - VE |  | 0.25d | 2015-04-07 | 2015-04-07 | 61 | 2015-02-09 | 2015-02-09 | 1d? | 58d | 0d | HRST 2 | 2h |
| 63 | 1.3.1.4.4.3 | Comparativo entre Desempenho na Função e Crenças - VE |  | 0.25d | 2015-04-07 | 2015-04-07 | 62 | 2015-02-09 | 2015-02-09 | 1d? | 58d | 0d | HRST 2 | 2h |
| 64 | 1.3.1.4.5 | Onda 1 - Entrega Fase 3 - Execução - VE | milestone | 0d | 2015-04-07 | 2015-04-07 | 63 |  |  |  | 73d |  |  |  |
| 65 | 1.3.1.5 | Desenvolvimento Abap - Ajustes Integração |  | 26d | 2015-03-12 | 2015-04-17 | 29 |  |  |  | 65d | 0d | HRST 3 | 208h |
| 66 | 1.3.1.6 | Onda 1 - Entrega Final - Fase 3 - Execução | milestone | 0d | 2015-04-17 | 2015-04-17 | 65 |  |  |  | 65d |  |  |  |
| 67 | A.3.2 | **Gestão de Metas** |  | 18d | 2015-05-11 | 2015-06-03 |  | 2015-02-09 | 2015-02-09 | 1d? | 0d |  |  |  |
| 68 | A.3.2.1 | **VS** |  | 12d | 2015-05-11 | 2015-05-26 |  | 2015-02-09 | 2015-02-09 | 1d? | 30d |  |  |  |
| 69 | A.3.2.1.3 | Alteração de label na instância |  | 1d | 2015-05-11 | 2015-05-11 | 189, 192 | 2015-02-09 | 2015-02-09 | 1d? | 30d | 0d |  |  |
| 70 | A.3.2.1.4 | Configurar o mapa de rota |  | 1d | 2015-05-12 | 2015-05-12 | 69 | 2015-02-09 | 2015-02-09 | 1d? | 30d | 0d |  |  |
| 71 | A.3.2.1.5 | Configurar Formulários |  | 2d | 2015-05-13 | 2015-05-14 | 70 | 2015-02-09 | 2015-02-09 | 1d? | 30d | 0d |  |  |
| 72 | A.3.2.1.6 | Configurar permissões |  | 1d | 2015-05-15 | 2015-05-15 | 71 | 2015-02-09 | 2015-02-09 | 1d? | 30d | 0d |  |  |
| 73 | A.3.2.1.7 | Definir layout para importar a Biblioteca de Metas |  | 1d | 2015-05-18 | 2015-05-18 | 72 | 2015-02-09 | 2015-02-09 | 1d? | 30d | 0d |  |  |
| 74 | A.3.2.1.8 | Definir layout para carga de empregados |  | 1d | 2015-05-19 | 2015-05-19 | 73 | 2015-02-09 | 2015-02-09 | 1d? | 30d | 0d |  |  |
| 75 | A.3.2.1.9 | Passar para Votorantim informações para carga de fotos |  | 1d | 2015-05-20 | 2015-05-20 | 74 | 2015-02-09 | 2015-02-09 | 1d? | 30d | 0d |  |  |
| 76 | A.3.2.1.10 | Fazer a carga de metas |  | 1d | 2015-05-21 | 2015-05-21 | 75 | 2015-02-09 | 2015-02-09 | 1d? | 30d | 0d |  |  |
| 77 | A.3.2.1.11 | Fazer a carga de empregados |  | 1d | 2015-05-22 | 2015-05-22 | 76 | 2015-02-09 | 2015-02-09 | 1d? | 30d | 0d |  |  |
| 78 | A.3.2.1.12 | Agendar job para carga de fotos |  | 1d | 2015-05-25 | 2015-05-25 | 77 | 2015-02-09 | 2015-02-09 | 1d? | 30d | 0d |  |  |
| 79 | A.3.2.1.13 | Configurar Relatórios |  | 1d | 2015-05-26 | 2015-05-26 | 78 | 2015-02-09 | 2015-02-09 | 1d? | 30d | 0d |  |  |
| 80 | 1.3.2.1.12 | Onda 2 - Entrega Fase 3 - Execução - VS | milestone | 0d | 2015-05-26 | 2015-05-26 | 79 |  |  |  | 41d |  |  |  |

| ID | WBS | Task | Type | Duration | Start | Finish | Predecessors | Baseline start | Baseline finish | Baseline duration | Total slack | Free slack |
| --- | --- | --- | --- | --- | --- | --- | --- | --- | --- | --- | --- | --- |
| 81 | A.3.2.3 | **VM** |  | 12d | 2015-05-11 | 2015-05-26 |  | 2015-02-09 | 2015-02-09 | 1d? | 0d |  |
| 82 | A.3.2.3.3 | Alteração de label na instância |  | 1d | 2015-05-11 | 2015-05-11 | 189 | 2015-02-09 | 2015-02-09 | 1d? | 0d |  |
| 83 | A.3.2.3.4 | Configurar o mato de rota |  | 1d | 2015-05-12 | 2015-05-12 | 82 | 2015-02-09 | 2015-02-09 | 1d? | 0d |  |
| 84 | A.3.2.3.5 | Configurar Formulários |  | 2d | 2015-05-13 | 2015-05-14 | 83 | 2015-02-09 | 2015-02-09 | 1d? | 0d |  |
| 85 | A.3.2.3.6 | Configurar permissões |  | 1d | 2015-05-15 | 2015-05-15 | 84 | 2015-02-09 | 2015-02-09 | 1d? | 0d |  |
| 86 | A.3.2.3.7 | Definir layout para importar a Biblioteca de Metas |  | 1d | 2015-05-18 | 2015-05-18 | 85 | 2015-02-09 | 2015-02-09 | 1d? | 0d |  |
| 87 | A.3.2.3.8 | Definir layout para carga de empregados |  | 1d | 2015-05-19 | 2015-05-19 | 86 | 2015-02-09 | 2015-02-09 | 1d? | 0d |  |
| 88 | A.3.2.3.9 | Passar para Votorantim informações para carga de fotos |  | 1d | 2015-05-20 | 2015-05-20 | 87 | 2015-02-09 | 2015-02-09 | 1d? | 0d |  |
| 89 | A.3.2.3.10 | Fazer a carga de metas |  | 1d | 2015-05-21 | 2015-05-21 | 88 | 2015-02-09 | 2015-02-09 | 1d? | 0d |  |
| 90 | A.3.2.3.11 | Fazer a carga de empregados |  | 1d | 2015-05-22 | 2015-05-22 | 89 | 2015-02-09 | 2015-02-09 | 1d? | 0d |  |
| 91 | A.3.2.3.12 | Agendar job para carga de fotos |  | 1d | 2015-05-25 | 2015-05-25 | 90 | 2015-02-09 | 2015-02-09 | 1d? | 0d |  |
| 92 | A.3.2.3.13 | Configurar Relatórios |  | 1d | 2015-05-26 | 2015-05-26 | 91 | 2015-02-09 | 2015-02-09 | 1d? | 0d |  |
| 93 | 1.3.2.2.12 | Onda 2 - Entrega Fase 3 - Execução - VM | milestone | 0d | 2015-05-26 | 2015-05-26 | 92 |  |  |  | 41d |  |
| 94 | A.3.2.4 | **VID São Paulo e Curitiba** |  | 6d | 2015-05-27 | 2015-06-03 |  | 2015-02-09 | 2015-02-09 | 1d? | 35d |  |
| 95 | A.3.2.4.3 | Alteração de label na instância |  | 0.5d | 2015-05-27 | 2015-05-27 | 79 | 2015-02-09 | 2015-02-09 | 1d? | 35d | 0d |
| 96 | A.3.2.4.4 | Configurar o mapa de rota |  | 0.5d | 2015-05-27 | 2015-05-27 | 95 | 2015-02-09 | 2015-02-09 | 1d? | 35d | 0d |
| 97 | A.3.2.4.5 | Configurar Formulários |  | 1d | 2015-05-28 | 2015-05-28 | 96 | 2015-02-09 | 2015-02-09 | 1d? | 35d | 0d |
| 98 | A.3.2.4.6 | Configurar permissões |  | 0.5d | 2015-05-29 | 2015-05-29 | 97 | 2015-02-09 | 2015-02-09 | 1d? | 35d | 0d |
| 99 | A.3.2.4.7 | Definir layout para importar a Biblioteca de Metas |  | 0.5d | 2015-05-29 | 2015-05-29 | 98 | 2015-02-09 | 2015-02-09 | 1d? | 35d | 0d |
| 100 | A.3.2.4.8 | Definir layout para carga de empregados |  | 0.5d | 2015-06-01 | 2015-06-01 | 99 | 2015-02-09 | 2015-02-09 | 1d? | 35d | 0d |
| 101 | A.3.2.4.9 | Passar para Votorantim informações para carga de fotos |  | 0.5d | 2015-06-01 | 2015-06-01 | 100 | 2015-02-09 | 2015-02-09 | 1d? | 35d | 0d |
| 102 | A.3.2.4.10 | Fazer a carga de metas |  | 0.5d | 2015-06-02 | 2015-06-02 | 101 | 2015-02-09 | 2015-02-09 | 1d? | 35d | 0d |
| 103 | A.3.2.4.11 | Fazer a carga de empregados |  | 0.5d | 2015-06-02 | 2015-06-02 | 102 | 2015-02-09 | 2015-02-09 | 1d? | 35d | 0d |
| 104 | A.3.2.4.12 | Agendar job para carga de fotos |  | 0.5d | 2015-06-03 | 2015-06-03 | 103 | 2015-02-09 | 2015-02-09 | 1d? | 35d | 0d |
| 105 | A.3.2.4.13 | Configurar Relatórios |  | 0.5d | 2015-06-03 | 2015-06-03 | 104 | 2015-02-09 | 2015-02-09 | 1d? | 35d | 0d |
| 106 | 1.3.2.3.12 | Onda 2 - Entrega Fase 3 - Execução - VID São Paulo e Curitiba | milestone | 0d | 2015-06-03 | 2015-06-03 | 105 |  |  |  | 35d |  |

| ID | WBS | Task | Type | Duration | Start | Finish | Predecessors | Baseline start | Baseline finish | Baseline duration | Total slack | Free slack | Resources | Work |
| --- | --- | --- | --- | --- | --- | --- | --- | --- | --- | --- | --- | --- | --- | --- |
| 107 | A.3.2.5 | **VE** |  | 6d | 2015-05-27 | 2015-06-03 |  | 2015-02-09 | 2015-02-09 | 1d? | 35d |  |  |  |
| 108 | A.3.2.5.3 | Alteração de label na instância |  | 0.5d | 2015-05-27 | 2015-05-27 | 92 | 2015-02-09 | 2015-02-09 | 1d? | 35d | 0d |  |  |
| 109 | A.3.2.5.4 | Configurar o mapa de rota |  | 0.5d | 2015-05-27 | 2015-05-27 | 108 | 2015-02-09 | 2015-02-09 | 1d? | 35d | 0d |  |  |
| 110 | A.3.2.5.5 | Configurar Formulários |  | 1d | 2015-05-28 | 2015-05-28 | 109 | 2015-02-09 | 2015-02-09 | 1d? | 35d | 0d |  |  |
| 111 | A.3.2.5.6 | Configurar permissões |  | 0.5d | 2015-05-29 | 2015-05-29 | 110 | 2015-02-09 | 2015-02-09 | 1d? | 35d | 0d |  |  |
| 112 | A.3.2.5.7 | Definir layout para importar a Biblioteca de Metas |  | 0.5d | 2015-05-29 | 2015-05-29 | 111 | 2015-02-09 | 2015-02-09 | 1d? | 35d | 0d |  |  |
| 113 | A.3.2.5.8 | Definir layout para carga de empregados |  | 0.5d | 2015-06-01 | 2015-06-01 | 112 | 2015-02-09 | 2015-02-09 | 1d? | 35d | 0d |  |  |
| 114 | A.3.2.5.9 | Passar para Votorantim informações para carga de fotos |  | 0.5d | 2015-06-01 | 2015-06-01 | 113 | 2015-02-09 | 2015-02-09 | 1d? | 35d | 0d |  |  |
| 115 | A.3.2.5.10 | Fazer a carga de metas |  | 0.5d | 2015-06-02 | 2015-06-02 | 114 | 2015-02-09 | 2015-02-09 | 1d? | 35d | 0d |  |  |
| 116 | A.3.2.5.11 | Fazer a carga de empregados |  | 0.5d | 2015-06-02 | 2015-06-02 | 115 | 2015-02-09 | 2015-02-09 | 1d? | 35d | 0d |  |  |
| 117 | A.3.2.5.12 | Agendar job para carga de fotos |  | 0.5d | 2015-06-03 | 2015-06-03 | 116 | 2015-02-09 | 2015-02-09 | 1d? | 35d | 0d |  |  |
| 118 | A.3.2.5.13 | Configurar Relatórios |  | 0.5d | 2015-06-03 | 2015-06-03 | 117 | 2015-02-09 | 2015-02-09 | 1d? | 35d | 0d |  |  |
| 119 | 1.3.2.4.12 | Onda 2 - Entrega Fase 3 - Execução - VE | milestone | 0d | 2015-06-03 | 2015-06-03 | 118 |  |  |  | 35d |  |  |  |
| 120 | 1.3.2.5 | Onda 2 - Entrega Final Fase 3 - Execução | milestone | 0d | 2015-06-03 | 2015-06-03 | 118 |  |  |  | 35d |  |  |  |
| 121 | A.4 | **Fase 4 - Preparação Final** |  | 70d | 2015-03-27 | 2015-07-10 |  | 2015-02-09 | 2015-02-09 | 1d? | 7d |  |  | 1056h |
| 122 | A.4.1 | **Testes Funcionais** |  | 50d | 2015-03-27 | 2015-06-12 |  | 2015-02-09 | 2015-02-09 | 1d? | 7d |  |  | 176h |
| 123 | 1.4.1.1 | **Gestão de Competência** |  | 13d | 2015-03-27 | 2015-04-15 |  | 2015-02-09 | 2015-02-09 | 1d? | 7d |  |  | 176h |
| 124 | A.4.1.1 | **VS** |  | 5d | 2015-03-27 | 2015-04-02 |  | 2015-02-09 | 2015-02-09 | 1d? | 30d |  |  | 40h |
| 125 | 1.4.1.1.1.1 | Realizar Testes Funcionais - VS |  | 2.5d | 2015-03-27 | 2015-03-31 | 36 | 2015-02-09 | 2015-02-09 | 1d? | 30d | 0d | HRST 1 | 20h |
| 126 | 1.4.1.1.1.2 | Ajustes Testes Funcionais - VS |  | 2.5d | 2015-03-31 | 2015-04-02 | 125 | 2015-02-09 | 2015-02-09 | 1d? | 30d | 0d | HRST 1 | 20h |
| 127 | A.4.1.2 | **VM** |  | 5d | 2015-03-27 | 2015-04-02 |  | 2015-02-09 | 2015-02-09 | 1d? | 62d |  |  | 40h |
| 128 | 1.4.1.1.2.1 | Realizar Testes Funcionais - VM |  | 2.5d | 2015-03-27 | 2015-03-31 | 45 | 2015-02-09 | 2015-02-09 | 1d? | 62d | 0d | HRST 2 | 20h |
| 129 | 1.4.1.1.2.2 | Ajustes Testes Funcionais - VM |  | 2.5d | 2015-03-31 | 2015-04-02 | 128 | 2015-02-09 | 2015-02-09 | 1d? | 62d | 0d | HRST 2 | 20h |
| 130 | 1.4.1.1.3 | Onda 1 - Entrega Testes Funcionais - VS e VM | milestone | 0d | 2015-04-02 | 2015-04-02 | 126, 129 |  |  |  | 75d |  |  |  |

| ID | WBS | Task | Type | Duration | Start | Finish | Predecessors | Baseline start | Baseline finish | Baseline duration | Total slack | Free slack | Resources | Work |
| --- | --- | --- | --- | --- | --- | --- | --- | --- | --- | --- | --- | --- | --- | --- |
| 131 | 1.4.1.1.4 | **VID São Paulo e Curitiba** |  | 6d | 2015-04-08 | 2015-04-15 |  |  |  |  | 0d |  |  | 48h |
| 132 | 1.4.1.1.4.1 | Realizar Testes Funcionais - VID |  | 3d | 2015-04-08 | 2015-04-10 | 54 |  |  |  | 0d |  | HRST 1 | 24h |
| 133 | 1.4.1.1.4.2 | Ajustes Testes Funcionais - VID |  | 3d | 2015-04-13 | 2015-04-15 | 132 |  |  |  | 0d |  | HRST 1 | 24h |
| 134 | 1.4.1.1.5 | **VE** |  | 6d | 2015-04-08 | 2015-04-15 |  |  |  |  | 58d |  |  | 48h |
| 135 | 1.4.1.1.5.1 | Realizar Testes Funcionais - VE |  | 3d | 2015-04-08 | 2015-04-10 | 63 |  |  |  | 58d | 0d | HRST 2 | 24h |
| 136 | 1.4.1.1.5.2 | Ajustes Testes Funcionais - VE |  | 3d | 2015-04-13 | 2015-04-15 | 135 |  |  |  | 58d | 0d | HRST 2 | 24h |
| 137 | 1.4.1.1.6 | Onda 1 - Entrega Testes Funcionais - VID SP - VID CTB - VE | milestone | 0d | 2015-04-15 | 2015-04-15 | 133, 136 |  |  |  | 67d |  |  |  |
| 138 | 1.4.1.2 | **Gestão de Metas** |  | 11d | 2015-05-27 | 2015-06-12 |  | 2015-02-09 | 2015-02-09 | 1d? | 0d |  |  |  |
| 139 | 1.4.1.2.1 | **VS** |  | 6d | 2015-05-27 | 2015-06-03 |  | 2015-02-09 | 2015-02-09 | 1d? | 30d |  |  |  |
| 140 | 1.4.1.2.1.1 | Realizar Testes Funcionais |  | 3d | 2015-05-27 | 2015-05-29 | 79 | 2015-02-09 | 2015-02-09 | 1d? | 30d | 0d |  |  |
| 141 | 1.4.1.2.1.2 | Ajustes Testes Funcionais |  | 3d | 2015-06-01 | 2015-06-03 | 140 | 2015-02-09 | 2015-02-09 | 1d? | 30d | 0d |  |  |
| 142 | 1.4.1.2.2 | **VM** |  | 6d | 2015-05-27 | 2015-06-03 |  |  |  |  | 0d |  |  |  |
| 143 | 1.4.1.2.2.1 | Realizar Testes Funcionais |  | 3d | 2015-05-27 | 2015-05-29 | 92 |  |  |  | 0d |  |  |  |
| 144 | 1.4.1.2.2.2 | Ajustes Testes Funcionais |  | 3d | 2015-06-01 | 2015-06-03 | 143 |  |  |  | 0d |  |  |  |
| 145 | 1.4.1.2.3 | Onda 2 - Entrega Testes Funcionais - VS e VM | milestone | 0d | 2015-06-03 | 2015-06-03 | 141, 144 |  |  |  | 35d |  |  |  |
| 146 | 1.4.1.2.4 | **VID São Paulo e Curitiba** |  | 5d | 2015-06-08 | 2015-06-12 |  |  |  |  | 30d |  |  |  |
| 147 | 1.4.1.2.4.1 | Realizar Testes Funcionais |  | 2d | 2015-06-08 | 2015-06-09 | 141 |  |  |  | 30d | 0d |  |  |
| 148 | 1.4.1.2.4.2 | Ajustes Testes Funcionais |  | 3d | 2015-06-10 | 2015-06-12 | 147 |  |  |  | 30d | 0d |  |  |
| 149 | 1.4.1.2.5 | **VE** |  | 5d | 2015-06-08 | 2015-06-12 |  |  |  |  | 0d |  |  |  |
| 150 | 1.4.1.2.5.1 | Realizar Testes Funcionais |  | 2d | 2015-06-08 | 2015-06-09 | 144 |  |  |  | 0d |  |  |  |
| 151 | 1.4.1.2.5.2 | Ajustes Testes Funcionais |  | 3d | 2015-06-10 | 2015-06-12 | 150 |  |  |  | 0d |  |  |  |
| 152 | 1.4.1.2.6 | Onda 2 - Entrega Testes Funcionais - VID SP - VID CTB - VE | milestone | 0d | 2015-06-12 | 2015-06-12 | 148, 151 |  |  |  | 30d |  |  |  |
| 153 | A.4.2 | **Testes Unitários** |  | 55d | 2015-04-06 | 2015-06-26 |  | 2015-02-09 | 2015-02-09 | 1d? | 8d |  |  | 448h |
| 154 | 1.4.2.1 | **Gestão de Competência** |  | 17d | 2015-04-06 | 2015-04-30 |  | 2015-02-09 | 2015-02-09 | 1d? | 8d |  |  | 448h |
| 155 | 1.4.2.1.1 | **VS** |  | 5d | 2015-04-06 | 2015-04-10 |  |  |  |  | 30d |  |  | 80h |
| 156 | A.4.2.1 | Realizar Testes Unitários |  | 2.5d | 2015-04-06 | 2015-04-08 | 126 | 2015-02-09 | 2015-02-09 | 1d? | 30d | 0d | HRST 1; Juraci Silva | 40h |
| 157 | A.4.2.2 | Ajustes Testes Unitários |  | 2.5d | 2015-04-08 | 2015-04-10 | 156 | 2015-02-09 | 2015-02-09 | 1d? | 30d | 0d | HRST 1; Juraci Silva | 40h |

| ID | WBS | Task | Type | Duration | Start | Finish | Predecessors | Baseline start | Baseline finish | Baseline duration | Total slack | Free slack | Resources | Work |
| --- | --- | --- | --- | --- | --- | --- | --- | --- | --- | --- | --- | --- | --- | --- |
| 158 | 1.4.2.1.2 | **VM** |  | 5d | 2015-04-06 | 2015-04-10 |  |  |  |  | 62d |  |  | 80h |
| 159 | 1.4.2.1.2.1 | Realizar Testes Unitários |  | 2.5d | 2015-04-06 | 2015-04-08 | 129 |  |  |  | 62d | 0d | HRST 2; Juraci Silva | 40h |
| 160 | 1.4.2.1.2.2 | Ajustes Testes Unitários |  | 2.5d | 2015-04-08 | 2015-04-10 | 159 |  |  |  | 62d | 0d | HRST 2; Juraci Silva | 40h |
| 161 | 1.4.2.1.3 | Onda 1 - Entrega Testes Unitários - VS e VM | milestone | 0d | 2015-04-10 | 2015-04-10 | 157, 160 |  |  |  | 70d |  |  |  |
| 162 | 1.4.2.1.4 | **VID São Paulo e Curitiba** |  | 9d | 2015-04-16 | 2015-04-30 |  |  |  |  | 0d |  |  | 144h |
| 163 | 1.4.2.1.4.1 | Realizar Testes Unitários |  | 5d | 2015-04-16 | 2015-04-24 | 133 |  |  |  | 0d |  | HRST 1; Juraci Silva | 80h |
| 164 | 1.4.2.1.4.2 | Ajustes Testes Unitários |  | 4d | 2015-04-27 | 2015-04-30 | 163 |  |  |  | 0d |  | HRST 1; Juraci Silva | 64h |
| 165 | 1.4.2.1.5 | **VE** |  | 9d | 2015-04-16 | 2015-04-30 |  |  |  |  | 58d |  |  | 144h |
| 166 | 1.4.2.1.5.1 | Realizar Testes Unitários |  | 5d | 2015-04-16 | 2015-04-24 | 136 |  |  |  | 58d | 0d | HRST 2; Juraci Silva | 80h |
| 167 | 1.4.2.1.5.2 | Ajustes Testes Unitários |  | 4d | 2015-04-27 | 2015-04-30 | 166 |  |  |  | 58d | 0d | HRST 2; Juraci Silva | 64h |
| 168 | 1.4.2.1.6 | Onda 1 - Entrega Testes Unitários - VID SP - VID CTB - VE | milestone | 0d | 2015-04-30 | 2015-04-30 | 164, 167 |  |  |  | 58d |  |  |  |
| 169 | 1.4.2.2 | **Gestão de Metas** |  | 10d | 2015-06-15 | 2015-06-26 |  | 2015-02-09 | 2015-02-09 | 1d? | 0d |  |  |  |
| 170 | 1.4.2.2.1 | **VS** |  | 5d | 2015-06-15 | 2015-06-19 |  |  |  |  | 0d |  |  |  |
| 171 | 1.4.2.2.1.1 | Realizar Testes Unitários |  | 2.5d | 2015-06-15 | 2015-06-17 | 151 | 2015-02-09 | 2015-02-09 | 1d? | 0d |  |  |  |
| 172 | A.4.3 | Ajustes de Testes Unitários |  | 2.5d | 2015-06-17 | 2015-06-19 | 171 | 2015-02-09 | 2015-02-09 | 1d? | 0d |  |  |  |
| 173 | 1.4.2.2.2 | **VM** |  | 5d | 2015-06-15 | 2015-06-19 |  |  |  |  | 0d |  |  |  |
| 174 | 1.4.2.2.2.1 | Realizar Testes Unitários |  | 2.5d | 2015-06-15 | 2015-06-17 | 151 |  |  |  | 0d |  |  |  |
| 175 | 1.4.2.2.2.2 | Ajustes de Testes Unitários |  | 2.5d | 2015-06-17 | 2015-06-19 | 174 |  |  |  | 0d |  |  |  |
| 176 | 1.4.2.2.3 | Onda 2 - Entrega Testes Unitários - VS e VM | milestone | 0d | 2015-06-19 | 2015-06-19 | 172, 175 |  |  |  | 25d |  |  |  |
| 177 | 1.4.2.2.4 | **VID São Paulo e Curitiba** |  | 5d | 2015-06-22 | 2015-06-26 |  |  |  |  | 0d |  |  |  |
| 178 | 1.4.2.2.4.1 | Realizar Testes Unitários |  | 2.5d | 2015-06-22 | 2015-06-24 | 172 |  |  |  | 0d |  |  |  |
| 179 | 1.4.2.2.4.2 | Ajustes de Testes Unitários |  | 2.5d | 2015-06-24 | 2015-06-26 | 178 |  |  |  | 0d |  |  |  |
| 180 | 1.4.2.2.5 | **VE** |  | 5d | 2015-06-22 | 2015-06-26 |  |  |  |  | 0d |  |  |  |
| 181 | 1.4.2.2.5.1 | Realizar Testes Unitários |  | 2.5d | 2015-06-22 | 2015-06-24 | 175 |  |  |  | 0d |  |  |  |
| 182 | 1.4.2.2.5.2 | Ajustes de Testes Unitários |  | 2.5d | 2015-06-24 | 2015-06-26 | 181 |  |  |  | 0d |  |  |  |
| 183 | 1.4.2.2.6 | Onda 2 - Entrega Testes Unitários - VID SP - VID CTB - VE | milestone | 0d | 2015-06-26 | 2015-06-26 | 179, 182 |  |  |  | 20d |  |  |  |

| ID | WBS | Task | Type | Duration | Start | Finish | Predecessors | Baseline start | Baseline finish | Baseline duration | Total slack | Free slack | Resources | Work |
| --- | --- | --- | --- | --- | --- | --- | --- | --- | --- | --- | --- | --- | --- | --- |
| 184 | 1.4.3 | **Testes Integrados** |  | 60d | 2015-04-13 | 2015-07-10 |  | 2015-02-09 | 2015-02-09 | 1d? | 10d |  |  | 432h |
| 185 | 1.4.3.1 | **Gestão de Competência** |  | 22d | 2015-04-13 | 2015-05-15 |  |  |  |  | 12d |  |  | 432h |
| 186 | 1.4.3.1.1 | Testes Integrados VS |  | 8d | 2015-04-13 | 2015-04-24 | 157 | 2015-02-09 | 2015-02-09 | 1d? | 30d | 0d | VS | 64h |
| 187 | 1.4.3.1.2 | Testes Integrados VM |  | 8d | 2015-04-13 | 2015-04-24 | 160 | 2015-02-09 | 2015-02-09 | 1d? | 62d |  | VM | 64h |
| 188 | 1.4.3.1.3 | Testes Integrados VID São Paulo e Curitiba |  | 5d | 2015-05-04 | 2015-05-08 | 164 | 2015-02-09 | 2015-02-09 | 1d? | 35d | 0d | VID Curitiba; VID São Paulo | 80h |
| 189 | A.4.5 | Testes Integrados VE |  | 5d | 2015-05-04 | 2015-05-08 | 164 | 2015-02-09 | 2015-02-09 | 1d? | 0d |  | VE | 40h |
| 190 | A.4.6 | **Ajustes Testes Integrados** |  | 14d | 2015-04-27 | 2015-05-15 |  | 2015-02-09 | 2015-02-09 | 1d? | 30d | 0d |  | 184h |
| 191 | 1.4.3.1.5.1 | VS |  | 4d | 2015-04-27 | 2015-04-30 | 186 |  |  |  | 45d |  | HRST 1 | 32h |
| 192 | 1.4.3.1.5.2 | VM |  | 9d | 2015-04-27 | 2015-05-08 | 186 |  |  |  | 30d | 0d | HRST 2 | 72h |
| 193 | 1.4.3.1.5.3 | VID São Paulo e Curitiba |  | 5d | 2015-05-11 | 2015-05-15 | 188 |  |  |  | 35d |  | HRST 1 | 40h |
| 194 | 1.4.3.1.5.4 | VE |  | 5d | 2015-05-11 | 2015-05-15 | 189 |  |  |  | 35d | 0d | HRST 2 | 40h |
| 195 | 1.4.3.1.6 | Onda 1 - Entrega Fase 4 - Preparação Final | milestone | 0d | 2015-05-15 | 2015-05-15 | 194 |  |  |  | 48d |  |  |  |
| 196 | 1.4.3.2 | **Gestão de Metas** |  | 15d | 2015-06-22 | 2015-07-10 |  |  |  |  | 5d |  |  |  |
| 197 | 1.4.3.2.1 | Testes Integrados VS |  | 5d | 2015-06-22 | 2015-06-26 | 172 |  |  |  | 5d | 0d |  |  |
| 198 | 1.4.3.2.2 | Testes Integrados VM |  | 5d | 2015-06-22 | 2015-06-26 | 175 |  |  |  | 5d | 0d |  |  |
| 199 | 1.4.3.2.3 | Testes Integrados VID São Paulo e Curitiba |  | 5d | 2015-06-29 | 2015-07-03 | 179 |  |  |  | 0d |  |  |  |
| 200 | 1.4.3.2.4 | Testes Integrados VE |  | 5d | 2015-06-29 | 2015-07-03 | 182 |  |  |  | 0d |  |  |  |
| 201 | 1.4.3.2.5 | **Ajustes Testes Integrados** |  | 10d | 2015-06-29 | 2015-07-10 |  |  |  |  | 0d |  |  |  |
| 202 | 1.4.3.2.5.1 | VS |  | 5d | 2015-06-29 | 2015-07-03 | 197 |  |  |  | 5d |  |  |  |
| 203 | 1.4.3.2.5.2 | VM |  | 5d | 2015-06-29 | 2015-07-03 | 198 |  |  |  | 5d |  |  |  |
| 204 | 1.4.3.2.5.3 | VID São Paulo e Curitiba |  | 5d | 2015-07-06 | 2015-07-10 | 199 |  |  |  | 0d |  |  |  |
| 205 | 1.4.3.2.5.4 | VE |  | 5d | 2015-07-06 | 2015-07-10 | 200 |  |  |  | 0d |  |  |  |
| 206 | 1.4.3.2.6 | Onda 2 - Entrega Fase 4 - Preparação Final | milestone | 0d | 2015-07-10 | 2015-07-10 | 205 |  |  |  | 10d |  |  |  |
| 207 | A.5 | **Fase 5 - Go Live e Operação Assistida** |  | 48d | 2015-05-18 | 2015-07-24 |  | 2015-02-09 | 2015-02-09 | 1d? | 0d |  |  |  |
| 208 | A.5.1 | **Go Live - Onda 1 - Gestão de Competência** |  | 13d | 2015-05-18 | 2015-06-03 |  | 2015-02-09 | 2015-02-09 | 1d? | 35d |  |  |  |
| 209 | A.5.1.1 | Treinamento |  | 5d | 2015-05-18 | 2015-05-22 | 190 | 2015-02-09 | 2015-02-09 | 1d? | 35d | 0d |  |  |
| 210 | A.5.1.2 | Cutover |  | 5d | 2015-05-25 | 2015-05-29 | 209 | 2015-02-09 | 2015-02-09 | 1d? | 35d | 0d |  |  |
| 211 | A.5.1.3 | Onda 1 - Go Live | milestone | 0d | 2015-05-29 | 2015-05-29 | 210 | 2015-02-09 | 2015-02-09 | 1d? | 35d | 0d |  |  |
| 212 | A.5.1.4 | Operação Assistida |  | 3d | 2015-06-01 | 2015-06-03 | 211 | 2015-02-09 | 2015-02-09 | 1d? | 35d |  |  |  |

| ID | WBS | Task | Type | Duration | Start | Finish | Predecessors | Baseline start | Baseline finish | Baseline duration | Total slack |
| --- | --- | --- | --- | --- | --- | --- | --- | --- | --- | --- | --- |
| 213 | A.5.2 | **Go Live - Onda 2 - Gestão de Metas** |  | 10d | 2015-07-13 | 2015-07-24 |  | 2015-02-09 | 2015-02-09 | 1d? | 0d |
| 214 | A.5.2.1 | Treinamento |  | 5d | 2015-07-13 | 2015-07-17 | 202, 203, 204, 205 | 2015-02-09 | 2015-02-09 | 1d? | 5d |
| 215 | A.5.2.2 | Cutover |  | 5d | 2015-07-13 | 2015-07-17 | 202, 203, 204, 205 | 2015-02-09 | 2015-02-09 | 1d? | 0d |
| 216 | A.5.2.3 | Onda 2 - Go Live | milestone | 0d | 2015-07-17 | 2015-07-17 | 215 | 2015-02-09 | 2015-02-09 | 1d? | 0d |
| 217 | A.5.2.4 | Operação Assistida |  | 5d | 2015-07-20 | 2015-07-24 | 216 | 2015-02-09 | 2015-02-09 | 1d? | 0d |
