# Cronograma Leonardo_v2

Schedule from MS Project, 2015-02-09 to 2015-07-24, status date 2015-03-27, A marks actual dates.
CPM Braxis

## Calendars

- Padrão: Mon-Fri 09:00-12:00, 13:00-18:00; Sat-Sun off. Exceptions (off unless hours are given): 2015-03-09 to 2015-03-20 (Congelamento das Instâncias), 2015-04-03 (Sexta-feira da Paixão), 2015-04-20 (Ponte Tiradentes), 2015-04-21 (Tiradentes), 2015-05-01 (Dia do Trabalho), 2015-06-04 (Corpus Christi), 2015-06-05 (Ponte Corpus Christi).

## Resources

| Resource |
| --- |
| Leonardo |
| Rodney |
| HRST 1 |
| HRST 2 |
| HRST 3 |
| HRST 4 |
| ABAP 1 |
| ABAP 2 |
| Juraci Silva |
| VS |
| VM |
| VID São Paulo |
| VID Curitiba |
| VE |
| TI Votorantim |

## Schedule

| ID | WBS | Task | Type | Duration | Start | Finish | Predecessors | Complete | Remaining | Actual start | Baseline start | Baseline finish | Baseline duration | Baseline 1 start | Baseline 1 finish | Total slack | Constraint | Resources | Work | Actual work | Baseline cost | .SPI. | % Planejado | % Realizado |
| --- | --- | --- | --- | --- | --- | --- | --- | --- | --- | --- | --- | --- | --- | --- | --- | --- | --- | --- | --- | --- | --- | --- | --- | --- |
| 1 | 1 | **Projeto Metas e Competência SuccessFactors** |  | 104d | 2015-02-09 A | 2015-07-24 |  | 14% | 89.59d |  |  |  |  |  |  | 0d |  |  | 1828h | 304h |  | 1,14 |  |  |
| 2 | 1.1 | **Fase 1 - Preparação do Projeto** |  | 10d | 2015-02-09 A | 2015-02-20 A |  | 100% |  |  | 2012-09-18 | 2012-10-03 | 11.4d | 2012-08-07 | 2012-08-07 |  |  |  |  |  | 151.2 |  |  |  |
| 3 | 1.1.1 | Confirmação e Mobilização de Equipe |  | 8d | 2015-02-09 A | 2015-02-18 A |  | 100% |  |  |  |  |  | 2015-02-09 | 2015-02-18 |  | start no earlier than 2015-02-09 |  |  |  |  |  |  |  |
| 4 | 1.1.2 | Reunião Pré Kick-off |  | 1d | 2015-02-19 A | 2015-02-19 A | 3 | 100% |  |  |  |  |  | 2015-02-19 | 2015-02-19 |  |  |  |  |  |  |  |  |  |
| 5 | 1.1.3 | Kick-Off |  | 1d | 2015-02-20 A | 2015-02-20 A | 4 | 100% |  |  |  |  |  | 2015-02-20 | 2015-02-20 |  |  |  |  |  |  |  |  |  |
| 6 | 1.1.4 | Identificação dos Usuários |  | 2d | 2015-02-19 A | 2015-02-20 A | 3 | 100% |  |  |  |  |  | 2015-02-19 | 2015-02-20 |  |  |  |  |  |  |  |  |  |
| 7 | 1.1.5 | **Termo de Aceite Fase 1** |  | 0d | 2015-02-20 A | 2015-02-20 A |  | 100% |  |  |  |  |  | 2015-02-20 | 2015-02-20 |  |  |  |  |  |  |  | 100% | 100% |
| 8 | 1.1.5.1 | Assinatura Fase 1 - Preparação do Projeto | milestone | 0d | 2015-02-20 A | 2015-02-20 A | 6 | 100% |  |  |  |  |  | 2015-02-20 | 2015-02-20 |  |  |  |  |  |  |  | 100% | 100% |
| 9 | 1.2 | **Fase 2 - Business Blueprint** |  | 10d | 2015-02-23 A | 2015-03-06 |  | 92% | 0.83d |  |  |  |  |  |  |  |  |  | 216h | 208h |  | 1,92 |  |  |
| 10 | 1.2.1 | **Levantamento Gestão de Metas** |  | 5d | 2015-02-23 A | 2015-02-27 |  | 95% | 0.25d |  |  |  |  | 2012-08-07 | 2012-08-07 | 5d |  |  | 72h | 72h |  | 1,95 |  |  |
| 11 | 1.2.1.1 | Mapeamento dos Processos |  | 3d | 2015-02-23 A | 2015-02-25 A | 6 | 100% |  |  |  |  |  | 2012-08-07 | 2012-08-07 |  |  | HRST 1; HRST 2; Rodney | 72h | 72h |  |  |  |  |
| 12 | 1.2.1.2 | Elaboração dos BBPs |  | 1d | 2015-02-26 A | 2015-02-26 A | 11 | 100% |  |  |  |  |  | 2012-08-07 | 2012-08-07 |  |  |  |  |  |  |  |  |  |
| 13 | 1.2.1.3 | Ajustes / Aprovação dos BBPs |  | 1d | 2015-02-27 A | 2015-02-27 | 12 | 75% | 0.25d |  |  |  |  | 2012-08-07 | 2012-08-07 | 5d |  |  |  |  |  | 1,75 |  |  |
| 14 | 1.2.2 | **Levantamento Gestão de Competência** |  | 8d | 2015-02-26 A | 2015-03-23 |  | 90% | 0.8d |  |  |  |  | 2012-08-07 | 2015-03-06 | 0d |  |  | 144h | 136h |  | 1,9 |  |  |
| 15 | 1.2.2.1 | Mapeamento dos Processos |  | 4d | 2015-02-26 A | 2015-03-03 A | 11 | 100% |  |  |  |  |  | 2012-08-07 | 2012-08-07 |  |  | HRST 1; HRST 2; Rodney | 96h | 96h |  |  |  |  |
| 16 | 1.2.2.2 | **Elaboração dos BBPs** |  | 1d | 2015-03-04 A | 2015-03-04 A |  | 100% |  |  |  |  |  | 2012-08-07 | 2012-08-07 |  |  |  | 16h | 16h |  |  |  |  |
| 17 | 1.2.2.2.1 | EP |  | 0.5d | 2015-03-04 A | 2015-03-04 A | 15 | 100% |  |  |  |  |  | 2012-08-07 | 2012-08-07 |  |  | HRST 1 | 4h | 4h |  |  |  |  |
| 18 | 1.2.2.2.2 | PDI |  | 0.5d | 2015-03-04 A | 2015-03-04 A | 17 | 100% |  |  |  |  |  | 2012-08-07 | 2012-08-07 |  |  | HRST 1 | 4h | 4h |  |  |  |  |
| 19 | 1.2.2.2.3 | Competência | manual | 0.5d | 2015-03-04 A | 2015-03-04 A | 15 | 100% |  |  |  |  |  | 2012-08-07 | 2012-08-07 |  | start no earlier than 2015-03-05 | HRST 2 | 4h | 4h |  |  |  |  |
| 20 | 1.2.2.2.4 | Sucessão |  | 0.5d | 2015-03-04 A | 2015-03-04 A | 19 | 100% |  |  |  |  |  | 2012-08-07 | 2012-08-07 |  |  | HRST 2 | 4h | 4h |  |  |  |  |
| 21 | 1.2.2.3 | **Ajustes / Aprovação dos BBPs** |  | 2d | 2015-03-06 | 2015-03-23 |  | 75% | 0.5d | 2015-03-05 |  |  |  | 2012-08-07 | 2015-03-06 |  |  |  | 32h | 24h |  | 1,75 |  |  |
| 22 | 1.2.2.3.1 | EP | manual | 1d | 2015-03-05 A | 2015-03-05 | 20 | 75% | 0.25d |  |  |  |  | 2015-03-06 | 2015-03-06 |  |  | HRST 1 | 8h | 6h |  | 1,75 |  |  |
| 23 | 1.2.2.3.2 | PDI |  | 1d | 2015-03-06 A | 2015-03-06 | 22 | 75% | 0.25d |  |  |  |  | 2012-08-07 | 2012-08-07 | 1d |  | HRST 1 | 8h | 6h |  | 1,75 |  |  |
| 24 | 1.2.2.3.3 | Competência | manual | 1d | 2015-03-05 A | 2015-03-05 | 20 | 75% | 0.25d |  |  |  |  |  |  |  | start no earlier than 2015-03-05 | HRST 2 | 8h | 6h |  | 1,75 |  |  |
| 25 | 1.2.2.3.4 | Sucesão |  | 1d | 2015-03-06 A | 2015-03-06 | 24 | 75% | 0.25d |  |  |  |  |  |  | 0d |  | HRST 2 | 8h | 6h |  | 1,75 |  |  |

| ID | WBS | Task | Type | Duration | Start | Finish | Predecessors | Complete | Remaining | Baseline start | Baseline finish | Baseline duration | Baseline 1 start | Baseline 1 finish | Total slack | Free slack | Constraint | Resources | Work | Actual work | Baseline cost | % Planejado | % Realizado | .SPI. |
| --- | --- | --- | --- | --- | --- | --- | --- | --- | --- | --- | --- | --- | --- | --- | --- | --- | --- | --- | --- | --- | --- | --- | --- | --- |
| 26 | 1.2.2.4 | **Termo de Aceite Fase 2** |  | 0d | 2015-03-06 | 2015-03-06 |  |  |  |  |  |  | 2012-08-07 | 2012-08-07 | 0d |  |  |  |  |  |  | 100% | 0% |  |
| 27 | 1.2.2.4.1 | Assinatura Fase 2 - Business Blueprint | milestone | 0d | 2015-03-06 | 2015-03-06 | 25 |  |  |  |  |  | 2012-08-07 | 2012-08-07 | 0d |  |  |  |  |  |  | 100% | 0% |  |
| 28 | 1.3 | **Fase 3 - Realização** |  | 49d | 2015-03-23 A | 2015-06-03 |  | 14% | 42.04d | 2012-11-06 | 2013-08-26 | 203.25d | 2012-08-07 | 2012-08-07 | 35d |  |  |  | 748h | 96h | 2,980.8 |  |  | 1,14 |
| 29 | 1.3.1 | **Gestão de Competência** |  | 14d | 2015-03-23 A | 2015-04-10 |  | 28% | 10.09d |  |  |  | 2012-08-07 | 2012-08-07 | 70d |  |  |  | 416h | 96h |  |  |  | 1,28 |
| 30 | 1.3.1.1 | **EP** |  | 5d | 2015-03-23 A | 2015-03-27 |  | 75% | 1.25d |  |  |  | 2012-08-07 | 2012-08-07 | 79d |  |  |  | 40h | 30h |  |  |  | 1,75 |
| 31 | 1.3.1.1.1 | Configurar EP (Employee Profile) - VE | manual | 2d | 2015-03-23 A | 2015-03-24 |  | 75% | 0.5d |  |  |  | 2012-08-07 | 2012-08-07 |  |  | start no earlier than 2015-03-23 | HRST 1 | 16h | 12h |  |  |  | 1,75 |
| 32 | 1.3.1.1.2 | Configurar EP (Employee Profile) - VS |  | 1d | 2015-03-25 A | 2015-03-25 | 31 | 75% | 0.25d |  |  |  | 2012-08-07 | 2012-08-07 | 0.75d | 0d |  | HRST 1 | 8h | 6h |  |  |  | 1,75 |
| 33 | 1.3.1.1.3 | Configurar EP (Employee Profile) - VM |  | 1d | 2015-03-26 A | 2015-03-26 | 32 | 75% | 0.25d |  |  |  | 2012-08-07 | 2012-08-07 | 0.75d | 0d |  | HRST 1 | 8h | 6h |  |  |  | 1,75 |
| 34 | 1.3.1.1.4 | Configurar EP (Employee Profile) - VID São Paulo e Curitiba |  | 1d | 2015-03-27 A | 2015-03-27 | 33 | 75% | 0.25d |  |  |  | 2012-08-07 | 2012-08-07 | 0d |  |  | HRST 1 | 8h | 6h |  |  |  | 1,75 |
| 35 | 1.3.1.1.5 | Onda 1 - Entrega Fase 3 - Realização - EP | milestone | 0d | 2015-03-27 | 2015-03-27 | 34 |  |  |  |  |  | 2012-08-07 | 2012-08-07 | 79d |  |  |  |  |  |  | 100% | 0% |  |
| 36 | 1.3.1.2 | **PDI** |  | 5d | 2015-03-23 A | 2015-03-27 A |  | 100% |  |  |  |  | 2012-08-07 | 2012-08-07 |  |  |  |  | 40h | 40h |  |  |  |  |
| 37 | 1.3.1.2.1 | Configurar PDI (Palno de Desenvolvimento Individual) - VS | manual | 2d | 2015-03-23 A | 2015-03-24 A |  | 100% |  |  |  |  | 2012-08-07 | 2012-08-07 |  |  | start no earlier than 2015-02-23 | HRST 2 | 16h | 16h |  |  |  |  |
| 38 | 1.3.1.2.2 | Configurar PDI (Palno de Desenvolvimento Individual) - VE |  | 1d | 2015-03-25 A | 2015-03-25 A | 31 | 100% |  |  |  |  | 2012-08-07 | 2012-08-07 |  |  |  | HRST 2 | 8h | 8h |  |  |  |  |
| 39 | 1.3.1.2.3 | Configurar PDI (Palno de Desenvolvimento Individual) - VM |  | 1d | 2015-03-26 A | 2015-03-26 A | 32 | 100% |  |  |  |  | 2012-08-07 | 2012-08-07 |  |  |  | HRST 2 | 8h | 8h |  |  |  |  |
| 40 | 1.3.1.2.4 | Configurar PDI (Palno de Desenvolvimento Individual) - VID São Paulo e Curitiba |  | 1d | 2015-03-27 A | 2015-03-27 A | 33 | 100% |  |  |  |  | 2012-08-07 | 2012-08-07 |  |  |  | HRST 2 | 8h | 8h |  |  |  |  |
| 41 | 1.3.1.2.5 | Onda 1 - Entrega Fase 3 - Realização - PDI | milestone | 0d | 2015-03-27 A | 2015-03-27 A | 40 | 100% |  |  |  |  | 2012-08-07 | 2012-08-07 |  |  |  |  |  |  |  | 100% | 100% |  |
| 42 | 1.3.1.3 | **Sucessão** |  | 5d | 2015-03-30 A | 2015-04-06 |  | 25% | 3.75d |  |  |  | 2012-08-07 | 2012-08-07 | 74d |  |  |  | 40h | 10h |  |  |  | 1,25 |
| 43 | 1.3.1.3.1 | Configurar Sucessão - VS | manual | 2d | 2015-03-30 A | 2015-03-31 | 34 | 25% | 1.5d |  |  |  | 2012-08-07 | 2012-08-07 |  |  | start no earlier than 2015-03-30 | HRST 3 | 16h | 4h |  |  |  | 1,25 |
| 44 | 1.3.1.3.2 | Configurar Sucessão - VM |  | 1d | 2015-04-01 A | 2015-04-01 | 43 | 25% | 0.75d |  |  |  | 2012-08-07 | 2012-08-07 | 0.25d | 0d |  | HRST 3 | 8h | 2h |  |  |  | 1,25 |
| 45 | 1.3.1.3.3 | Configurar Sucessão - VID São Paulo e Curitiba |  | 1d | 2015-04-02 A | 2015-04-02 | 44 | 25% | 0.75d |  |  |  | 2012-08-07 | 2012-08-07 | 0.25d | 0d |  | HRST 3 | 8h | 2h |  |  |  | 1,25 |
| 46 | 1.3.1.3.4 | Configurar Sucessão - VE |  | 1d | 2015-04-06 A | 2015-04-06 | 45 | 25% | 0.75d |  |  |  | 2012-08-07 | 2012-08-07 | 71d | 0d |  | HRST 3 | 8h | 2h |  |  |  | 1,25 |
| 47 | 1.3.1.3.5 | Onda 1 - Entrega Fase 3 - Realização - Sucessão | milestone | 0d | 2015-04-06 | 2015-04-06 | 46 |  |  |  |  |  | 2012-08-07 | 2012-08-07 | 74d |  |  |  |  |  |  | 0% | 0% |  |
| 48 | 1.3.1.4 | **PM** |  | 8d | 2015-03-30 A | 2015-04-09 |  | 14% | 6.86d |  |  |  | 2012-08-07 | 2012-08-07 | 71d |  |  |  | 112h | 16h |  |  |  | 1,14 |
| 49 | 1.3.1.4.1 | Configurar PM - VS | manual | 4d | 2015-03-30 A | 2015-04-02 | 34 | 25% | 3d |  |  |  | 2012-08-07 | 2012-08-07 |  |  | start no earlier than 2015-03-30 | HRST 1 | 32h | 8h |  |  |  | 1,25 |
| 50 | 1.3.1.4.2 | Configurar PM - VM |  | 4d | 2015-03-30 A | 2015-04-02 | 40 | 25% | 3d |  |  |  | 2012-08-07 | 2012-08-07 | 72d | 0d |  | HRST 2 | 32h | 8h |  |  |  | 1,25 |
| 51 | 1.3.1.4.3 | Configurar PM - VID São Paulo e Curitiba |  | 3d | 2015-04-07 | 2015-04-09 | 46 |  |  |  |  |  | 2012-08-07 | 2012-08-07 | 71d |  |  | HRST 3 | 24h |  |  |  |  |  |
| 52 | 1.3.1.4.4 | Configurar PM - VE |  | 3d | 2015-04-06 | 2015-04-08 | 50 |  |  |  |  |  | 2012-08-07 | 2012-08-07 | 72d | 0d |  | HRST 2 | 24h |  |  |  |  |  |
| 53 | 1.3.1.4.5 | Onda 1 - Entrega Fase 3 - Realização - PM | milestone | 0d | 2015-04-08 | 2015-04-08 | 52 |  |  |  |  |  | 2012-08-07 | 2012-08-07 | 72d |  |  |  |  |  |  | 0% | 0% |  |

| ID | WBS | Task | Type | Duration | Start | Finish | Predecessors | Baseline 1 start | Baseline 1 finish | Total slack | Free slack | Resources | Work | % Planejado | % Realizado |
| --- | --- | --- | --- | --- | --- | --- | --- | --- | --- | --- | --- | --- | --- | --- | --- |
| 54 | 1.3.1.5 | **Relatórios** |  | 5d | 2015-04-06 | 2015-04-10 |  | 2012-08-07 | 2012-08-07 | 70d |  |  | 40h |  |  |
| 55 | 1.3.1.5.1 | Configurar Relatórios - VS |  | 2d | 2015-04-06 | 2015-04-07 | 49 | 2012-08-07 | 2012-08-07 | 70d | 0d | HRST 1 | 16h |  |  |
| 56 | 1.3.1.5.2 | Configurar Relatórios - VM |  | 1d | 2015-04-08 | 2015-04-08 | 55 | 2012-08-07 | 2012-08-07 | 70d | 0d | HRST 1 | 8h |  |  |
| 57 | 1.3.1.5.3 | Configurar Relatórios - VID São Paulo e Curitiba |  | 1d | 2015-04-09 | 2015-04-09 | 56 | 2012-08-07 | 2012-08-07 | 70d | 0d | HRST 1 | 8h |  |  |
| 58 | 1.3.1.5.4 | Configurar Relatórios - VE |  | 1d | 2015-04-10 | 2015-04-10 | 57 | 2012-08-07 | 2012-08-07 | 70d | 0d | HRST 1 | 8h |  |  |
| 59 | 1.3.1.5.5 | Onda 1 - Entrega Fase 3 - Realização - Relatórios | milestone | 0d | 2015-04-10 | 2015-04-10 | 58 | 2012-08-07 | 2012-08-07 | 70d |  |  |  | 0% | 0% |
| 60 | 1.3.1.6 | Desenvolvimento Abap - Ajustes Integração |  | 9d | 2015-03-30 | 2015-04-10 | 34 | 2012-08-07 | 2012-08-07 | 0d |  | ABAP 1; ABAP 2 | 144h |  |  |
| 61 | 1.3.1.7 | **Onda 1 - Termo de Aceite Fase 3 - Realização** |  | 0d | 2015-04-10 | 2015-04-10 |  | 2012-08-07 | 2012-08-07 | 70d |  |  |  | 0% | 0% |
| 62 | 1.3.1.7.1 | Onda 1 - Assinatura Fase 3 - Realização | milestone | 0d | 2015-04-10 | 2015-04-10 | 60 | 2012-08-07 | 2012-08-07 | 70d |  |  |  | 0% | 0% |
| 63 | 1.3.2 | **Gestão de Metas** |  | 18d | 2015-05-11 | 2015-06-03 |  | 2012-08-07 | 2012-08-07 | 5d |  |  | 332h |  |  |
| 64 | 1.3.2.1 | **VS** |  | 11d | 2015-05-11 | 2015-05-25 |  | 2012-08-07 | 2012-08-07 | 35.5d |  |  | 88h |  |  |
| 65 | 1.3.2.1.1 | Alteração de label na instância |  | 1d | 2015-05-11 | 2015-05-11 | 186 | 2012-08-07 | 2012-08-07 | 35.5d | 0d | HRST 2 | 8h |  |  |
| 66 | 1.3.2.1.2 | Configurar o mapa de rota |  | 1d | 2015-05-12 | 2015-05-12 | 65 | 2012-08-07 | 2012-08-07 | 35.5d | 0d | HRST 2 | 8h |  |  |
| 67 | 1.3.2.1.3 | Configurar Formulários |  | 1d | 2015-05-13 | 2015-05-13 | 66 | 2012-08-07 | 2012-08-07 | 35.5d | 0d | HRST 2 | 8h |  |  |
| 68 | 1.3.2.1.4 | Configurar permissões |  | 1d | 2015-05-14 | 2015-05-14 | 67 | 2012-08-07 | 2012-08-07 | 35.5d | 0d | HRST 2 | 8h |  |  |
| 69 | 1.3.2.1.5 | Definir layout para importar a Biblioteca de Metas |  | 1d | 2015-05-15 | 2015-05-15 | 68 | 2012-08-07 | 2012-08-07 | 35.5d | 0d | HRST 2 | 8h |  |  |
| 70 | 1.3.2.1.6 | Definir layout para carga de empregados |  | 1d | 2015-05-18 | 2015-05-18 | 69 | 2012-08-07 | 2012-08-07 | 35.5d | 0d | HRST 2 | 8h |  |  |
| 71 | 1.3.2.1.7 | Passar para Votorantim informações para carga de fotos |  | 1d | 2015-05-19 | 2015-05-19 | 70 | 2012-08-07 | 2012-08-07 | 35.5d | 0d | HRST 2 | 8h |  |  |
| 72 | 1.3.2.1.8 | Fazer a carga de metas |  | 1d | 2015-05-20 | 2015-05-20 | 71 | 2012-08-07 | 2012-08-07 | 35.5d | 0d | HRST 2 | 8h |  |  |
| 73 | 1.3.2.1.9 | Fazer a carga de empregados |  | 1d | 2015-05-21 | 2015-05-21 | 72 | 2012-08-07 | 2012-08-07 | 35.5d | 0d | HRST 2 | 8h |  |  |
| 74 | 1.3.2.1.10 | Agendar job para carga de fotos |  | 1d | 2015-05-22 | 2015-05-22 | 73 | 2012-08-07 | 2012-08-07 | 35.5d | 0d | HRST 2 | 8h |  |  |
| 75 | 1.3.2.1.11 | Configurar Relatórios |  | 1d | 2015-05-25 | 2015-05-25 | 74 | 2012-08-07 | 2012-08-07 | 35.5d | 0d | HRST 2 | 8h |  |  |
| 76 | 1.3.2.1.12 | Onda 2 - Entrega Fase 3 - Realização - VS | milestone | 0d | 2015-05-25 | 2015-05-25 | 75 | 2012-08-07 | 2012-08-07 | 42d |  |  |  | 0% | 0% |
| 77 | 1.3.2.2 | **VM** |  | 11d | 2015-05-11 | 2015-05-25 |  | 2012-08-07 | 2012-08-07 | 42d |  |  | 88h |  |  |
| 78 | 1.3.2.2.1 | Alteração de label na instância |  | 1d | 2015-05-11 | 2015-05-11 | 186 | 2012-08-07 | 2012-08-07 | 42d | 0d | HRST 3 | 8h |  |  |
| 79 | 1.3.2.2.2 | Configurar o mapa de rota |  | 1d | 2015-05-12 | 2015-05-12 | 78 | 2012-08-07 | 2012-08-07 | 42d | 0d | HRST 3 | 8h |  |  |
| 80 | 1.3.2.2.3 | Configurar Formulários |  | 1d | 2015-05-13 | 2015-05-13 | 79 | 2012-08-07 | 2012-08-07 | 42d | 0d | HRST 3 | 8h |  |  |
| 81 | 1.3.2.2.4 | Configurar permissões |  | 1d | 2015-05-14 | 2015-05-14 | 80 | 2012-08-07 | 2012-08-07 | 42d | 0d | HRST 3 | 8h |  |  |
| 82 | 1.3.2.2.5 | Definir layout para importar a Biblioteca de Metas |  | 1d | 2015-05-15 | 2015-05-15 | 81 | 2012-08-07 | 2012-08-07 | 42d | 0d | HRST 3 | 8h |  |  |
| 83 | 1.3.2.2.6 | Definir layout para carga de empregados |  | 1d | 2015-05-18 | 2015-05-18 | 82 | 2012-08-07 | 2012-08-07 | 42d | 0d | HRST 3 | 8h |  |  |
| 84 | 1.3.2.2.7 | Passar para Votorantim informações para carga de fotos |  | 1d | 2015-05-19 | 2015-05-19 | 83 | 2012-08-07 | 2012-08-07 | 42d | 0d | HRST 3 | 8h |  |  |
| 85 | 1.3.2.2.8 | Fazer a carga de metas |  | 1d | 2015-05-20 | 2015-05-20 | 84 | 2012-08-07 | 2012-08-07 | 42d | 0d | HRST 3 | 8h |  |  |
| 86 | 1.3.2.2.9 | Fazer a carga de empregados |  | 1d | 2015-05-21 | 2015-05-21 | 85 | 2012-08-07 | 2012-08-07 | 42d | 0d | HRST 3 | 8h |  |  |
| 87 | 1.3.2.2.10 | Agendar job para carga de fotos |  | 1d | 2015-05-22 | 2015-05-22 | 86 | 2012-08-07 | 2012-08-07 | 42d | 0d | HRST 3 | 8h |  |  |
| 88 | 1.3.2.2.11 | Configurar Relatórios |  | 1d | 2015-05-25 | 2015-05-25 | 87 | 2012-08-07 | 2012-08-07 | 42d | 0d | HRST 3 | 8h |  |  |
| 89 | 1.3.2.2.12 | Onda 2 - Entrega Fase 3 - Realização - VM | milestone | 0d | 2015-05-25 | 2015-05-25 | 88 | 2012-08-07 | 2012-08-07 | 42d |  |  |  | 0% | 0% |

| ID | WBS | Task | Type | Duration | Start | Finish | Predecessors | Baseline 1 start | Baseline 1 finish | Total slack | Free slack | Resources | Work | % Planejado | % Realizado |
| --- | --- | --- | --- | --- | --- | --- | --- | --- | --- | --- | --- | --- | --- | --- | --- |
| 90 | 1.3.2.3 | **VID São Paulo e Curitiba** |  | 13d | 2015-05-18 | 2015-06-03 |  | 2012-08-07 | 2012-08-07 | 0d |  |  | 104h |  |  |
| 91 | 1.3.2.3.1 | Alteração de label na instância |  | 1d | 2015-05-18 | 2015-05-18 | 191 | 2012-08-07 | 2012-08-07 | 0d |  | HRST 1 | 8h |  |  |
| 92 | 1.3.2.3.2 | Configurar o mapa de rota |  | 1d | 2015-05-19 | 2015-05-19 | 91 | 2012-08-07 | 2012-08-07 | 0d |  | HRST 1 | 8h |  |  |
| 93 | 1.3.2.3.3 | Configurar Formulários |  | 1d | 2015-05-20 | 2015-05-20 | 92 | 2012-08-07 | 2012-08-07 | 0d |  | HRST 1 | 8h |  |  |
| 94 | 1.3.2.3.4 | Configurar permissões |  | 1d | 2015-05-21 | 2015-05-21 | 93 | 2012-08-07 | 2012-08-07 | 0d |  | HRST 1 | 8h |  |  |
| 95 | 1.3.2.3.5 | Definir layout para importar a Biblioteca de Metas |  | 1d | 2015-05-22 | 2015-05-22 | 94 | 2012-08-07 | 2012-08-07 | 0d |  | HRST 1 | 8h |  |  |
| 96 | 1.3.2.3.6 | Definir layout para carga de empregados |  | 1d | 2015-05-25 | 2015-05-25 | 95 | 2012-08-07 | 2012-08-07 | 0d |  | HRST 1 | 8h |  |  |
| 97 | 1.3.2.3.7 | Passar para Votorantim informações para carga de fotos |  | 1d | 2015-05-26 | 2015-05-26 | 96 | 2012-08-07 | 2012-08-07 | 0d |  | HRST 1 | 8h |  |  |
| 98 | 1.3.2.3.8 | Fazer a carga de metas |  | 1d | 2015-05-27 | 2015-05-27 | 97 | 2012-08-07 | 2012-08-07 | 0d |  | HRST 1 | 8h |  |  |
| 99 | 1.3.2.3.9 | Fazer a carga de empregados |  | 1d | 2015-05-28 | 2015-05-28 | 98 | 2012-08-07 | 2012-08-07 | 0d |  | HRST 1 | 8h |  |  |
| 100 | 1.3.2.3.10 | Agendar job para carga de fotos |  | 2d | 2015-05-29 | 2015-06-01 | 99 | 2012-08-07 | 2012-08-07 | 0d |  | HRST 1 | 16h |  |  |
| 101 | 1.3.2.3.11 | Configurar Relatórios |  | 2d | 2015-06-02 | 2015-06-03 | 100 | 2012-08-07 | 2012-08-07 | 0d |  | HRST 1 | 16h |  |  |
| 102 | 1.3.2.3.12 | Onda 2 - Entrega Fase 3 - Realização - VID São Paulo e Curitiba | milestone | 0d | 2015-06-03 | 2015-06-03 | 101 | 2012-08-07 | 2012-08-07 | 35d |  |  |  | 0% | 0% |
| 103 | 1.3.2.4 | **VE** |  | 6.5d | 2015-05-26 | 2015-06-03 |  | 2012-08-07 | 2012-08-07 | 35.5d |  |  | 52h |  |  |
| 104 | 1.3.2.4.1 | Alteração de label na instância |  | 0.5d | 2015-05-26 | 2015-05-26 | 75 | 2012-08-07 | 2012-08-07 | 35.5d | 0d | HRST 2 | 4h |  |  |
| 105 | 1.3.2.4.2 | Configurar o mapa de rota |  | 0.5d | 2015-05-26 | 2015-05-26 | 104 | 2012-08-07 | 2012-08-07 | 35.5d | 0d | HRST 2 | 4h |  |  |
| 106 | 1.3.2.4.3 | Configurar Formulários |  | 1d | 2015-05-27 | 2015-05-27 | 105 | 2012-08-07 | 2012-08-07 | 35.5d | 0d | HRST 2 | 8h |  |  |
| 107 | 1.3.2.4.4 | Configurar permissões |  | 0.5d | 2015-05-28 | 2015-05-28 | 106 | 2012-08-07 | 2012-08-07 | 35.5d | 0d | HRST 2 | 4h |  |  |
| 108 | 1.3.2.4.5 | Definir layout para importar a Biblioteca de Metas |  | 0.5d | 2015-05-28 | 2015-05-28 | 107 | 2012-08-07 | 2012-08-07 | 35.5d | 0d | HRST 2 | 4h |  |  |
| 109 | 1.3.2.4.6 | Definir layout para carga de empregados |  | 0.5d | 2015-05-29 | 2015-05-29 | 108 | 2012-08-07 | 2012-08-07 | 35.5d | 0d | HRST 2 | 4h |  |  |
| 110 | 1.3.2.4.7 | Passar para Votorantim informações para carga de fotos |  | 0.5d | 2015-05-29 | 2015-05-29 | 109 | 2012-08-07 | 2012-08-07 | 35.5d | 0d | HRST 2 | 4h |  |  |
| 111 | 1.3.2.4.8 | Fazer a carga de metas |  | 0.5d | 2015-06-01 | 2015-06-01 | 110 | 2012-08-07 | 2012-08-07 | 35.5d | 0d | HRST 2 | 4h |  |  |
| 112 | 1.3.2.4.9 | Fazer a carga de empregados |  | 0.5d | 2015-06-01 | 2015-06-01 | 111 | 2012-08-07 | 2012-08-07 | 35.5d | 0d | HRST 2 | 4h |  |  |
| 113 | 1.3.2.4.10 | Agendar job para carga de fotos |  | 0.5d | 2015-06-02 | 2015-06-02 | 112 | 2012-08-07 | 2012-08-07 | 35.5d | 0d | HRST 2 | 4h |  |  |
| 114 | 1.3.2.4.11 | Configurar Relatórios |  | 1d | 2015-06-02 | 2015-06-03 | 113 | 2012-08-07 | 2012-08-07 | 35.5d | 0d | HRST 2 | 8h |  |  |
| 115 | 1.3.2.4.12 | Onda 2 - Entrega Fase 3 - Realização - VE | milestone | 0d | 2015-06-03 | 2015-06-03 | 114 | 2012-08-07 | 2012-08-07 | 35.5d |  |  |  | 0% | 0% |

| ID | WBS | Task | Type | Duration | Start | Finish | Predecessors | Baseline start | Baseline finish | Baseline duration | Baseline 1 start | Baseline 1 finish | Total slack | Free slack | Resources | Work | Baseline cost | % Planejado | % Realizado |
| --- | --- | --- | --- | --- | --- | --- | --- | --- | --- | --- | --- | --- | --- | --- | --- | --- | --- | --- | --- |
| 116 | 1.3.2.5 | **Termo de Aceite Fase 3** |  | 0d | 2015-06-03 | 2015-06-03 |  |  |  |  | 2012-08-07 | 2012-08-07 | 35.5d |  |  |  |  | 0% | 0% |
| 117 | 1.3.2.5.1 | Onda 2 - Entrega Final Fase 3 - Realização | milestone | 0d | 2015-06-03 | 2015-06-03 | 114 |  |  |  | 2012-08-07 | 2012-08-07 | 35.5d |  |  |  |  | 0% | 0% |
| 118 | 1.4 | **Fase 4 - Preparação Final** |  | 60d | 2015-04-13 | 2015-07-10 |  | 2013-07-30 | 2013-08-23 | 18.7d | 2012-08-07 | 2012-08-07 | 0d |  |  | 824h | 105.6 |  |  |
| 119 | 1.4.1 | **Testes Funcionais** |  | 40d | 2015-04-13 | 2015-06-12 |  |  |  |  | 2012-08-07 | 2012-08-07 | 0d |  |  | 88h |  |  |  |
| 120 | 1.4.1.1 | **Gestão de Competência** |  | 5d | 2015-04-13 | 2015-04-17 |  |  |  |  | 2012-08-07 | 2012-08-07 | 0d |  |  | 88h |  |  |  |
| 121 | 1.4.1.1.1 | **VS** |  | 3d | 2015-04-13 | 2015-04-15 |  |  |  |  | 2012-08-07 | 2012-08-07 | 0d |  |  | 24h |  |  |  |
| 122 | 1.4.1.1.1.1 | Realizar Testes Funcionais - VS |  | 1d | 2015-04-13 | 2015-04-13 | 60 |  |  |  | 2012-08-07 | 2012-08-07 | 0d |  | HRST 1 | 8h |  |  |  |
| 123 | 1.4.1.1.1.2 | Ajustes Testes Funcionais - VS |  | 2d | 2015-04-14 | 2015-04-15 | 122 |  |  |  | 2012-08-07 | 2012-08-07 | 0d |  | HRST 1 | 16h |  |  |  |
| 124 | 1.4.1.1.2 | **VM** |  | 3d | 2015-04-13 | 2015-04-15 |  |  |  |  | 2012-08-07 | 2012-08-07 | 67d |  |  | 24h |  |  |  |
| 125 | 1.4.1.1.2.1 | Realizar Testes Funcionais - VM |  | 1d | 2015-04-13 | 2015-04-13 | 60 |  |  |  | 2012-08-07 | 2012-08-07 | 67d | 0d | HRST 2 | 8h |  |  |  |
| 126 | 1.4.1.1.2.2 | Ajustes Testes Funcionais - VM |  | 2d | 2015-04-14 | 2015-04-15 | 125 |  |  |  | 2012-08-07 | 2012-08-07 | 67d | 0d | HRST 2 | 16h |  |  |  |
| 127 | 1.4.1.1.3 | Onda 1 - Entrega Testes Funcionais - VS e VM | milestone | 0d | 2015-04-15 | 2015-04-15 | 126 |  |  |  | 2012-08-07 | 2012-08-07 | 67d |  |  |  |  | 0% | 0% |
| 128 | 1.4.1.1.4 | **VID São Paulo e Curitiba** |  | 3d | 2015-04-13 | 2015-04-15 |  |  |  |  | 2012-08-07 | 2012-08-07 | 67d |  |  | 24h |  |  |  |
| 129 | 1.4.1.1.4.1 | Realizar Testes Funcionais - VID |  | 1d | 2015-04-13 | 2015-04-13 | 60 |  |  |  | 2012-08-07 | 2012-08-07 | 67d | 0d | HRST 3 | 8h |  |  |  |
| 130 | 1.4.1.1.4.2 | Ajustes Testes Funcionais - VID |  | 2d | 2015-04-14 | 2015-04-15 | 129 |  |  |  | 2012-08-07 | 2012-08-07 | 67d |  | HRST 3 | 16h |  |  |  |
| 131 | 1.4.1.1.5 | **VE** |  | 2d | 2015-04-16 | 2015-04-17 |  |  |  |  | 2012-08-07 | 2012-08-07 | 0d |  |  | 16h |  |  |  |
| 132 | 1.4.1.1.5.1 | Realizar Testes Funcionais - VE |  | 1d | 2015-04-16 | 2015-04-16 | 123 |  |  |  | 2012-08-07 | 2012-08-07 | 0d |  | HRST 1 | 8h |  |  |  |
| 133 | 1.4.1.1.5.2 | Ajustes Testes Funcionais - VE |  | 1d | 2015-04-17 | 2015-04-17 | 132 |  |  |  | 2012-08-07 | 2012-08-07 | 0d |  | HRST 1 | 8h |  |  |  |
| 134 | 1.4.1.1.6 | Onda 1 - Entrega Testes Funcionais - VID SP - VID CTB - VE | milestone | 0d | 2015-04-17 | 2015-04-17 | 133 |  |  |  | 2012-08-07 | 2012-08-07 | 65d |  |  |  |  | 0% | 0% |
| 135 | 1.4.1.2 | **Gestão de Metas** |  | 5d | 2015-06-08 | 2015-06-12 |  |  |  |  | 2012-08-07 | 2012-08-07 | 0d |  |  |  |  |  |  |
| 136 | 1.4.1.2.1 | **VS** |  | 3d | 2015-06-08 | 2015-06-10 |  |  |  |  | 2012-08-07 | 2012-08-07 | 0d |  |  |  |  |  |  |
| 137 | 1.4.1.2.1.1 | Realizar Testes Funcionais |  | 1d | 2015-06-08 | 2015-06-08 | 101 |  |  |  | 2012-08-07 | 2012-08-07 | 0d |  |  |  |  |  |  |
| 138 | 1.4.1.2.1.2 | Ajustes Testes Funcionais |  | 2d | 2015-06-09 | 2015-06-10 | 137 |  |  |  | 2012-08-07 | 2012-08-07 | 0d |  |  |  |  |  |  |
| 139 | 1.4.1.2.2 | **VM** |  | 3d | 2015-06-08 | 2015-06-10 |  |  |  |  | 2012-08-07 | 2012-08-07 | 32d |  |  |  |  |  |  |
| 140 | 1.4.1.2.2.1 | Realizar Testes Funcionais |  | 1d | 2015-06-08 | 2015-06-08 | 101 |  |  |  | 2012-08-07 | 2012-08-07 | 32d | 0d |  |  |  |  |  |
| 141 | 1.4.1.2.2.2 | Ajustes Testes Funcionais |  | 2d | 2015-06-09 | 2015-06-10 | 140 |  |  |  | 2012-08-07 | 2012-08-07 | 32d | 0d |  |  |  |  |  |
| 142 | 1.4.1.2.3 | Onda 2 - Entrega Testes Funcionais - VS e VM | milestone | 0d | 2015-06-10 | 2015-06-10 | 141 |  |  |  | 2012-08-07 | 2012-08-07 | 32d |  |  |  |  | 0% | 0% |

| ID | WBS | Task | Type | Duration | Start | Finish | Predecessors | Baseline 1 start | Baseline 1 finish | Total slack | Free slack | Resources | Work | % Planejado | % Realizado |
| --- | --- | --- | --- | --- | --- | --- | --- | --- | --- | --- | --- | --- | --- | --- | --- |
| 143 | 1.4.1.2.4 | **VID São Paulo e Curitiba** |  | 3d | 2015-06-08 | 2015-06-10 |  | 2012-08-07 | 2012-08-07 | 32d |  |  |  |  |  |
| 144 | 1.4.1.2.4.1 | Realizar Testes Funcionais |  | 1d | 2015-06-08 | 2015-06-08 | 101 | 2012-08-07 | 2012-08-07 | 32d | 0d |  |  |  |  |
| 145 | 1.4.1.2.4.2 | Ajustes Testes Funcionais |  | 2d | 2015-06-09 | 2015-06-10 | 144 | 2012-08-07 | 2012-08-07 | 32d |  |  |  |  |  |
| 146 | 1.4.1.2.5 | **VE** |  | 2d | 2015-06-11 | 2015-06-12 |  | 2012-08-07 | 2012-08-07 | 0d |  |  |  |  |  |
| 147 | 1.4.1.2.5.1 | Realizar Testes Funcionais |  | 1d | 2015-06-11 | 2015-06-11 | 138 | 2012-08-07 | 2012-08-07 | 0d |  |  |  |  |  |
| 148 | 1.4.1.2.5.2 | Ajustes Testes Funcionais |  | 1d | 2015-06-12 | 2015-06-12 | 147 | 2012-08-07 | 2012-08-07 | 0d |  |  |  |  |  |
| 149 | 1.4.1.2.6 | Onda 2 - Entrega Testes Funcionais - VID SP - VID CTB - VE | milestone | 0d | 2015-06-12 | 2015-06-12 | 148 | 2012-08-07 | 2012-08-07 | 30d |  |  |  | 0% | 0% |
| 150 | 1.4.2 | **Testes Unitários** |  | 45d | 2015-04-22 | 2015-06-26 |  | 2012-08-07 | 2012-08-07 | 0d |  |  | 216h |  |  |
| 151 | 1.4.2.1 | **Gestão de Competência** |  | 7d | 2015-04-22 | 2015-04-30 |  | 2012-08-07 | 2012-08-07 | 0d |  |  | 152h |  |  |
| 152 | 1.4.2.1.1 | **VS** |  | 5d | 2015-04-22 | 2015-04-28 |  | 2012-08-07 | 2012-08-07 | 0d |  |  | 56h |  |  |
| 153 | 1.4.2.1.1.1 | Realizar Testes Unitários |  | 2d | 2015-04-22 | 2015-04-23 | 133 | 2012-08-07 | 2012-08-07 | 0d |  | HRST 1; Juraci Silva | 32h |  |  |
| 154 | 1.4.2.1.1.2 | Ajustes Testes Unitários |  | 3d | 2015-04-24 | 2015-04-28 | 153 | 2012-08-07 | 2012-08-07 | 60d |  | HRST 1 | 24h |  |  |
| 155 | 1.4.2.1.2 | **VM** |  | 3d | 2015-04-24 | 2015-04-28 |  | 2012-08-07 | 2012-08-07 | 0d |  |  | 32h |  |  |
| 156 | 1.4.2.1.2.1 | Realizar Testes Unitários |  | 1d | 2015-04-24 | 2015-04-24 | 153 | 2012-08-07 | 2012-08-07 | 0d |  | HRST 2; Juraci Silva | 16h |  |  |
| 157 | 1.4.2.1.2.2 | Ajustes Testes Unitários |  | 2d | 2015-04-27 | 2015-04-28 | 156 | 2012-08-07 | 2012-08-07 | 60d | 0d | HRST 2 | 16h |  |  |
| 158 | 1.4.2.1.3 | Onda 1 - Entrega Testes Unitários - VS e VM | milestone | 0d | 2015-04-28 | 2015-04-28 | 157 | 2012-08-07 | 2012-08-07 | 60d |  |  |  | 0% | 0% |
| 159 | 1.4.2.1.4 | **VID São Paulo e Curitiba** |  | 3d | 2015-04-27 | 2015-04-29 |  | 2012-08-07 | 2012-08-07 | 0d |  |  | 32h |  |  |
| 160 | 1.4.2.1.4.1 | Realizar Testes Unitários |  | 1d | 2015-04-27 | 2015-04-27 | 156 | 2012-08-07 | 2012-08-07 | 0d |  | HRST 3; Juraci Silva | 16h |  |  |
| 161 | 1.4.2.1.4.2 | Ajustes Testes Unitários |  | 2d | 2015-04-28 | 2015-04-29 | 160 | 2012-08-07 | 2012-08-07 | 59d |  | HRST 3 | 16h |  |  |
| 162 | 1.4.2.1.5 | **VE** |  | 3d | 2015-04-28 | 2015-04-30 |  | 2012-08-07 | 2012-08-07 | 0d |  |  | 32h |  |  |
| 163 | 1.4.2.1.5.1 | Realizar Testes Unitários |  | 1d | 2015-04-28 | 2015-04-28 | 160 | 2012-08-07 | 2012-08-07 | 0d |  | HRST 2; Juraci Silva | 16h |  |  |
| 164 | 1.4.2.1.5.2 | Ajustes Testes Unitários |  | 2d | 2015-04-29 | 2015-04-30 | 163 | 2012-08-07 | 2012-08-07 | 0d |  | HRST 2 | 16h |  |  |
| 165 | 1.4.2.1.6 | Onda 1 - Entrega Testes Unitários - VID SP - VID CTB - VE | milestone | 0d | 2015-04-30 | 2015-04-30 | 164 | 2012-08-07 | 2012-08-07 | 58d |  |  |  | 0% | 0% |
| 166 | 1.4.2.2 | **Gestão de Metas** |  | 10d | 2015-06-15 | 2015-06-26 |  | 2012-08-07 | 2012-08-07 | 0d |  |  | 64h |  |  |
| 167 | 1.4.2.2.1 | **VS** |  | 5d | 2015-06-15 | 2015-06-19 |  | 2012-08-07 | 2012-08-07 | 0d |  |  | 16h |  |  |
| 168 | 1.4.2.2.1.1 | Realizar Testes Unitários |  | 2d | 2015-06-15 | 2015-06-16 | 148 | 2012-08-07 | 2012-08-07 | 0d |  | Juraci Silva | 16h |  |  |
| 169 | 1.4.2.2.1.2 | Ajustes de Testes Unitários |  | 3d | 2015-06-17 | 2015-06-19 | 168 | 2012-08-07 | 2012-08-07 | 25d |  |  |  |  |  |

| ID | WBS | Task | Type | Duration | Start | Finish | Predecessors | Baseline 1 start | Baseline 1 finish | Total slack | Free slack | Resources | Work | % Planejado | % Realizado |
| --- | --- | --- | --- | --- | --- | --- | --- | --- | --- | --- | --- | --- | --- | --- | --- |
| 170 | 1.4.2.2.2 | **VM** |  | 4d | 2015-06-17 | 2015-06-22 |  | 2012-08-07 | 2012-08-07 | 0d |  |  | 16h |  |  |
| 171 | 1.4.2.2.2.1 | Realizar Testes Unitários |  | 2d | 2015-06-17 | 2015-06-18 | 168 | 2012-08-07 | 2012-08-07 | 0d |  | Juraci Silva | 16h |  |  |
| 172 | 1.4.2.2.2.2 | Ajustes de Testes Unitários |  | 2d | 2015-06-19 | 2015-06-22 | 171 | 2012-08-07 | 2012-08-07 | 24d | 0d |  |  |  |  |
| 173 | 1.4.2.2.3 | Onda 1 - Entrega Testes Unitários - VS e VM | milestone | 0d | 2015-06-22 | 2015-06-22 | 172 | 2012-08-07 | 2012-08-07 | 24d |  |  |  | 0% | 0% |
| 174 | 1.4.2.2.4 | **VID São Paulo e Curitiba** |  | 4d | 2015-06-19 | 2015-06-24 |  | 2012-08-07 | 2012-08-07 | 0d |  |  | 16h |  |  |
| 175 | 1.4.2.2.4.1 | Realizar Testes Unitários |  | 2d | 2015-06-19 | 2015-06-22 | 171 | 2012-08-07 | 2012-08-07 | 0d |  | Juraci Silva | 16h |  |  |
| 176 | 1.4.2.2.4.2 | Ajustes de Testes Unitários |  | 2d | 2015-06-23 | 2015-06-24 | 175 | 2012-08-07 | 2012-08-07 | 22d |  |  |  |  |  |
| 177 | 1.4.2.2.5 | **VE** |  | 4d | 2015-06-23 | 2015-06-26 |  | 2012-08-07 | 2012-08-07 | 0d |  |  | 16h |  |  |
| 178 | 1.4.2.2.5.1 | Realizar Testes Unitários |  | 2d | 2015-06-23 | 2015-06-24 | 175 | 2012-08-07 | 2012-08-07 | 0d |  | Juraci Silva | 16h |  |  |
| 179 | 1.4.2.2.5.2 | Ajustes de Testes Unitários |  | 2d | 2015-06-25 | 2015-06-26 | 178 | 2012-08-07 | 2012-08-07 | 0d |  |  |  |  |  |
| 180 | 1.4.2.2.6 | Onda 2 - Entrega Testes Unitários - VID SP - VID CTB - VE | milestone | 0d | 2015-06-26 | 2015-06-26 | 179 | 2012-08-07 | 2012-08-07 | 20d |  |  |  | 0% | 0% |
| 181 | 1.4.3 | **Testes Integrados** |  | 48d | 2015-05-04 | 2015-07-10 |  | 2012-08-07 | 2012-08-07 | 0d |  |  | 520h |  |  |
| 182 | 1.4.3.1 | **Gestão de Competência** |  | 10d | 2015-05-04 | 2015-05-15 |  | 2012-08-07 | 2012-08-07 | 0d |  |  | 520h |  |  |
| 183 | 1.4.3.1.1 | Testes Integrados VS |  | 5d | 2015-05-04 | 2015-05-08 | 164 | 2012-08-07 | 2012-08-07 | 48d | 0d | VS; Rodney | 80h |  |  |
| 184 | 1.4.3.1.2 | Testes Integrados VM |  | 5d | 2015-05-04 | 2015-05-08 | 164 | 2012-08-07 | 2012-08-07 | 48d | 0d | VM; Rodney | 80h |  |  |
| 185 | 1.4.3.1.3 | Testes Integrados VID São Paulo e Curitiba |  | 5d | 2015-05-04 | 2015-05-08 | 164 | 2012-08-07 | 2012-08-07 | 48d | 0d | Rodney; VID Curitiba; VID São Paulo | 120h |  |  |
| 186 | 1.4.3.1.4 | Testes Integrados VE |  | 5d | 2015-05-04 | 2015-05-08 | 164 | 2012-08-07 | 2012-08-07 | 0d |  | Rodney; VE | 80h |  |  |
| 187 | 1.4.3.1.5 | **Ajustes Testes Integrados** |  | 5d | 2015-05-11 | 2015-05-15 |  | 2012-08-07 | 2012-08-07 | 0d |  |  | 160h |  |  |
| 188 | 1.4.3.1.5.1 | VS |  | 5d | 2015-05-11 | 2015-05-15 | 183 | 2012-08-07 | 2012-08-07 | 48d |  | HRST 1 | 40h |  |  |
| 189 | 1.4.3.1.5.2 | VM |  | 5d | 2015-05-11 | 2015-05-15 | 184 | 2012-08-07 | 2012-08-07 | 48d |  | HRST 1 | 40h |  |  |
| 190 | 1.4.3.1.5.3 | VID São Paulo e Curitiba |  | 5d | 2015-05-11 | 2015-05-15 | 185 | 2012-08-07 | 2012-08-07 | 48d |  | HRST 1 | 40h |  |  |
| 191 | 1.4.3.1.5.4 | VE |  | 5d | 2015-05-11 | 2015-05-15 | 186 | 2012-08-07 | 2012-08-07 | 0d |  | HRST 1 | 40h |  |  |
| 192 | 1.4.3.1.6 | **Termo de Aceite Fase 4** |  | 0d | 2015-05-15 | 2015-05-15 |  | 2012-08-07 | 2012-08-07 | 48d |  |  |  | 0% | 0% |
| 193 | 1.4.3.1.6.1 | Onda 1 - Assinatura Fase 4 - Preparação Final | milestone | 0d | 2015-05-15 | 2015-05-15 | 191 | 2012-08-07 | 2012-08-07 | 48d |  |  |  | 0% | 0% |

| ID | WBS | Task | Type | Duration | Start | Finish | Predecessors | Baseline start | Baseline finish | Baseline duration | Baseline 1 start | Baseline 1 finish | Total slack | Free slack | Resources | Work | Baseline cost | % Planejado | % Realizado | Text29 |
| --- | --- | --- | --- | --- | --- | --- | --- | --- | --- | --- | --- | --- | --- | --- | --- | --- | --- | --- | --- | --- |
| 194 | 1.4.3.2 | **Gestão de Metas** |  | 10d | 2015-06-29 | 2015-07-10 |  |  |  |  | 2012-08-07 | 2012-08-07 | 0d |  |  |  |  |  |  |  |
| 195 | 1.4.3.2.1 | Testes Integrados VS |  | 5d | 2015-06-29 | 2015-07-03 | 179 |  |  |  | 2012-08-07 | 2012-08-07 | 10d | 0d |  |  |  |  |  |  |
| 196 | 1.4.3.2.2 | Testes Integrados VM |  | 5d | 2015-06-29 | 2015-07-03 | 179 |  |  |  | 2012-08-07 | 2012-08-07 | 10d | 0d |  |  |  |  |  |  |
| 197 | 1.4.3.2.3 | Testes Integrados VID São Paulo e Curitiba |  | 5d | 2015-06-29 | 2015-07-03 | 179 |  |  |  | 2012-08-07 | 2012-08-07 | 10d | 0d |  |  |  |  |  |  |
| 198 | 1.4.3.2.4 | Testes Integrados VE |  | 5d | 2015-06-29 | 2015-07-03 | 179 |  |  |  | 2012-08-07 | 2012-08-07 | 0d |  |  |  |  |  |  |  |
| 199 | 1.4.3.2.5 | **Ajustes Testes Integrados** |  | 5d | 2015-07-06 | 2015-07-10 |  |  |  |  | 2012-08-07 | 2012-08-07 | 0d |  |  |  |  |  |  |  |
| 200 | 1.4.3.2.5.1 | VS |  | 5d | 2015-07-06 | 2015-07-10 | 195 |  |  |  | 2012-08-07 | 2012-08-07 | 10d |  |  |  |  |  |  |  |
| 201 | 1.4.3.2.5.2 | VM |  | 5d | 2015-07-06 | 2015-07-10 | 196 |  |  |  | 2012-08-07 | 2012-08-07 | 10d |  |  |  |  |  |  |  |
| 202 | 1.4.3.2.5.3 | VID São Paulo e Curitiba |  | 5d | 2015-07-06 | 2015-07-10 | 197 |  |  |  | 2012-08-07 | 2012-08-07 | 10d |  |  |  |  |  |  |  |
| 203 | 1.4.3.2.5.4 | VE |  | 5d | 2015-07-06 | 2015-07-10 | 198 |  |  |  | 2012-08-07 | 2012-08-07 | 0d |  |  |  |  |  |  |  |
| 204 | 1.4.3.2.6 | **Termo de Aceite Fase 4** |  | 0d | 2015-07-10 | 2015-07-10 |  |  |  |  | 2012-08-07 | 2012-08-07 | 10d |  |  |  |  | 0% | 0% |  |
| 205 | 1.4.3.2.6.1 | Onda 2 - Assinatura Fase 4 - Preparação Final - VS | milestone | 0d | 2015-07-10 | 2015-07-10 | 203 |  |  |  | 2012-08-07 | 2012-08-07 | 10d |  |  |  |  | 0% | 0% |  |
| 206 | 1.5 | **Fase 5 - Go Live e Operação Assistida** |  | 48d | 2015-05-18 | 2015-07-24 |  | 2013-08-26 | 2013-09-26 | 22d | 2012-08-07 | 2012-08-07 | 0d |  |  | 40h | 176 |  |  |  |
| 207 | 1.5.1 | **Go Live - Onda 1 - Gestão de Competência** |  | 13d | 2015-05-18 | 2015-06-03 |  |  |  |  | 2012-08-07 | 2012-08-07 | 35d |  |  | 40h |  |  |  |  |
| 208 | 1.5.1.1 | Treinamento |  | 5d | 2015-05-18 | 2015-05-22 | 191 |  |  |  | 2012-08-07 | 2012-08-07 | 35d | 0d | HRST 1 | 40h |  |  |  |  |
| 209 | 1.5.1.2 | Cutover |  | 5d | 2015-05-25 | 2015-05-29 | 208 |  |  |  | 2012-08-07 | 2012-08-07 | 35d | 0d |  |  |  |  |  |  |
| 210 | 1.5.1.3 | Onda 1 - Go Live | milestone | 0d | 2015-05-29 | 2015-05-29 | 209 |  |  |  | 2012-08-07 | 2012-08-07 | 38d |  |  |  |  | 0% | 0% |  |
| 211 | 1.5.1.4 | Operação Assistida |  | 3d | 2015-06-01 | 2015-06-03 | 209 |  |  |  | 2012-08-07 | 2012-08-07 | 35d |  |  |  |  |  |  |  |
| 212 | 1.5.2 | **Go Live - Onda 2 - Gestão de Metas** |  | 10d | 2015-07-13 | 2015-07-24 |  |  |  |  | 2012-08-07 | 2012-08-07 | 0d |  |  |  |  |  |  |  |
| 213 | 1.5.2.1 | Treinamento |  | 5d | 2015-07-13 | 2015-07-17 | 203 |  |  |  | 2012-08-07 | 2012-08-07 | 5d |  |  |  |  |  |  |  |
| 214 | 1.5.2.2 | Cutover |  | 5d | 2015-07-13 | 2015-07-17 | 203 |  |  |  | 2012-08-07 | 2012-08-07 | 0d |  |  |  |  |  |  |  |
| 215 | 1.5.2.3 | Onda 2 - Go Live | milestone | 0d | 2015-07-17 | 2015-07-17 | 214 |  |  |  | 2012-08-07 | 2012-08-07 | 5d |  |  |  |  | 0% | 0% |  |
| 216 | 1.5.2.4 | Operação Assistida |  | 5d | 2015-07-20 | 2015-07-24 | 214 |  |  |  | 2012-08-07 | 2012-08-07 | 0d |  |  |  |  |  |  |  |
| 217 | 2 | **(1) Projeto Metas e Competência - VS** |  | 104d | 2015-02-09 | 2015-07-24 |  | 2012-09-18 | 2013-10-30 | 285d | 2012-08-07 | 2012-08-07 |  |  |  | 136h | 5,051.2 |  |  | 25/07 |
| 218 | 2.1 | **Fase 1 - Preparação do Projeto** |  | 10d | 2015-02-09 | 2015-02-20 |  | 2012-09-18 | 2012-10-15 | 19d | 2012-08-07 | 2012-08-07 | 84d |  |  |  | 151.2 |  |  |  |
| 219 | 2.1.1 | Confirmação e Mobilização de Equipe |  | 8d | 2015-02-09 | 2015-02-18 |  |  |  |  | 2012-08-07 | 2012-08-07 | 84d | 0d |  |  |  |  |  |  |
| 220 | 2.1.2 | Reunião Pré Kick-off |  | 1d | 2015-02-19 | 2015-02-19 | 219 |  |  |  | 2012-08-07 | 2012-08-07 | 94d | 0d |  |  |  |  |  |  |
| 221 | 2.1.3 | Kick-off |  | 1d | 2015-02-20 | 2015-02-20 | 220 |  |  |  | 2012-08-07 | 2012-08-07 | 94d |  |  |  |  |  |  |  |
| 222 | 2.1.4 | Identificação dos Usuários |  | 2d | 2015-02-19 | 2015-02-20 | 219 |  |  |  | 2012-08-07 | 2012-08-07 | 84d | 0d |  |  |  |  |  |  |

| ID | WBS | Task | Type | Duration | Start | Finish | Predecessors | Baseline start | Baseline finish | Baseline duration | Baseline 1 start | Baseline 1 finish | Total slack | Free slack | Constraint | Resources | Work | Baseline cost | % Planejado | % Realizado |
| --- | --- | --- | --- | --- | --- | --- | --- | --- | --- | --- | --- | --- | --- | --- | --- | --- | --- | --- | --- | --- |
| 223 | 2.1.5 | **Termo de Aceite Fase 1** |  | 0d | 2015-02-20 | 2015-02-20 |  |  |  |  | 2012-08-07 | 2012-08-07 | 94d |  |  |  |  |  | 100% | 0% |
| 224 | 2.1.5.1 | Assiantura Fase 1 - Preparação do Projeto | milestone | 0d | 2015-02-20 | 2015-02-20 | 222 |  |  |  | 2012-08-07 | 2012-08-07 | 94d |  |  |  |  |  | 100% | 0% |
| 225 | 2.2 | **Fase 2 - Business Blueprint** |  | 10d | 2015-02-23 | 2015-03-06 |  | 2012-09-28 | 2013-05-03 | 149.1d | 2012-08-07 | 2012-08-07 | 84d |  |  |  | 48h | 400 |  |  |
| 226 | 2.2.1 | **Levantamento Gestão de Metas** |  | 5d | 2015-02-23 | 2015-02-27 |  |  |  |  | 2012-08-07 | 2012-08-07 | 84d |  |  |  |  |  |  |  |
| 227 | 2.2.1.1 | Mapeamento dos Processos |  | 3d | 2015-02-23 | 2015-02-25 | 222 |  |  |  | 2012-08-07 | 2012-08-07 | 84d | 0d |  |  |  |  |  |  |
| 228 | 2.2.1.2 | Elaboração dos BBPs |  | 1d | 2015-02-26 | 2015-02-26 | 227 |  |  |  | 2012-08-07 | 2012-08-07 | 89d | 0d |  |  |  |  |  |  |
| 229 | 2.2.1.3 | Ajustes / Aprovação dos BBPs |  | 1d | 2015-02-27 | 2015-02-27 | 228 |  |  |  | 2012-08-07 | 2012-08-07 | 89d |  |  |  |  |  |  |  |
| 230 | 2.2.2 | **Levantamento Gestão de Competência** |  | 7d | 2015-02-26 | 2015-03-06 |  |  |  |  | 2012-08-07 | 2012-08-07 | 84d |  |  |  | 48h |  |  |  |
| 231 | 2.2.2.1 | Mapeamento dos Processos |  | 4d | 2015-02-26 | 2015-03-03 | 227 |  |  |  | 2012-08-07 | 2012-08-07 | 84d | 0d |  |  |  |  |  |  |
| 232 | 2.2.2.2 | **Elaboração dos BBPs** |  | 1d | 2015-03-04 | 2015-03-04 |  |  |  |  | 2012-08-07 | 2012-08-07 | 84d |  |  |  | 16h |  |  |  |
| 233 | 2.2.2.2.1 | EP |  | 0.5d | 2015-03-04 | 2015-03-04 | 231 |  |  |  | 2012-08-07 | 2012-08-07 | 86d | 0d |  | HRST 1 | 4h |  |  |  |
| 234 | 2.2.2.2.2 | PDI |  | 0.5d | 2015-03-04 | 2015-03-04 | 233 |  |  |  | 2012-08-07 | 2012-08-07 | 86d |  |  | HRST 1 | 4h |  |  |  |
| 235 | 2.2.2.2.3 | Competência |  | 0.5d | 2015-03-04 | 2015-03-04 | 231 |  |  |  | 2012-08-07 | 2012-08-07 | 84d | 0d |  | HRST 2 | 4h |  |  |  |
| 236 | 2.2.2.2.4 | Sucessão |  | 0.5d | 2015-03-04 | 2015-03-04 | 235 |  |  |  | 2012-08-07 | 2012-08-07 | 84d | 0d |  | HRST 2 | 4h |  |  |  |
| 237 | 2.2.2.3 | **Ajustes / Aprovação dos BBPs** |  | 2d | 2015-03-05 | 2015-03-06 |  |  |  |  | 2012-08-07 | 2012-08-07 | 84d |  |  |  | 32h |  |  |  |
| 238 | 2.2.2.3.1 | EP |  | 1d | 2015-03-05 | 2015-03-05 | 236 |  |  |  | 2012-08-07 | 2012-08-07 | 84d | 0d |  | HRST 1 | 8h |  |  |  |
| 239 | 2.2.2.3.2 | PDI |  | 1d | 2015-03-06 | 2015-03-06 | 238 |  |  |  | 2012-08-07 | 2012-08-07 | 84d |  |  | HRST 1 | 8h |  |  |  |
| 240 | 2.2.2.3.3 | Competência |  | 1d | 2015-03-05 | 2015-03-05 | 236 |  |  |  | 2012-08-07 | 2012-08-07 | 84d | 0d |  | HRST 2 | 8h |  |  |  |
| 241 | 2.2.2.3.4 | Sucessão |  | 1d | 2015-03-06 | 2015-03-06 | 240 |  |  |  | 2012-08-07 | 2012-08-07 | 84d | 0d |  | HRST 2 | 8h |  |  |  |
| 242 | 2.2.2.4 | **Termo de Aceite Fase 2** |  | 0d | 2015-03-06 | 2015-03-06 |  |  |  |  | 2012-08-07 | 2012-08-07 | 84d |  |  |  |  |  | 100% | 0% |
| 243 | 2.2.2.4.1 | Assinatura Fase 2 - Business Blueprint | milestone | 0d | 2015-03-06 | 2015-03-06 | 241 |  |  |  | 2012-08-07 | 2012-08-07 | 84d |  |  |  |  |  | 100% | 0% |
| 244 | 2.3 | **Fase 3 - Realização** |  | 42d | 2015-03-23 | 2015-05-25 |  | 2013-06-21 | 2013-10-01 | 71.5d | 2012-08-07 | 2012-08-07 | 42d |  |  |  | 88h | 1,736 |  |  |
| 245 | 2.3.1 | **Gestão de Competência VS** |  | 14d | 2015-03-23 | 2015-04-10 |  |  |  |  | 2012-08-07 | 2012-08-07 | 67d |  |  |  |  |  |  |  |
| 246 | 2.3.1.1 | Configurar EP (Employee Profile) - VS |  | 5d | 2015-03-23 | 2015-03-27 |  |  |  |  | 2012-08-07 | 2012-08-07 | 67d | 0d | start no earlier than 2015-03-23 |  |  |  |  |  |
| 247 | 2.3.1.2 | Configurar PDI (Palno de Desenvolvimento Individual) - VS |  | 5d | 2015-03-23 | 2015-03-27 |  |  |  |  | 2012-08-07 | 2012-08-07 | 67d | 0d | start no earlier than 2015-03-23 |  |  |  |  |  |
| 248 | 2.3.1.3 | Configurar Sucessão - VS |  | 5d | 2015-03-30 | 2015-04-06 | 246, 247 |  |  |  | 2012-08-07 | 2012-08-07 | 74d |  |  |  |  |  |  |  |
| 249 | 2.3.1.4 | Configurar PM - VS |  | 7d | 2015-03-30 | 2015-04-08 | 246, 247 |  |  |  | 2012-08-07 | 2012-08-07 | 67d | 0d |  |  |  |  |  |  |

| ID | WBS | Task | Type | Duration | Start | Finish | Predecessors | Baseline start | Baseline finish | Baseline duration | Baseline 1 start | Baseline 1 finish | Total slack | Free slack | Resources | Work | Baseline cost | % Planejado | % Realizado |
| --- | --- | --- | --- | --- | --- | --- | --- | --- | --- | --- | --- | --- | --- | --- | --- | --- | --- | --- | --- |
| 250 | 2.3.1.5 | **Configurar Relatórios** |  | 2d | 2015-04-09 | 2015-04-10 |  |  |  |  | 2012-08-07 | 2012-08-07 | 67d |  |  |  |  |  |  |
| 251 | 2.3.1.5.1 | Cópia dos Relatórios da VC - VS |  | 0.5d | 2015-04-09 | 2015-04-09 | 249 |  |  |  | 2012-08-07 | 2012-08-07 | 67d | 0d |  |  |  |  |  |
| 252 | 2.3.1.5.2 | Escala - Descrição e Pontuação - VS |  | 0.5d | 2015-04-09 | 2015-04-09 | 251 |  |  |  | 2012-08-07 | 2012-08-07 | 67d | 0d |  |  |  |  |  |
| 253 | 2.3.1.5.3 | Comparativo entre Desempenho na Função e Crenças - VS |  | 1d | 2015-04-10 | 2015-04-10 | 252 |  |  |  | 2012-08-07 | 2012-08-07 | 67d | 0d |  |  |  |  |  |
| 254 | 2.3.1.6 | Desenvolvimento Abap - Ajustes Integração |  | 9d | 2015-03-30 | 2015-04-10 | 246, 247 |  |  |  |  |  | 70d | 0d |  |  |  |  |  |
| 255 | 2.3.1.7 | **Termo de Aceite Fase 3 - Realização** |  | 0d | 2015-04-10 | 2015-04-10 |  |  |  |  | 2012-08-07 | 2012-08-07 | 70d |  |  |  |  | 0% | 0% |
| 256 | 2.3.1.7.1 | Onda 1 - Assinatura Fase 3 - Realização - VS | milestone | 0d | 2015-04-10 | 2015-04-10 | 254 |  |  |  | 2012-08-07 | 2012-08-07 | 70d |  |  |  |  | 0% | 0% |
| 257 | 2.3.2 | **Gestão de Metas VS** |  | 11d | 2015-05-11 | 2015-05-25 |  |  |  |  | 2012-08-07 | 2012-08-07 | 42d |  |  | 88h |  |  |  |
| 258 | 2.3.2.1 | Alteração de label na instância |  | 1d | 2015-05-11 | 2015-05-11 | 292 |  |  |  | 2012-08-07 | 2012-08-07 | 42d | 0d | HRST 2 | 8h |  |  |  |
| 259 | 2.3.2.2 | Configurar o mapa de rota |  | 1d | 2015-05-12 | 2015-05-12 | 258 |  |  |  | 2012-08-07 | 2012-08-07 | 42d | 0d | HRST 2 | 8h |  |  |  |
| 260 | 2.3.2.3 | Configurar Formulários |  | 1d | 2015-05-13 | 2015-05-13 | 259 |  |  |  | 2012-08-07 | 2012-08-07 | 42d | 0d | HRST 2 | 8h |  |  |  |
| 261 | 2.3.2.4 | Configurar permissões |  | 1d | 2015-05-14 | 2015-05-14 | 260 |  |  |  | 2012-08-07 | 2012-08-07 | 42d | 0d | HRST 2 | 8h |  |  |  |
| 262 | 2.3.2.5 | Definir layout para importar a Biblioteca de Metas |  | 1d | 2015-05-15 | 2015-05-15 | 261 |  |  |  | 2012-08-07 | 2012-08-07 | 42d | 0d | HRST 2 | 8h |  |  |  |
| 263 | 2.3.2.6 | Definir layout para carga de empregados |  | 1d | 2015-05-18 | 2015-05-18 | 262 |  |  |  | 2012-08-07 | 2012-08-07 | 42d | 0d | HRST 2 | 8h |  |  |  |
| 264 | 2.3.2.7 | Passar para Votorantim informações para carga de fotos |  | 1d | 2015-05-19 | 2015-05-19 | 263 |  |  |  | 2012-08-07 | 2012-08-07 | 42d | 0d | HRST 2 | 8h |  |  |  |
| 265 | 2.3.2.8 | Fazer a carga de metas |  | 1d | 2015-05-20 | 2015-05-20 | 264 |  |  |  | 2012-08-07 | 2012-08-07 | 42d | 0d | HRST 2 | 8h |  |  |  |
| 266 | 2.3.2.9 | Fazer a carga de empregados |  | 1d | 2015-05-21 | 2015-05-21 | 265 |  |  |  | 2012-08-07 | 2012-08-07 | 42d | 0d | HRST 2 | 8h |  |  |  |
| 267 | 2.3.2.10 | Agendar job para carga de fotos |  | 1d | 2015-05-22 | 2015-05-22 | 266 |  |  |  | 2012-08-07 | 2012-08-07 | 42d | 0d | HRST 2 | 8h |  |  |  |
| 268 | 2.3.2.11 | Configurar Relatórios |  | 1d | 2015-05-25 | 2015-05-25 | 267 |  |  |  | 2012-08-07 | 2012-08-07 | 42d | 0d | HRST 2 | 8h |  |  |  |
| 269 | 2.3.2.12 | **Onda 2 - Termo de Aceite - Realização** |  | 0d | 2015-05-25 | 2015-05-25 |  |  |  |  | 2012-08-07 | 2012-08-07 | 42d |  |  |  |  | 0% | 0% |
| 270 | 2.3.2.12.1 | Onda 2 - Entrega Fase 3 - Realização - VS | milestone | 0d | 2015-05-25 | 2015-05-25 | 268 |  |  |  | 2012-08-07 | 2012-08-07 | 42d |  |  |  |  | 0% | 0% |
| 271 | 2.4 | **Fase 4 - Preparação Final** |  | 60d | 2015-04-13 | 2015-07-10 |  | 2013-09-12 | 2013-09-30 | 12d | 2012-08-07 | 2012-08-07 | 5d |  |  |  | 276 |  |  |
| 272 | 2.4.1 | **Testes Funcionais** |  | 38d | 2015-04-13 | 2015-06-10 |  |  |  |  | 2012-08-07 | 2012-08-07 | 32d |  |  |  |  |  |  |
| 273 | 2.4.1.1 | **Gestão de Competência VS** |  | 3d | 2015-04-13 | 2015-04-15 |  |  |  |  | 2012-08-07 | 2012-08-07 | 67d |  |  |  |  |  |  |
| 274 | 2.4.1.1.1 | Realizar Testes Funcionais - VS |  | 1d | 2015-04-13 | 2015-04-13 | 253 |  |  |  | 2012-08-07 | 2012-08-07 | 67d | 0d |  |  |  |  |  |
| 275 | 2.4.1.1.2 | Ajustes Testes Funcionais - VS |  | 2d | 2015-04-14 | 2015-04-15 | 274 |  |  |  | 2012-08-07 | 2012-08-07 | 67d | 0d |  |  |  |  |  |
| 276 | 2.4.1.1.3 | Onda 1 - Entrega Testes Funcionais - VS | milestone | 0d | 2015-04-15 | 2015-04-15 | 275 |  |  |  | 2012-08-07 | 2012-08-07 | 67d |  |  |  |  | 0% | 0% |

| ID | WBS | Task | Type | Duration | Start | Finish | Predecessors | Baseline 1 start | Baseline 1 finish | Total slack | Free slack | Constraint | % Planejado | % Realizado |
| --- | --- | --- | --- | --- | --- | --- | --- | --- | --- | --- | --- | --- | --- | --- |
| 277 | 2.4.1.2 | **Gestão de Metas VS** |  | 3d | 2015-06-08 | 2015-06-10 |  | 2012-08-07 | 2012-08-07 | 32d |  |  |  |  |
| 278 | 2.4.1.2.1 | Realizar Testes Funcionais |  | 1d | 2015-06-08 | 2015-06-08 |  | 2012-08-07 | 2012-08-07 | 32d | 0d | start no earlier than 2015-06-08 |  |  |
| 279 | 2.4.1.2.2 | Ajustes Testes Funcionais |  | 2d | 2015-06-09 | 2015-06-10 | 278 | 2012-08-07 | 2012-08-07 | 32d | 0d |  |  |  |
| 280 | 2.4.1.2.3 | Onda 2 - Entrega Testes Funcionais - VS | milestone | 0d | 2015-06-10 | 2015-06-10 | 279 | 2012-08-07 | 2012-08-07 | 32d |  |  | 0% | 0% |
| 281 | 2.4.2 | **Testes Unitários** |  | 40d | 2015-04-22 | 2015-06-19 |  | 2012-08-07 | 2012-08-07 | 0d |  |  |  |  |
| 282 | 2.4.2.1 | **Gestão de Competência VS** |  | 5d | 2015-04-22 | 2015-04-28 |  | 2012-08-07 | 2012-08-07 | 0d |  |  |  |  |
| 283 | 2.4.2.1.1 | Realizar Testes Unitários - VS | manual | 2d | 2015-04-22 | 2015-04-23 |  | 2012-08-07 | 2012-08-07 |  |  | start no earlier than 2015-04-22 |  |  |
| 284 | 2.4.2.1.2 | Ajustes Testes Unitários - VS |  | 3d | 2015-04-24 | 2015-04-28 | 283 | 2012-08-07 | 2012-08-07 | 60d | 0d |  |  |  |
| 285 | 2.4.2.1.3 | Onda 1 - Entrega Testes Unitários - VS | milestone | 0d | 2015-04-28 | 2015-04-28 | 284 | 2012-08-07 | 2012-08-07 | 60d |  |  | 0% | 0% |
| 286 | 2.4.2.2 | **Gestão de Metas VS** |  | 5d | 2015-06-15 | 2015-06-19 |  | 2012-08-07 | 2012-08-07 | 25d |  |  |  |  |
| 287 | 2.4.2.2.1 | Realizar Testes Unitários - VS |  | 2d | 2015-06-15 | 2015-06-16 |  | 2012-08-07 | 2012-08-07 | 25d | 0d | start no earlier than 2015-06-15 |  |  |
| 288 | 2.4.2.2.2 | Ajustes de Testes Unitários - VS |  | 3d | 2015-06-17 | 2015-06-19 | 287 | 2012-08-07 | 2012-08-07 | 25d | 0d |  |  |  |
| 289 | 2.4.2.2.3 | Onda 2 - Entrega Testes Unitários - VS | milestone | 0d | 2015-06-19 | 2015-06-19 | 288 | 2012-08-07 | 2012-08-07 | 25d |  |  | 0% | 0% |
| 290 | 2.4.3 | **Testes Integrados** |  | 48d | 2015-05-04 | 2015-07-10 |  | 2012-08-07 | 2012-08-07 | 10d |  |  |  |  |
| 291 | 2.4.3.1 | **Gestão de Competência VS** |  | 10d | 2015-05-04 | 2015-05-15 |  | 2012-08-07 | 2012-08-07 | 35d |  |  |  |  |
| 292 | 2.4.3.1.1 | Testes Integrados VS |  | 5d | 2015-05-04 | 2015-05-08 |  | 2012-08-07 | 2012-08-07 | 35d | 0d | start no earlier than 2015-05-04 |  |  |
| 293 | 2.4.3.1.2 | Ajustes Testes Integrados VS |  | 5d | 2015-05-11 | 2015-05-15 | 292 | 2012-08-07 | 2012-08-07 | 35d | 0d |  |  |  |
| 294 | 2.4.3.1.3 | **Onda 1 - Termo de Aceite Fase 4** |  | 0d | 2015-05-15 | 2015-05-15 |  | 2012-08-07 | 2012-08-07 | 48d |  |  | 0% | 0% |
| 295 | 2.4.3.1.3.1 | Onda 1 - Assinatura Fase 4 - Preparação Final - VS | milestone | 0d | 2015-05-15 | 2015-05-15 | 293 | 2012-08-07 | 2012-08-07 | 48d |  |  | 0% | 0% |
| 296 | 2.4.3.2 | **Gestão de Metas VS** |  | 10d | 2015-06-29 | 2015-07-10 |  | 2012-08-07 | 2012-08-07 | 0d |  |  |  |  |
| 297 | 2.4.3.2.1 | Testes Integrados VS |  | 5d | 2015-06-29 | 2015-07-03 |  | 2012-08-07 | 2012-08-07 | 0d |  | start no earlier than 2015-06-29 |  |  |
| 298 | 2.4.3.2.2 | Ajustes Testes Integrados VS |  | 5d | 2015-07-06 | 2015-07-10 | 297 | 2012-08-07 | 2012-08-07 | 0d |  |  |  |  |
| 299 | 2.4.3.2.3 | **Onda 2 - Termo de Aceite Fase 4** |  | 0d | 2015-07-10 | 2015-07-10 |  | 2012-08-07 | 2012-08-07 | 10d |  |  | 0% | 0% |
| 300 | 2.4.3.2.3.1 | Onda 2 - Assinatura Fase 4 - Preparação Final - VS | milestone | 0d | 2015-07-10 | 2015-07-10 | 298 | 2012-08-07 | 2012-08-07 | 10d |  |  | 0% | 0% |

| ID | WBS | Task | Type | Duration | Start | Finish | Predecessors | Baseline start | Baseline finish | Baseline duration | Baseline 1 start | Baseline 1 finish | Total slack | Free slack | Baseline cost | % Planejado | % Realizado |
| --- | --- | --- | --- | --- | --- | --- | --- | --- | --- | --- | --- | --- | --- | --- | --- | --- | --- |
| 301 | 2.5 | **Fase 5 - Go Live e Operacao Assistida** |  | 48d | 2015-05-18 | 2015-07-24 |  | 2013-10-01 | 2013-10-30 | 22d | 2012-08-07 | 2012-08-07 | 0d |  | 176 |  |  |
| 302 | 2.5.1 | **Go Live - Onda 1 - Gestão de Competência** |  | 13d | 2015-05-18 | 2015-06-03 |  |  |  |  | 2012-08-07 | 2012-08-07 | 35d |  |  |  |  |
| 303 | 2.5.1.1 | Treinamento |  | 5d | 2015-05-18 | 2015-05-22 | 293 |  |  |  | 2012-08-07 | 2012-08-07 | 35d | 0d |  |  |  |
| 304 | 2.5.1.2 | Cutover |  | 5d | 2015-05-25 | 2015-05-29 | 303 |  |  |  | 2012-08-07 | 2012-08-07 | 35d | 0d |  |  |  |
| 305 | 2.5.1.3 | Onda 1 - Go Live | milestone | 0d | 2015-05-29 | 2015-05-29 | 304 |  |  |  | 2012-08-07 | 2012-08-07 | 38d |  |  | 0% | 0% |
| 306 | 2.5.1.4 | Operação Assistida |  | 3d | 2015-06-01 | 2015-06-03 | 304 |  |  |  | 2012-08-07 | 2012-08-07 | 35d |  |  |  |  |
| 307 | 2.5.2 | **Go Live - Onda 2 - Gestão de Metas** |  | 10d | 2015-07-13 | 2015-07-24 |  |  |  |  | 2012-08-07 | 2012-08-07 | 0d |  |  |  |  |
| 308 | 2.5.2.1 | Treinamento |  | 5d | 2015-07-13 | 2015-07-17 | 298 |  |  |  | 2012-08-07 | 2012-08-07 | 5d |  |  |  |  |
| 309 | 2.5.2.2 | Cutover |  | 5d | 2015-07-13 | 2015-07-17 | 298 |  |  |  | 2012-08-07 | 2012-08-07 | 0d |  |  |  |  |
| 310 | 2.5.2.3 | Onda 2 - Go Live | milestone | 0d | 2015-07-17 | 2015-07-17 | 309 |  |  |  | 2012-08-07 | 2012-08-07 | 5d |  |  | 0% | 0% |
| 311 | 2.5.2.4 | Operação Assistida |  | 5d | 2015-07-20 | 2015-07-24 | 309 |  |  |  | 2012-08-07 | 2012-08-07 | 0d |  |  |  |  |
| 312 | 3 | **(2) Projeto Metas e Competência - VM** |  | 104d | 2015-02-09 | 2015-07-24 |  | 2013-07-08 | 2013-12-02 | 104.85d | 2012-08-07 | 2012-08-07 |  |  | 5,033.64 |  |  |
| 313 | 3.1 | **Fase 1 - Preparação do Projeto** |  | 10d | 2015-02-09 | 2015-02-20 |  | 2013-07-08 | 2013-07-22 | 11d | 2012-08-07 | 2012-08-07 | 84d |  | 128 |  |  |
| 314 | 3.1.1 | Confirmação e Mobilização de Equipe |  | 8d | 2015-02-09 | 2015-02-18 |  |  |  |  | 2012-08-07 | 2012-08-07 | 84d | 0d |  |  |  |
| 315 | 3.1.2 | Reunião Pré Kick-off |  | 1d | 2015-02-19 | 2015-02-19 | 314 |  |  |  | 2012-08-07 | 2012-08-07 | 94d | 0d |  |  |  |
| 316 | 3.1.3 | Kick-Off |  | 1d | 2015-02-20 | 2015-02-20 | 315 |  |  |  | 2012-08-07 | 2012-08-07 | 94d |  |  |  |  |
| 317 | 3.1.4 | Identificação dos Usuários |  | 2d | 2015-02-19 | 2015-02-20 | 314 |  |  |  | 2012-08-07 | 2012-08-07 | 84d | 0d |  |  |  |
| 318 | 3.1.5 | **Termo de Aceite Fase 1** |  | 0d | 2015-02-20 | 2015-02-20 |  |  |  |  | 2012-08-07 | 2012-08-07 | 94d |  |  | 100% | 0% |
| 319 | 3.1.5.1 | Assinatura Fase 1 - Preparação do Projeto | milestone | 0d | 2015-02-20 | 2015-02-20 | 317 |  |  |  | 2012-08-07 | 2012-08-07 | 94d |  |  | 100% | 0% |
| 320 | 3.2 | **Fase 2 - Business Blueprint** |  | 10d | 2015-02-23 | 2015-03-06 |  | 2013-07-23 | 2013-08-20 | 20.75d | 2012-08-07 | 2012-08-07 | 84d |  | 166 |  |  |
| 321 | 3.2.1 | **Levantamento Gestão de Metas** |  | 5d | 2015-02-23 | 2015-02-27 |  |  |  |  | 2012-08-07 | 2012-08-07 | 84d |  |  |  |  |
| 322 | 3.2.1.1 | Mapeamento dos Processos |  | 3d | 2015-02-23 | 2015-02-25 | 317 |  |  |  | 2012-08-07 | 2012-08-07 | 84d | 0d |  |  |  |
| 323 | 3.2.1.2 | Elaboração dos BBPs |  | 1d | 2015-02-26 | 2015-02-26 | 322 |  |  |  | 2012-08-07 | 2012-08-07 | 89d | 0d |  |  |  |
| 324 | 3.2.1.3 | Ajustes / Aprovação dos BBPs |  | 1d | 2015-02-27 | 2015-02-27 | 323 |  |  |  | 2012-08-07 | 2012-08-07 | 89d |  |  |  |  |

| ID | WBS | Task | Type | Duration | Start | Finish | Predecessors | Baseline start | Baseline finish | Baseline duration | Baseline 1 start | Baseline 1 finish | Total slack | Free slack | Constraint | Baseline cost | % Planejado | % Realizado |
| --- | --- | --- | --- | --- | --- | --- | --- | --- | --- | --- | --- | --- | --- | --- | --- | --- | --- | --- |
| 325 | 3.2.2 | **Levantamento Gestão de Competência** |  | 7d | 2015-02-26 | 2015-03-06 |  |  |  |  | 2012-08-07 | 2012-08-07 | 84d |  |  |  |  |  |
| 326 | 3.2.2.1 | Mapeamento dos Processos |  | 4d | 2015-02-26 | 2015-03-03 | 322 |  |  |  | 2012-08-07 | 2012-08-07 | 84d | 0d |  |  |  |  |
| 327 | 3.2.2.2 | **Elaboração dos BBPs** |  | 1d | 2015-03-04 | 2015-03-04 |  |  |  |  | 2012-08-07 | 2012-08-07 | 84d |  |  |  |  |  |
| 328 | 3.2.2.2.1 | EP |  | 0.5d | 2015-03-04 | 2015-03-04 | 326 |  |  |  | 2012-08-07 | 2012-08-07 | 86d | 0d |  |  |  |  |
| 329 | 3.2.2.2.2 | PDI |  | 0.5d | 2015-03-04 | 2015-03-04 | 328 |  |  |  | 2012-08-07 | 2012-08-07 | 86d |  |  |  |  |  |
| 330 | 3.2.2.2.3 | Competência |  | 0.5d | 2015-03-04 | 2015-03-04 | 326 |  |  |  | 2012-08-07 | 2012-08-07 | 84d | 0d |  |  |  |  |
| 331 | 3.2.2.2.4 | Sucessão |  | 0.5d | 2015-03-04 | 2015-03-04 | 330 |  |  |  | 2012-08-07 | 2012-08-07 | 84d | 0d |  |  |  |  |
| 332 | 3.2.2.3 | **Ajustes / Aprovação dos BBPs** |  | 2d | 2015-03-05 | 2015-03-06 |  |  |  |  | 2012-08-07 | 2012-08-07 | 84d |  |  |  |  |  |
| 333 | 3.2.2.3.1 | EP |  | 1d | 2015-03-05 | 2015-03-05 | 331 |  |  |  | 2012-08-07 | 2012-08-07 | 84d | 0d |  |  |  |  |
| 334 | 3.2.2.3.2 | PDI |  | 1d | 2015-03-06 | 2015-03-06 | 333 |  |  |  | 2012-08-07 | 2012-08-07 | 84d |  |  |  |  |  |
| 335 | 3.2.2.3.3 | Competência |  | 1d | 2015-03-05 | 2015-03-05 | 331 |  |  |  | 2012-08-07 | 2012-08-07 | 84d | 0d |  |  |  |  |
| 336 | 3.2.2.3.4 | Sucessão |  | 1d | 2015-03-06 | 2015-03-06 | 335 |  |  |  | 2012-08-07 | 2012-08-07 | 84d | 0d |  |  |  |  |
| 337 | 3.2.2.4 | **Termo de Aceite Fase 2** |  | 0d | 2015-03-06 | 2015-03-06 |  |  |  |  | 2012-08-07 | 2012-08-07 | 84d |  |  |  | 100% | 0% |
| 338 | 3.2.2.4.1 | Assinatura Fase 2 - Business Blueprint | milestone | 0d | 2015-03-06 | 2015-03-06 | 336 |  |  |  | 2012-08-07 | 2012-08-07 | 84d |  |  |  | 100% | 0% |
| 339 | 3.3 | **Fase 3 - Realização** |  | 42d | 2015-03-23 | 2015-05-25 |  | 2013-07-29 | 2013-10-17 | 58d | 2012-08-07 | 2012-08-07 |  |  |  | 3,792.8 |  |  |
| 340 | 3.3.1 | **Gestão de Competência VM** |  | 14d | 2015-03-23 | 2015-04-10 |  |  |  |  | 2012-08-07 | 2012-08-07 | 28d |  |  |  |  |  |
| 341 | 3.3.1.1 | Configurar EP (Employee Profile) - VM |  | 5d | 2015-03-23 | 2015-03-27 |  |  |  |  | 2012-08-07 | 2012-08-07 | 28d | 0d | start no earlier than 2015-03-23 |  |  |  |
| 342 | 3.3.1.2 | Configurar PDI (Palno de Desenvolvimento Individual) - VM |  | 5d | 2015-03-23 | 2015-03-27 |  |  |  |  | 2012-08-07 | 2012-08-07 | 28d | 0d | start no earlier than 2015-03-23 |  |  |  |
| 343 | 3.3.1.3 | Configurar Sucessão - VM |  | 5d | 2015-03-30 | 2015-04-06 | 341, 342 |  |  |  | 2012-08-07 | 2012-08-07 | 32d |  |  |  |  |  |
| 344 | 3.3.1.4 | Configurar PM - VM |  | 7d | 2015-03-30 | 2015-04-08 | 341, 342 |  |  |  | 2012-08-07 | 2012-08-07 | 28d | 0d |  |  |  |  |
| 345 | 3.3.1.5 | **Configurar Relatórios** |  | 2d | 2015-04-09 | 2015-04-10 |  |  |  |  | 2012-08-07 | 2012-08-07 | 28d |  |  |  |  |  |
| 346 | 3.3.1.5.1 | Cópia dos Relatórios da VC - VM |  | 0.5d | 2015-04-09 | 2015-04-09 | 344 |  |  |  | 2012-08-07 | 2012-08-07 | 28d | 0d |  |  |  |  |
| 347 | 3.3.1.5.2 | Escala - Descrição e Pontuação - VM |  | 0.5d | 2015-04-09 | 2015-04-09 | 346 |  |  |  | 2012-08-07 | 2012-08-07 | 28d | 0d |  |  |  |  |
| 348 | 3.3.1.5.3 | Comparativo entre Desempenho na Função e Crenças - VM |  | 1d | 2015-04-10 | 2015-04-10 | 347 |  |  |  | 2012-08-07 | 2012-08-07 | 28d | 0d |  |  |  |  |
| 349 | 3.3.1.6 | Desenvolvimento Abap - Ajustes Integração |  | 9d | 2015-03-30 | 2015-04-10 | 341, 342 |  |  |  |  |  | 28d | 0d |  |  |  |  |

| ID | WBS | Task | Type | Duration | Start | Finish | Predecessors | Baseline start | Baseline finish | Baseline duration | Baseline 1 start | Baseline 1 finish | Total slack | Free slack | Constraint | Baseline cost | % Planejado | % Realizado |
| --- | --- | --- | --- | --- | --- | --- | --- | --- | --- | --- | --- | --- | --- | --- | --- | --- | --- | --- |
| 350 | 3.3.1.7 | **Onda 1 - Termo de Aceite Fase 3 - Realização** |  | 0d | 2015-04-10 | 2015-04-10 |  |  |  |  | 2012-08-07 | 2012-08-07 | 28d |  |  |  | 0% | 0% |
| 351 | 3.3.1.7.1 | Onda 1 - Assinatura Fase 3 - Realização - VM | milestone | 0d | 2015-04-10 | 2015-04-10 | 349 |  |  |  | 2012-08-07 | 2012-08-07 | 28d |  |  |  | 0% | 0% |
| 352 | 3.3.2 | **Gestão de Metas VM** |  | 11d | 2015-05-11 | 2015-05-25 |  |  |  |  | 2012-08-07 | 2012-08-07 | 0d |  |  |  |  |  |
| 353 | 3.3.2.1 | Alteração de label na instância |  | 1d | 2015-05-11 | 2015-05-11 | 387 |  |  |  | 2012-08-07 | 2012-08-07 | 0d |  |  |  |  |  |
| 354 | 3.3.2.2 | Configurar o mapa de rota |  | 1d | 2015-05-12 | 2015-05-12 | 353 |  |  |  | 2012-08-07 | 2012-08-07 | 0d |  |  |  |  |  |
| 355 | 3.3.2.3 | Configurar Formulários |  | 1d | 2015-05-13 | 2015-05-13 | 354 |  |  |  | 2012-08-07 | 2012-08-07 | 0d |  |  |  |  |  |
| 356 | 3.3.2.4 | Configurar permissões |  | 1d | 2015-05-14 | 2015-05-14 | 355 |  |  |  | 2012-08-07 | 2012-08-07 | 0d |  |  |  |  |  |
| 357 | 3.3.2.5 | Definir layout para importar a Biblioteca de Metas |  | 1d | 2015-05-15 | 2015-05-15 | 356 |  |  |  | 2012-08-07 | 2012-08-07 | 0d |  |  |  |  |  |
| 358 | 3.3.2.6 | Definir layout para carga de empregados |  | 1d | 2015-05-18 | 2015-05-18 | 357 |  |  |  | 2012-08-07 | 2012-08-07 | 0d |  |  |  |  |  |
| 359 | 3.3.2.7 | Passar para Votorantim informações para carga de fotos |  | 1d | 2015-05-19 | 2015-05-19 | 358 |  |  |  | 2012-08-07 | 2012-08-07 | 0d |  |  |  |  |  |
| 360 | 3.3.2.8 | Fazer a carga de metas |  | 1d | 2015-05-20 | 2015-05-20 | 359 |  |  |  | 2012-08-07 | 2012-08-07 | 0d |  |  |  |  |  |
| 361 | 3.3.2.9 | Fazer a carga de empregados |  | 1d | 2015-05-21 | 2015-05-21 | 360 |  |  |  | 2012-08-07 | 2012-08-07 | 0d |  |  |  |  |  |
| 362 | 3.3.2.10 | Agendar job para carga de fotos |  | 1d | 2015-05-22 | 2015-05-22 | 361 |  |  |  | 2012-08-07 | 2012-08-07 | 0d |  |  |  |  |  |
| 363 | 3.3.2.11 | Configurar Relatórios |  | 1d | 2015-05-25 | 2015-05-25 | 362 |  |  |  | 2012-08-07 | 2012-08-07 | 0d |  |  |  |  |  |
| 364 | 3.3.2.12 | **Onda 2 - Termo de Aceite - Realização** |  | 0d | 2015-05-25 | 2015-05-25 |  |  |  |  | 2012-08-07 | 2012-08-07 | 0d |  |  |  | 0% | 0% |
| 365 | 3.3.2.12.1 | Onda 2 - Assinatura Fase 3 - Realização - VM | milestone | 0d | 2015-05-25 | 2015-05-25 | 363 |  |  |  | 2012-08-07 | 2012-08-07 | 0d |  |  |  | 0% | 0% |
| 366 | 3.4 | **Fase 4 - Preparação Final** |  | 60d | 2015-04-13 | 2015-07-10 |  | 2013-10-16 | 2013-10-30 | 10.25d | 2012-08-07 | 2012-08-07 | 10d |  |  | 96.4 |  |  |
| 367 | 3.4.1 | **Testes Funcionais** |  | 38d | 2015-04-13 | 2015-06-10 |  |  |  |  | 2012-08-07 | 2012-08-07 | 32d |  |  |  |  |  |
| 368 | 3.4.1.1 | **Gestão de Competência VM** |  | 3d | 2015-04-13 | 2015-04-15 |  |  |  |  | 2012-08-07 | 2012-08-07 | 67d |  |  |  |  |  |
| 369 | 3.4.1.1.1 | Realizar Testes Funcionais - VM |  | 1d | 2015-04-13 | 2015-04-13 | 348 |  |  |  | 2012-08-07 | 2012-08-07 | 67d | 0d |  |  |  |  |
| 370 | 3.4.1.1.2 | Ajustes Testes Funcionais - VM |  | 2d | 2015-04-14 | 2015-04-15 | 369 |  |  |  | 2012-08-07 | 2012-08-07 | 67d | 0d |  |  |  |  |
| 371 | 3.4.1.1.3 | Onda 1 - Entrega Testes Funcionais - VM | milestone | 0d | 2015-04-15 | 2015-04-15 | 370 |  |  |  | 2012-08-07 | 2012-08-07 | 67d |  |  |  | 0% | 0% |
| 372 | 3.4.1.2 | **Gestão de Metas VM** |  | 3d | 2015-06-08 | 2015-06-10 |  |  |  |  | 2012-08-07 | 2012-08-07 | 32d |  |  |  |  |  |
| 373 | 3.4.1.2.1 | Realizar Testes Funcionais |  | 1d | 2015-06-08 | 2015-06-08 |  |  |  |  | 2012-08-07 | 2012-08-07 | 32d | 0d | start no earlier than 2015-06-08 |  |  |  |
| 374 | 3.4.1.2.2 | Ajustes Testes Funcionais |  | 2d | 2015-06-09 | 2015-06-10 | 373 |  |  |  | 2012-08-07 | 2012-08-07 | 32d | 0d |  |  |  |  |
| 375 | 3.4.1.2.3 | Onda 2 - Entrega Testes Funcionais - VM | milestone | 0d | 2015-06-10 | 2015-06-10 | 374 |  |  |  | 2012-08-07 | 2012-08-07 | 32d |  |  |  | 0% | 0% |

| ID | WBS | Task | Type | Duration | Start | Finish | Predecessors | Baseline start | Baseline finish | Baseline duration | Baseline 1 start | Baseline 1 finish | Total slack | Free slack | Constraint | Baseline cost | % Planejado | % Realizado |
| --- | --- | --- | --- | --- | --- | --- | --- | --- | --- | --- | --- | --- | --- | --- | --- | --- | --- | --- |
| 376 | 3.4.2 | **Testes Unitários** |  | 39d | 2015-04-24 | 2015-06-22 |  |  |  |  | 2012-08-07 | 2012-08-07 | 24d |  |  |  |  |  |
| 377 | 3.4.2.1 | **Gestão de Competência VM** |  | 3d | 2015-04-24 | 2015-04-28 |  |  |  |  | 2012-08-07 | 2012-08-07 | 60d |  |  |  |  |  |
| 378 | 3.4.2.1.1 | Realizar Testes Unitários - VM |  | 1d | 2015-04-24 | 2015-04-24 |  |  |  |  | 2012-08-07 | 2012-08-07 | 60d | 0d | start no earlier than 2015-04-24 |  |  |  |
| 379 | 3.4.2.1.2 | Ajustes Testes Unitários - VM |  | 2d | 2015-04-27 | 2015-04-28 | 378 |  |  |  | 2012-08-07 | 2012-08-07 | 60d | 0d |  |  |  |  |
| 380 | 3.4.2.1.3 | Onda 1 - Entrega Testes Unitários - VM | milestone | 0d | 2015-04-28 | 2015-04-28 | 379 |  |  |  | 2012-08-07 | 2012-08-07 | 60d |  |  |  | 0% | 0% |
| 381 | 3.4.2.2 | **Gestão de Metas VM** |  | 4d | 2015-06-17 | 2015-06-22 |  |  |  |  | 2012-08-07 | 2012-08-07 | 24d |  |  |  |  |  |
| 382 | 3.4.2.2.1 | Realizar Testes Unitários - VM |  | 2d | 2015-06-17 | 2015-06-18 |  |  |  |  | 2012-08-07 | 2012-08-07 | 24d | 0d | start no earlier than 2015-06-17 |  |  |  |
| 383 | 3.4.2.2.2 | Ajustes de Testes Unitários - VM |  | 2d | 2015-06-19 | 2015-06-22 | 382 |  |  |  | 2012-08-07 | 2012-08-07 | 24d | 0d |  |  |  |  |
| 384 | 3.4.2.2.3 | Onda 2 - Entrega Testes Unitários - VM | milestone | 0d | 2015-06-22 | 2015-06-22 | 383 |  |  |  | 2012-08-07 | 2012-08-07 | 24d |  |  |  | 0% | 0% |
| 385 | 3.4.3 | **Testes Integrados** |  | 48d | 2015-05-04 | 2015-07-10 |  |  |  |  | 2012-08-07 | 2012-08-07 | 0d |  |  |  |  |  |
| 386 | 3.4.3.1 | **Gestão de Competência VM** |  | 10d | 2015-05-04 | 2015-05-15 |  |  |  |  | 2012-08-07 | 2012-08-07 | 0d |  |  |  |  |  |
| 387 | 3.4.3.1.1 | Testes Integrados VM |  | 5d | 2015-05-04 | 2015-05-08 |  |  |  |  | 2012-08-07 | 2012-08-07 | 0d |  | start no earlier than 2015-05-04 |  |  |  |
| 388 | 3.4.3.1.2 | Ajustes Testes Integrados VM |  | 5d | 2015-05-11 | 2015-05-15 | 387 |  |  |  | 2012-08-07 | 2012-08-07 | 35d | 0d |  |  |  |  |
| 389 | 3.4.3.1.3 | **Onda 1 - Termo de Aceite Fase 4** |  | 0d | 2015-05-15 | 2015-05-15 |  |  |  |  | 2012-08-07 | 2012-08-07 | 48d |  |  |  | 0% | 0% |
| 390 | 3.4.3.1.3.1 | Onda 1 - Assinatura Fase 4 - Preparação Final - VM | milestone | 0d | 2015-05-15 | 2015-05-15 | 388 |  |  |  | 2012-08-07 | 2012-08-07 | 48d |  |  |  | 0% | 0% |
| 391 | 3.4.3.2 | **Gestão de Metas VM** |  | 10d | 2015-06-29 | 2015-07-10 |  |  |  |  | 2012-08-07 | 2012-08-07 | 0d |  |  |  |  |  |
| 392 | 3.4.3.2.1 | Testes Integrados VM |  | 5d | 2015-06-29 | 2015-07-03 |  |  |  |  | 2012-08-07 | 2012-08-07 | 0d |  | start no earlier than 2015-06-29 |  |  |  |
| 393 | 3.4.3.2.2 | Ajustes Testes Integrados VM |  | 5d | 2015-07-06 | 2015-07-10 | 392 |  |  |  | 2012-08-07 | 2012-08-07 | 0d |  |  |  |  |  |
| 394 | 3.4.3.2.3 | **Termo de Aceite Fase 4** |  | 0d | 2015-07-10 | 2015-07-10 |  |  |  |  | 2012-08-07 | 2012-08-07 | 10d |  |  |  | 0% | 0% |
| 395 | 3.4.3.2.3.1 | Onda 2 - Assinatura Fase 4 - Preparação Final - VM | milestone | 0d | 2015-07-10 | 2015-07-10 | 393 |  |  |  | 2012-08-07 | 2012-08-07 | 10d |  |  |  | 0% | 0% |
| 396 | 3.5 | **Fase 5 - Go Live e Operacao Assistida** |  | 48d | 2015-05-18 | 2015-07-24 |  | 2013-11-01 | 2013-12-02 | 21d | 2012-08-07 | 2012-08-07 | 0d |  |  | 168 |  |  |
| 397 | 3.5.1 | **Go Live - Onda 1 - Gestão de Competência** |  | 13d | 2015-05-18 | 2015-06-03 |  |  |  |  | 2012-08-07 | 2012-08-07 | 35d |  |  |  |  |  |
| 398 | 3.5.1.1 | Treinamento |  | 5d | 2015-05-18 | 2015-05-22 | 388 |  |  |  | 2012-08-07 | 2012-08-07 | 35d | 0d |  |  |  |  |
| 399 | 3.5.1.2 | Cutover |  | 5d | 2015-05-25 | 2015-05-29 | 398 |  |  |  | 2012-08-07 | 2012-08-07 | 35d | 0d |  |  |  |  |
| 400 | 3.5.1.3 | Onda 1 - Go Live | milestone | 0d | 2015-05-29 | 2015-05-29 | 399 |  |  |  | 2012-08-07 | 2012-08-07 | 38d |  |  |  | 0% | 0% |
| 401 | 3.5.1.4 | Operação Assistida |  | 3d | 2015-06-01 | 2015-06-03 | 399 |  |  |  | 2012-08-07 | 2012-08-07 | 35d |  |  |  |  |  |

| ID | WBS | Task | Type | Duration | Start | Finish | Predecessors | Baseline start | Baseline finish | Baseline duration | Baseline 1 start | Baseline 1 finish | Total slack | Free slack | Resources | Work | Baseline cost | % Planejado | % Realizado | Text29 |
| --- | --- | --- | --- | --- | --- | --- | --- | --- | --- | --- | --- | --- | --- | --- | --- | --- | --- | --- | --- | --- |
| 402 | 3.5.2 | **Go Live - Onda 2 - Gestão de Metas** |  | 10d | 2015-07-13 | 2015-07-24 |  |  |  |  | 2012-08-07 | 2012-08-07 | 0d |  |  |  |  |  |  |  |
| 403 | 3.5.2.1 | Treinamento |  | 5d | 2015-07-13 | 2015-07-17 | 393 |  |  |  | 2012-08-07 | 2012-08-07 | 5d |  |  |  |  |  |  |  |
| 404 | 3.5.2.2 | Cutover |  | 5d | 2015-07-13 | 2015-07-17 | 393 |  |  |  | 2012-08-07 | 2012-08-07 | -103d | 0d |  |  |  |  |  |  |
| 405 | 3.5.2.3 | Onda 2 - Go Live | milestone | 0d | 2015-07-17 | 2015-07-17 | 404 |  |  |  | 2012-08-07 | 2012-08-07 | 5d |  |  |  |  | 0% | 0% |  |
| 406 | 3.5.2.4 | Operação Assistida |  | 5d | 2015-07-20 | 2015-07-24 | 404 |  |  |  | 2012-08-07 | 2012-08-07 | -103d | 0d |  |  |  |  |  |  |
| 407 | 4 | **(3) Projeto Metas e Competência - VID São Paulo e Curitiba** |  | 104d | 2015-02-09 | 2015-07-24 |  | 2012-10-01 | 2013-12-25 | 315.4d | 2012-08-07 | 2012-08-07 |  |  |  | 48h | 11,402.4 |  |  | 20/09 |
| 408 | 4.1 | **Fase 1 - Preparação do Projeto** |  | 10d | 2015-02-09 | 2015-02-20 |  | 2012-11-05 | 2013-01-16 | 52.67d | 2012-08-07 | 2012-08-07 | 84d |  |  |  | 85.6 |  |  |  |
| 409 | 4.1.1 | Confirmação e Mobilização de Equipe |  | 8d | 2015-02-09 | 2015-02-18 |  |  |  |  | 2012-08-07 | 2012-08-07 | 84d | 0d |  |  |  |  |  |  |
| 410 | 4.1.2 | Reunião Pré Kick-off |  | 1d | 2015-02-19 | 2015-02-19 | 409 |  |  |  | 2012-08-07 | 2012-08-07 | 94d | 0d |  |  |  |  |  |  |
| 411 | 4.1.3 | Kick-Off |  | 1d | 2015-02-20 | 2015-02-20 | 410 |  |  |  | 2012-08-07 | 2012-08-07 | 94d |  |  |  |  |  |  |  |
| 412 | 4.1.4 | Identificação dos Usuários |  | 2d | 2015-02-19 | 2015-02-20 | 409 |  |  |  | 2012-08-07 | 2012-08-07 | 84d | 0d |  |  |  |  |  |  |
| 413 | 4.1.5 | **Termo de Aceite Fase 1** |  | 0d | 2015-02-20 | 2015-02-20 |  |  |  |  | 2012-08-07 | 2012-08-07 | 94d |  |  |  |  | 100% | 0% |  |
| 414 | 4.1.5.1 | Assinatura Fase 1 - Preparação do Projeto | milestone | 0d | 2015-02-20 | 2015-02-20 | 412 |  |  |  | 2012-08-07 | 2012-08-07 | 94d |  |  |  |  | 100% | 0% |  |
| 415 | 4.2 | **Fase 2 - Business Blueprint** |  | 10d | 2015-02-23 | 2015-03-06 |  | 2013-03-07 | 2013-08-15 | 112d | 2012-08-07 | 2012-08-07 | 84d |  |  | 48h | 540 |  |  |  |
| 416 | 4.2.1 | **Levantamento Gestão de Metas** |  | 5d | 2015-02-23 | 2015-02-27 |  |  |  |  | 2012-08-07 | 2012-08-07 | 84d |  |  |  |  |  |  |  |
| 417 | 4.2.1.1 | Mapeamento dos Processos |  | 3d | 2015-02-23 | 2015-02-25 | 412 |  |  |  | 2012-08-07 | 2012-08-07 | 84d | 0d |  |  |  |  |  |  |
| 418 | 4.2.1.2 | Elaboração dos BBPs |  | 1d | 2015-02-26 | 2015-02-26 | 417 |  |  |  | 2012-08-07 | 2012-08-07 | 89d | 0d |  |  |  |  |  |  |
| 419 | 4.2.1.3 | Ajustes / Aprovação dos BBPs |  | 1d | 2015-02-27 | 2015-02-27 | 418 |  |  |  | 2012-08-07 | 2012-08-07 | 89d |  |  |  |  |  |  |  |
| 420 | 4.2.2 | **Levantamento Gestão de Competência** |  | 7d | 2015-02-26 | 2015-03-06 |  |  |  |  | 2012-08-07 | 2012-08-07 | 84d |  |  | 48h |  |  |  |  |
| 421 | 4.2.2.1 | Mapeamento dos Processos |  | 4d | 2015-02-26 | 2015-03-03 | 417 |  |  |  | 2012-08-07 | 2012-08-07 | 84d | 0d |  |  |  |  |  |  |
| 422 | 4.2.2.2 | **Elaboração dos BBPs** |  | 1d | 2015-03-04 | 2015-03-04 |  |  |  |  | 2012-08-07 | 2012-08-07 | 84d |  |  | 16h |  |  |  |  |
| 423 | 4.2.2.2.1 | EP |  | 0.5d | 2015-03-04 | 2015-03-04 | 421 |  |  |  | 2012-08-07 | 2012-08-07 | 86d | 0d | HRST 1 | 4h |  |  |  |  |
| 424 | 4.2.2.2.2 | PDI |  | 0.5d | 2015-03-04 | 2015-03-04 | 423 |  |  |  | 2012-08-07 | 2012-08-07 | 86d |  | HRST 1 | 4h |  |  |  |  |
| 425 | 4.2.2.2.3 | Competência |  | 0.5d | 2015-03-04 | 2015-03-04 | 421 |  |  |  | 2012-08-07 | 2012-08-07 | 84d | 0d | HRST 2 | 4h |  |  |  |  |
| 426 | 4.2.2.2.4 | Sucessão |  | 0.5d | 2015-03-04 | 2015-03-04 | 425 |  |  |  | 2012-08-07 | 2012-08-07 | 84d | 0d | HRST 2 | 4h |  |  |  |  |

| ID | WBS | Task | Type | Duration | Start | Finish | Predecessors | Baseline start | Baseline finish | Baseline duration | Baseline 1 start | Baseline 1 finish | Total slack | Free slack | Constraint | Resources | Work | Baseline cost | % Planejado | % Realizado |
| --- | --- | --- | --- | --- | --- | --- | --- | --- | --- | --- | --- | --- | --- | --- | --- | --- | --- | --- | --- | --- |
| 427 | 4.2.2.3 | **Ajustes / Aprovação dos BBPs** |  | 2d | 2015-03-05 | 2015-03-06 |  |  |  |  | 2012-08-07 | 2012-08-07 | 84d |  |  |  | 32h |  |  |  |
| 428 | 4.2.2.3.1 | EP |  | 1d | 2015-03-05 | 2015-03-05 | 426 |  |  |  | 2012-08-07 | 2012-08-07 | 84d | 0d |  | HRST 1 | 8h |  |  |  |
| 429 | 4.2.2.3.2 | PDI |  | 1d | 2015-03-06 | 2015-03-06 | 428 |  |  |  | 2012-08-07 | 2012-08-07 | 84d |  |  | HRST 1 | 8h |  |  |  |
| 430 | 4.2.2.3.3 | Competência |  | 1d | 2015-03-05 | 2015-03-05 | 426 |  |  |  | 2012-08-07 | 2012-08-07 | 84d | 0d |  | HRST 2 | 8h |  |  |  |
| 431 | 4.2.2.3.4 | Sucessão |  | 1d | 2015-03-06 | 2015-03-06 | 430 |  |  |  | 2012-08-07 | 2012-08-07 | 84d | 0d |  | HRST 2 | 8h |  |  |  |
| 432 | 4.2.2.4 | **Termo de Aceite Fase 2** |  | 0d | 2015-03-06 | 2015-03-06 |  |  |  |  | 2012-08-07 | 2012-08-07 | 84d |  |  |  |  |  | 100% | 0% |
| 433 | 4.2.2.4.1 | Assinatura Fase 2 - Business Blueprint | milestone | 0d | 2015-03-06 | 2015-03-06 | 431 |  |  |  | 2012-08-07 | 2012-08-07 | 84d |  |  |  |  |  | 100% | 0% |
| 434 | 4.3 | **Fase 3 - Realização** |  | 49d | 2015-03-23 | 2015-06-03 |  | 2012-10-01 | 2013-11-15 | 288d | 2012-08-07 | 2012-08-07 |  |  |  |  |  | 8,798.4 |  |  |
| 435 | 4.3.1 | **Gestão de Competência VID** |  | 14d | 2015-03-23 | 2015-04-10 |  |  |  |  | 2012-08-07 | 2012-08-07 | 35d |  |  |  |  |  |  |  |
| 436 | 4.3.1.1 | Configurar EP (Employee Profile) - VID |  | 5d | 2015-03-23 | 2015-03-27 |  |  |  |  | 2012-08-07 | 2012-08-07 | 35d | 0d | start no earlier than 2015-03-23 |  |  |  |  |  |
| 437 | 4.3.1.2 | Configurar PDI (Palno de Desenvolvimento Individual) - VID |  | 5d | 2015-03-23 | 2015-03-27 |  |  |  |  | 2012-08-07 | 2012-08-07 | 35d | 0d | start no earlier than 2015-03-23 |  |  |  |  |  |
| 438 | 4.3.1.3 | Configurar Sucessão - VID |  | 5d | 2015-03-30 | 2015-04-06 | 436, 437 |  |  |  | 2012-08-07 | 2012-08-07 | 39d |  |  |  |  |  |  |  |
| 439 | 4.3.1.4 | Configurar PM - VID |  | 7d | 2015-03-30 | 2015-04-08 | 436, 437 |  |  |  | 2012-08-07 | 2012-08-07 | 35d | 0d |  |  |  |  |  |  |
| 440 | 4.3.1.5 | **Configurar Relatórios** |  | 2d | 2015-04-09 | 2015-04-10 |  |  |  |  | 2012-08-07 | 2012-08-07 | 35d |  |  |  |  |  |  |  |
| 441 | 4.3.1.5.1 | Cópia dos Relatórios da VC - VID |  | 0.5d | 2015-04-09 | 2015-04-09 | 439 |  |  |  | 2012-08-07 | 2012-08-07 | 35d | 0d |  |  |  |  |  |  |
| 442 | 4.3.1.5.2 | Escala - Descrição e Pontuação - VID |  | 0.5d | 2015-04-09 | 2015-04-09 | 441 |  |  |  | 2012-08-07 | 2012-08-07 | 35d | 0d |  |  |  |  |  |  |
| 443 | 4.3.1.5.3 | Comparativo entre Desempenho na Função e Crenças - VID |  | 1d | 2015-04-10 | 2015-04-10 | 442 |  |  |  | 2012-08-07 | 2012-08-07 | 35d |  |  |  |  |  |  |  |
| 444 | 4.3.1.6 | Desenvolvimento Abap - Ajustes Integração |  | 9d | 2015-03-30 | 2015-04-10 | 436, 437 |  |  |  |  |  | 35d | 0d |  |  |  |  |  |  |
| 445 | 4.3.1.7 | **Termo de Aceite Fase 3 - Realização** |  | 0d | 2015-04-10 | 2015-04-10 |  |  |  |  | 2012-08-07 | 2012-08-07 | 35d |  |  |  |  |  | 0% | 0% |
| 446 | 4.3.1.7.1 | Onda 1 - Assinatura Fase 3 - Realização - VID | milestone | 0d | 2015-04-10 | 2015-04-10 | 444 |  |  |  | 2012-08-07 | 2012-08-07 | 35d |  |  |  |  |  | 0% | 0% |
| 447 | 4.3.2 | **Gestão de Metas VID** |  | 13d | 2015-05-18 | 2015-06-03 |  |  |  |  | 2012-08-07 | 2012-08-07 | 0d |  |  |  |  |  |  |  |
| 448 | 4.3.2.1 | Alteração de label na instância |  | 1d | 2015-05-18 | 2015-05-18 | 483 |  |  |  | 2012-08-07 | 2012-08-07 | 0d |  |  |  |  |  |  |  |
| 449 | 4.3.2.2 | Configurar o mapa de rota |  | 1d | 2015-05-19 | 2015-05-19 | 448 |  |  |  | 2012-08-07 | 2012-08-07 | 0d |  |  |  |  |  |  |  |
| 450 | 4.3.2.3 | Configurar Formulários |  | 1d | 2015-05-20 | 2015-05-20 | 449 |  |  |  | 2012-08-07 | 2012-08-07 | 0d |  |  |  |  |  |  |  |
| 451 | 4.3.2.4 | Configurar permissões |  | 1d | 2015-05-21 | 2015-05-21 | 450 |  |  |  | 2012-08-07 | 2012-08-07 | 0d |  |  |  |  |  |  |  |
| 452 | 4.3.2.5 | Definir layout para importar a Biblioteca de Metas |  | 1d | 2015-05-22 | 2015-05-22 | 451 |  |  |  | 2012-08-07 | 2012-08-07 | 0d |  |  |  |  |  |  |  |
| 453 | 4.3.2.6 | Definir layout para carga de empregados |  | 1d | 2015-05-25 | 2015-05-25 | 452 |  |  |  | 2012-08-07 | 2012-08-07 | 0d |  |  |  |  |  |  |  |
| 454 | 4.3.2.7 | Passar para Votorantim informações para carga de fotos |  | 1d | 2015-05-26 | 2015-05-26 | 453 |  |  |  | 2012-08-07 | 2012-08-07 | 0d |  |  |  |  |  |  |  |
| 455 | 4.3.2.8 | Fazer a carga de metas |  | 1d | 2015-05-27 | 2015-05-27 | 454 |  |  |  | 2012-08-07 | 2012-08-07 | 0d |  |  |  |  |  |  |  |
| 456 | 4.3.2.9 | Fazer a carga de empregados |  | 1d | 2015-05-28 | 2015-05-28 | 455 |  |  |  | 2012-08-07 | 2012-08-07 | 0d |  |  |  |  |  |  |  |
| 457 | 4.3.2.10 | Agendar job para carga de fotos |  | 2d | 2015-05-29 | 2015-06-01 | 456 |  |  |  | 2012-08-07 | 2012-08-07 | 0d |  |  |  |  |  |  |  |
| 458 | 4.3.2.11 | Configurar Relatórios |  | 2d | 2015-06-02 | 2015-06-03 | 457 |  |  |  | 2012-08-07 | 2012-08-07 | 0d |  |  |  |  |  |  |  |

| ID | WBS | Task | Type | Duration | Start | Finish | Predecessors | Baseline start | Baseline finish | Baseline duration | Baseline 1 start | Baseline 1 finish | Total slack | Free slack | Constraint | Baseline cost | % Planejado | % Realizado |
| --- | --- | --- | --- | --- | --- | --- | --- | --- | --- | --- | --- | --- | --- | --- | --- | --- | --- | --- |
| 459 | 4.3.2.12 | **Onda 2 - Termo de Aceite - Realização** |  | 0d | 2015-06-03 | 2015-06-03 |  |  |  |  | 2012-08-07 | 2012-08-07 | 0d |  |  |  | 0% | 0% |
| 460 | 4.3.2.12.1 | Onda 2 - Assinatura Fase 3 - Realização - VID | milestone | 0d | 2015-06-03 | 2015-06-03 | 458 |  |  |  | 2012-08-07 | 2012-08-07 | 0d |  |  |  | 0% | 0% |
| 461 | 4.4 | **Fase 4 - Preparação Final** |  | 60d | 2015-04-13 | 2015-07-10 |  | 2013-11-13 | 2013-11-22 | 8d | 2012-08-07 | 2012-08-07 | 8d |  |  | 159.2 |  |  |
| 462 | 4.4.1 | **Testes Funcionais** |  | 38d | 2015-04-13 | 2015-06-10 |  |  |  |  | 2012-08-07 | 2012-08-07 | 32d |  |  |  |  |  |
| 463 | 4.4.1.1 | **Gestão de Competência VID** |  | 3d | 2015-04-13 | 2015-04-15 |  |  |  |  | 2012-08-07 | 2012-08-07 | 67d |  |  |  |  |  |
| 464 | 4.4.1.1.1 | Realizar Testes Funcionais - VID |  | 1d | 2015-04-13 | 2015-04-13 | 444 |  |  |  | 2012-08-07 | 2012-08-07 | 67d | 0d |  |  |  |  |
| 465 | 4.4.1.1.2 | Ajustes Testes Funcionais - VID |  | 2d | 2015-04-14 | 2015-04-15 | 464 |  |  |  | 2012-08-07 | 2012-08-07 | 67d | 0d |  |  |  |  |
| 466 | 4.4.1.1.3 | Onda 1 - Entrega Testes Funcionais - VID | milestone | 0d | 2015-04-15 | 2015-04-15 | 465 |  |  |  | 2012-08-07 | 2012-08-07 | 67d |  |  |  | 0% | 0% |
| 467 | 4.4.1.2 | **Gestão de Metas VID** |  | 3d | 2015-06-08 | 2015-06-10 |  |  |  |  | 2012-08-07 | 2012-08-07 | 32d |  |  |  |  |  |
| 468 | 4.4.1.2.1 | Realizar Testes Funcionais - VID |  | 1d | 2015-06-08 | 2015-06-08 | 458 |  |  |  | 2012-08-07 | 2012-08-07 | 32d | 0d |  |  |  |  |
| 469 | 4.4.1.2.2 | Ajustes Testes Funcionais - VID |  | 2d | 2015-06-09 | 2015-06-10 | 468 |  |  |  | 2012-08-07 | 2012-08-07 | 32d | 0d |  |  |  |  |
| 470 | 4.4.1.2.3 | Onda 2 - Entrega Testes Funcionais - VID | milestone | 0d | 2015-06-10 | 2015-06-10 | 469 |  |  |  | 2012-08-07 | 2012-08-07 | 32d |  |  |  | 0% | 0% |
| 471 | 4.4.2 | **Testes Unitários** |  | 40d | 2015-04-27 | 2015-06-24 |  |  |  |  | 2012-08-07 | 2012-08-07 |  |  |  |  |  |  |
| 472 | 4.4.2.1 | **Gestão de Competência VID** |  | 3d | 2015-04-27 | 2015-04-29 |  |  |  |  | 2012-08-07 | 2012-08-07 | 37d |  |  |  |  |  |
| 473 | 4.4.2.1.1 | Realizar Testes Unitários - VID |  | 1d | 2015-04-27 | 2015-04-27 |  |  |  |  | 2012-08-07 | 2012-08-07 | 37d | 0d | start no earlier than 2015-04-27 |  |  |  |
| 474 | 4.4.2.1.2 | Ajustes Testes Unitários - VID |  | 2d | 2015-04-28 | 2015-04-29 | 473 |  |  |  | 2012-08-07 | 2012-08-07 | 37d | 0d |  |  |  |  |
| 475 | 4.4.2.1.3 | Onda 1 - Entrega Testes Unitários - VID | milestone | 0d | 2015-04-29 | 2015-04-29 | 474 |  |  |  | 2012-08-07 | 2012-08-07 | 37d |  |  |  | 0% | 0% |
| 476 | 4.4.2.2 | **Gestão de Metas VID** |  | 40d? | 2015-04-27 | 2015-06-24 |  |  |  |  | 2012-08-07 | 2012-08-07 | 0d |  |  |  |  |  |
| 477 | 4.4.2.2.1 | Realizar Testes Unitários - VID |  | 2d | 2015-06-19 | 2015-06-22 |  |  |  |  | 2012-08-07 | 2012-08-07 | 0d |  | start no earlier than 2015-06-19 |  |  |  |
| 478 | 4.4.2.2.2 | Ajustes de Testes Unitários - VID |  | 2d | 2015-06-23 | 2015-06-24 | 477 |  |  |  | 2012-08-07 | 2012-08-07 | 0d |  |  |  |  |  |
| 479 | 4.4.2.2.3 | Onda 2 - Entrega Testes Unitários - VID |  | 1d? | 2015-04-27 | 2015-04-27 |  |  |  |  | 2012-08-07 | 2012-08-07 | 39d |  |  |  |  |  |
| 480 | 4.4.3 | **Testes Integrados** |  | 48d | 2015-05-04 | 2015-07-10 |  |  |  |  | 2012-08-07 | 2012-08-07 | 0d |  |  |  |  |  |
| 481 | 4.4.3.1 | **Gestão de Competência VID** |  | 10d | 2015-05-04 | 2015-05-15 |  |  |  |  | 2012-08-07 | 2012-08-07 | 0d |  |  |  |  |  |
| 482 | 4.4.3.1.1 | Testes Integrados VID |  | 5d | 2015-05-04 | 2015-05-08 |  |  |  |  | 2012-08-07 | 2012-08-07 | -71d | 0d | start no earlier than 2015-05-04 |  |  |  |
| 483 | 4.4.3.1.2 | Ajustes Testes Integrados VID |  | 5d | 2015-05-11 | 2015-05-15 | 482 |  |  |  | 2012-08-07 | 2012-08-07 | -71d | 0d |  |  |  |  |

| ID | WBS | Task | Type | Duration | Start | Finish | Predecessors | Baseline start | Baseline finish | Baseline duration | Baseline 1 start | Baseline 1 finish | Total slack | Free slack | Constraint | Baseline cost | % Planejado | % Realizado | Text29 |
| --- | --- | --- | --- | --- | --- | --- | --- | --- | --- | --- | --- | --- | --- | --- | --- | --- | --- | --- | --- |
| 484 | 4.4.3.1.3 | **Onda 1 - Termo de Aceite Fase 4** |  | 0d | 2015-05-15 | 2015-05-15 |  |  |  |  | 2012-08-07 | 2012-08-07 | 48d |  |  |  | 0% | 0% |  |
| 485 | 4.4.3.1.3.1 | Onda 1 - Assinatura Fase 4 - Preparação Final - VID | milestone | 0d | 2015-05-15 | 2015-05-15 | 483 |  |  |  | 2012-08-07 | 2012-08-07 | 48d |  |  |  | 0% | 0% |  |
| 486 | 4.4.3.2 | **Gestão de Metas VID** |  | 10d | 2015-06-29 | 2015-07-10 |  |  |  |  | 2012-08-07 | 2012-08-07 | 0d |  |  |  |  |  |  |
| 487 | 4.4.3.2.1 | Testes Integrados VID |  | 5d | 2015-06-29 | 2015-07-03 |  |  |  |  | 2012-08-07 | 2012-08-07 | 0d |  | start no earlier than 2015-06-29 |  |  |  |  |
| 488 | 4.4.3.2.2 | Ajustes Testes Integrados VID |  | 5d | 2015-07-06 | 2015-07-10 | 487 |  |  |  | 2012-08-07 | 2012-08-07 | 0d |  |  |  |  |  |  |
| 489 | 4.4.3.2.3 | **Termo de Aceite Fase 4** |  | 0d | 2015-07-10 | 2015-07-10 |  |  |  |  | 2012-08-07 | 2012-08-07 | 10d |  |  |  | 0% | 0% |  |
| 490 | 4.4.3.2.3.1 | Onda 2 - Assinatura Fase 4 - Preparação Final - VID | milestone | 0d | 2015-07-10 | 2015-07-10 | 488 |  |  |  | 2012-08-07 | 2012-08-07 | 10d |  |  |  | 0% | 0% |  |
| 491 | 4.5 | **Fase 5 - Go Live e Operacao Assistida** |  | 48d | 2015-05-18 | 2015-07-24 |  | 2013-11-25 | 2013-12-25 | 22d | 2012-08-07 | 2012-08-07 | 0d |  |  | 176 |  |  |  |
| 492 | 4.5.1 | **Go Live - Onda 1 - Gestão de Competência** |  | 48d | 2015-05-18 | 2015-07-24 |  |  |  |  | 2012-08-07 | 2012-08-07 |  |  |  |  |  |  |  |
| 493 | 4.5.1.1 | Treinamento |  | 5d | 2015-05-18 | 2015-05-22 | 483 |  |  |  | 2012-08-07 | 2012-08-07 | 35d | 0d |  |  |  |  |  |
| 494 | 4.5.1.2 | Cutover |  | 5d | 2015-05-25 | 2015-05-29 | 493 |  |  |  | 2012-08-07 | 2012-08-07 | 35d | 0d |  |  |  |  |  |
| 495 | 4.5.1.3 | Onda 1 - Go Live | milestone | 0d | 2015-05-29 | 2015-05-29 | 494 |  |  |  | 2012-08-07 | 2012-08-07 | 38d |  |  |  | 0% | 0% |  |
| 496 | 4.5.1.4 | Operação Assistida |  | 3d | 2015-06-01 | 2015-06-03 | 494 |  |  |  | 2012-08-07 | 2012-08-07 | 35d |  |  |  |  |  |  |
| 497 | 4.5.1.5 | **Go Live - Onda 2 - Gestão de Metas** |  | 10d | 2015-07-13 | 2015-07-24 |  |  |  |  | 2012-08-07 | 2012-08-07 | 0d |  |  |  |  |  |  |
| 498 | 4.5.1.5.1 | Treinamento |  | 5d | 2015-07-13 | 2015-07-17 | 488 |  |  |  | 2012-08-07 | 2012-08-07 | 5d |  |  |  |  |  |  |
| 499 | 4.5.1.5.2 | Cutover |  | 5d | 2015-07-13 | 2015-07-17 | 488 |  |  |  | 2012-08-07 | 2012-08-07 | 0d |  |  |  |  |  |  |
| 500 | 4.5.1.5.3 | Onda 2 - Go Live | milestone | 0d | 2015-07-17 | 2015-07-17 | 499 |  |  |  | 2012-08-07 | 2012-08-07 | 5d |  |  |  | 0% | 0% |  |
| 501 | 4.5.1.5.4 | Operação Assistida |  | 5d | 2015-07-20 | 2015-07-24 | 499 |  |  |  | 2012-08-07 | 2012-08-07 | 0d |  |  |  |  |  |  |
| 502 | 5 | **(4) Projeto Metas e Competência - VE** |  | 104d | 2015-02-09 | 2015-07-24 |  | 2012-11-05 | 2013-12-24 | 289.7d | 2012-08-07 | 2012-08-07 |  |  |  | 6,564.8 |  |  | 20/08 |
| 503 | 5.1 | **Fase 1 - Preparação do Projeto** |  | 10d | 2015-02-09 | 2015-02-20 |  | 2012-11-05 | 2013-01-16 | 52.8d | 2012-08-07 | 2012-08-07 |  |  |  | 70.4 |  |  |  |
| 504 | 5.1.1 | Confirmação e Mobilização de Equipe |  | 8d | 2015-02-09 | 2015-02-18 |  |  |  |  | 2012-08-07 | 2012-08-07 | 0d |  | start no earlier than 2015-02-09 |  |  |  |  |
| 505 | 5.1.2 | Reunião Pré Kick-off |  | 1d | 2015-02-19 | 2015-02-19 | 504 |  |  |  | 2012-08-07 | 2012-08-07 | 0d |  |  |  |  |  |  |
| 506 | 5.1.3 | Kick-Off |  | 1d | 2015-02-20 | 2015-02-20 | 505 |  |  |  | 2012-08-07 | 2012-08-07 | 0d |  |  |  |  |  |  |
| 507 | 5.1.4 | Identificação dos Usuários |  | 2d | 2015-02-19 | 2015-02-20 | 504 |  |  |  | 2012-08-07 | 2012-08-07 | 0d |  |  |  |  |  |  |

| ID | WBS | Task | Type | Duration | Start | Finish | Predecessors | Baseline start | Baseline finish | Baseline duration | Baseline 1 start | Baseline 1 finish | Total slack | Free slack | Constraint | Baseline cost | % Planejado | % Realizado |
| --- | --- | --- | --- | --- | --- | --- | --- | --- | --- | --- | --- | --- | --- | --- | --- | --- | --- | --- |
| 508 | 5.1.5 | **Termo de Aceite Fase 1** |  | 0d | 2015-02-20 | 2015-02-20 |  |  |  |  | 2012-08-07 | 2012-08-07 | 0d |  |  |  | 100% | 0% |
| 509 | 5.1.5.1 | Assinatura Fase 1 - Preparação do Projeto | milestone | 0d | 2015-02-20 | 2015-02-20 | 507 |  |  |  | 2012-08-07 | 2012-08-07 | 0d |  |  |  | 100% | 0% |
| 510 | 5.2 | **Fase 2 - Business Blueprint** |  | 10d | 2015-02-23 | 2015-03-06 |  | 2013-01-10 | 2013-08-30 | 160.5d | 2012-08-07 | 2012-08-07 |  |  |  | 532.8 |  |  |
| 511 | 5.2.1 | **Levantamento Gestão de Metas** |  | 5d | 2015-02-23 | 2015-02-27 |  |  |  |  | 2012-08-07 | 2012-08-07 | 0d |  |  |  |  |  |
| 512 | 5.2.1.1 | Mapeamento dos Processos |  | 3d | 2015-02-23 | 2015-02-25 | 507 |  |  |  | 2012-08-07 | 2012-08-07 | 0d |  |  |  |  |  |
| 513 | 5.2.1.2 | Elaboração dos BBPs |  | 1d | 2015-02-26 | 2015-02-26 | 512 |  |  |  | 2012-08-07 | 2012-08-07 | 5d | 0d |  |  |  |  |
| 514 | 5.2.1.3 | Ajustes / Aprovação dos BBPs |  | 1d | 2015-02-27 | 2015-02-27 | 513 |  |  |  | 2012-08-07 | 2012-08-07 | 5d |  |  |  |  |  |
| 515 | 5.2.2 | **Levantamento Gestão de Competência** |  | 7d | 2015-02-26 | 2015-03-06 |  |  |  |  | 2012-08-07 | 2012-08-07 | 0d |  |  |  |  |  |
| 516 | 5.2.2.1 | Mapeamento dos Processos |  | 4d | 2015-02-26 | 2015-03-03 | 512 |  |  |  | 2012-08-07 | 2012-08-07 | 0d |  |  |  |  |  |
| 517 | 5.2.2.2 | **Elaboração dos BBPs** |  | 1d | 2015-03-04 | 2015-03-04 |  |  |  |  | 2012-08-07 | 2012-08-07 | 0d |  |  |  |  |  |
| 518 | 5.2.2.2.1 | EP |  | 0.5d | 2015-03-04 | 2015-03-04 | 516 |  |  |  | 2012-08-07 | 2012-08-07 | 2d | 0d |  |  |  |  |
| 519 | 5.2.2.2.2 | PDI |  | 0.5d | 2015-03-04 | 2015-03-04 | 518 |  |  |  | 2012-08-07 | 2012-08-07 | 2d |  |  |  |  |  |
| 520 | 5.2.2.2.3 | Competência |  | 0.5d | 2015-03-04 | 2015-03-04 | 516 |  |  |  | 2012-08-07 | 2012-08-07 | 0d |  |  |  |  |  |
| 521 | 5.2.2.2.4 | Sucessão |  | 0.5d | 2015-03-04 | 2015-03-04 | 520 |  |  |  | 2012-08-07 | 2012-08-07 | 0d |  |  |  |  |  |
| 522 | 5.2.2.3 | **Ajustes / Aprovação dos BBPs** |  | 2d | 2015-03-05 | 2015-03-06 |  |  |  |  | 2012-08-07 | 2012-08-07 | 0d |  |  |  |  |  |
| 523 | 5.2.2.3.1 | EP |  | 1d | 2015-03-05 | 2015-03-05 | 521 |  |  |  | 2012-08-07 | 2012-08-07 | 0d |  |  |  |  |  |
| 524 | 5.2.2.3.2 | PDI |  | 1d | 2015-03-06 | 2015-03-06 | 523 |  |  |  | 2012-08-07 | 2012-08-07 | 0d |  |  |  |  |  |
| 525 | 5.2.2.3.3 | Competência |  | 1d | 2015-03-05 | 2015-03-05 | 521 |  |  |  | 2012-08-07 | 2012-08-07 | 0d |  |  |  |  |  |
| 526 | 5.2.2.3.4 | Sucessão |  | 1d | 2015-03-06 | 2015-03-06 | 525 |  |  |  | 2012-08-07 | 2012-08-07 | 0d |  |  |  |  |  |
| 527 | 5.2.2.4 | **Termo de Aceite Fase 2** |  | 0d | 2015-03-06 | 2015-03-06 |  |  |  |  | 2012-08-07 | 2012-08-07 | 0d |  |  |  | 100% | 0% |
| 528 | 5.2.2.4.1 | Assinatura Fase 2 - Business Blueprint | milestone | 0d | 2015-03-06 | 2015-03-06 | 526 |  |  |  | 2012-08-07 | 2012-08-07 | 0d |  |  |  | 100% | 0% |
| 529 | 5.3 | **Faze 3 - Realização** |  | 48.5d | 2015-03-23 | 2015-06-03 |  | 2013-08-26 | 2013-11-15 | 58d | 2012-08-07 | 2012-08-07 | 35.5d |  |  | 3,234.4 |  |  |
| 530 | 5.3.1 | **Gestão de Competência VE** |  | 14d | 2015-03-23 | 2015-04-10 |  |  |  |  | 2012-08-07 | 2012-08-07 | 70d |  |  |  |  |  |
| 531 | 5.3.1.1 | Configurar EP (Employee Profile) - VE |  | 5d | 2015-03-23 | 2015-03-27 |  |  |  |  | 2012-08-07 | 2012-08-07 | 70d | 0d | start no earlier than 2015-03-23 |  |  |  |
| 532 | 5.3.1.2 | Configurar PDI (Palno de Desenvolvimento Individual) - VE |  | 5d | 2015-03-23 | 2015-03-27 |  |  |  |  | 2012-08-07 | 2012-08-07 | 70d | 0d | start no earlier than 2015-03-23 |  |  |  |
| 533 | 5.3.1.3 | Configurar Sucessão - VE |  | 5d | 2015-03-30 | 2015-04-06 | 531, 532 |  |  |  | 2012-08-07 | 2012-08-07 | 74d |  |  |  |  |  |
| 534 | 5.3.1.4 | Configurar PM - VE |  | 7d | 2015-03-30 | 2015-04-08 | 531, 532 |  |  |  | 2012-08-07 | 2012-08-07 | 70d | 0d |  |  |  |  |

| ID | WBS | Task | Type | Duration | Start | Finish | Predecessors | Baseline start | Baseline finish | Baseline duration | Baseline 1 start | Baseline 1 finish | Total slack | Free slack | Constraint | Baseline cost | % Planejado | % Realizado |
| --- | --- | --- | --- | --- | --- | --- | --- | --- | --- | --- | --- | --- | --- | --- | --- | --- | --- | --- |
| 535 | 5.3.1.5 | **Configurar Relatórios** |  | 2d | 2015-04-09 | 2015-04-10 |  |  |  |  | 2012-08-07 | 2012-08-07 | 70d |  |  |  |  |  |
| 536 | 5.3.1.5.1 | Cópia dos Relatórios da VC - VE |  | 0.5d | 2015-04-09 | 2015-04-09 | 534 |  |  |  | 2012-08-07 | 2012-08-07 | 70d | 0d |  |  |  |  |
| 537 | 5.3.1.5.2 | Escala - Descrição e Pontuação - VE |  | 0.5d | 2015-04-09 | 2015-04-09 | 536 |  |  |  | 2012-08-07 | 2012-08-07 | 70d | 0d |  |  |  |  |
| 538 | 5.3.1.5.3 | Comparativo entre Desempenho na Função e Crenças - VE |  | 1d | 2015-04-10 | 2015-04-10 | 537 |  |  |  | 2012-08-07 | 2012-08-07 | 70d | 0d |  |  |  |  |
| 539 | 5.3.1.6 | **Termo de Aceite Fase 3 - Realização** |  | 0d | 2015-04-10 | 2015-04-10 |  |  |  |  | 2012-08-07 | 2012-08-07 | 70d |  |  |  | 0% | 0% |
| 540 | 5.3.1.6.1 | Onda 1 - Assinatura Fase 3 - Realização - VE | milestone | 0d | 2015-04-10 | 2015-04-10 | 538 |  |  |  | 2012-08-07 | 2012-08-07 | 70d |  |  |  | 0% | 0% |
| 541 | 5.3.2 | **Gestão de Metas VE** |  | 6.5d | 2015-05-26 | 2015-06-03 |  |  |  |  | 2012-08-07 | 2012-08-07 | 35.5d |  |  |  |  |  |
| 542 | 5.3.2.1 | Alteração de label na instância |  | 0.5d | 2015-05-26 | 2015-05-26 | 576 |  |  |  | 2012-08-07 | 2012-08-07 | 35.5d | 0d | start no earlier than 2015-05-26 |  |  |  |
| 543 | 5.3.2.2 | Configurar o mapa de rota |  | 0.5d | 2015-05-26 | 2015-05-26 | 542 |  |  |  | 2012-08-07 | 2012-08-07 | 35.5d | 0d |  |  |  |  |
| 544 | 5.3.2.3 | Configurar Formulários |  | 1d | 2015-05-27 | 2015-05-27 | 543 |  |  |  | 2012-08-07 | 2012-08-07 | 35.5d | 0d |  |  |  |  |
| 545 | 5.3.2.4 | Configurar permissões |  | 0.5d | 2015-05-28 | 2015-05-28 | 544 |  |  |  | 2012-08-07 | 2012-08-07 | 35.5d | 0d |  |  |  |  |
| 546 | 5.3.2.5 | Definir layout para importar a Biblioteca de Metas |  | 0.5d | 2015-05-28 | 2015-05-28 | 545 |  |  |  | 2012-08-07 | 2012-08-07 | 35.5d | 0d |  |  |  |  |
| 547 | 5.3.2.6 | Definir layout para carga de empregados |  | 0.5d | 2015-05-29 | 2015-05-29 | 546 |  |  |  | 2012-08-07 | 2012-08-07 | 35.5d | 0d |  |  |  |  |
| 548 | 5.3.2.7 | Passar para Votorantim informações para carga de fotos |  | 0.5d | 2015-05-29 | 2015-05-29 | 547 |  |  |  | 2012-08-07 | 2012-08-07 | 35.5d | 0d |  |  |  |  |
| 549 | 5.3.2.8 | Fazer a carga de metas |  | 0.5d | 2015-06-01 | 2015-06-01 | 548 |  |  |  | 2012-08-07 | 2012-08-07 | 35.5d | 0d |  |  |  |  |
| 550 | 5.3.2.9 | Fazer a carga de empregados |  | 0.5d | 2015-06-01 | 2015-06-01 | 549 |  |  |  | 2012-08-07 | 2012-08-07 | 35.5d | 0d |  |  |  |  |
| 551 | 5.3.2.10 | Agendar job para carga de fotos |  | 0.5d | 2015-06-02 | 2015-06-02 | 550 |  |  |  | 2012-08-07 | 2012-08-07 | 35.5d | 0d |  |  |  |  |
| 552 | 5.3.2.11 | Configurar Relatórios |  | 1d | 2015-06-02 | 2015-06-03 | 551 |  |  |  | 2012-08-07 | 2012-08-07 | 35.5d | 0d |  |  |  |  |
| 553 | 5.3.2.12 | **Onda 2 - Termo de Aceite - Realização** |  | 0d | 2015-06-03 | 2015-06-03 |  |  |  |  | 2012-08-07 | 2012-08-07 | 35.5d |  |  |  | 0% | 0% |
| 554 | 5.3.2.12.1 | Onda 2 - Assinatura Fase 3 - Realização - VE | milestone | 0d | 2015-06-03 | 2015-06-03 | 552 |  |  |  | 2012-08-07 | 2012-08-07 | 35.5d |  |  |  | 0% | 0% |
| 555 | 5.4 | **Fase 4 - Preparação Final** |  | 57d | 2015-04-16 | 2015-07-10 |  | 2013-11-04 | 2013-11-21 | 13.6d | 2012-08-07 | 2012-08-07 | 10d |  |  | 201.6 |  |  |
| 556 | 5.4.1 | **Testes Funcionais** |  | 37d | 2015-04-16 | 2015-06-12 |  |  |  |  | 2012-08-07 | 2012-08-07 | 30d |  |  |  |  |  |
| 557 | 5.4.1.1 | **Gestão de Competência VE** |  | 2d | 2015-04-16 | 2015-04-17 |  |  |  |  | 2012-08-07 | 2012-08-07 | 65d |  |  |  |  |  |
| 558 | 5.4.1.1.1 | Realizar Testes Funcionais - VE |  | 1d | 2015-04-16 | 2015-04-16 |  |  |  |  | 2012-08-07 | 2012-08-07 | 65d | 0d | start no earlier than 2015-04-16 |  |  |  |
| 559 | 5.4.1.1.2 | Ajustes Testes Funcionais - VE |  | 1d | 2015-04-17 | 2015-04-17 | 558 |  |  |  | 2012-08-07 | 2012-08-07 | 65d | 0d |  |  |  |  |
| 560 | 5.4.1.1.3 | Onda 1 - Entrega Testes Funcionais - VE | milestone | 0d | 2015-04-17 | 2015-04-17 | 559 |  |  |  | 2012-08-07 | 2012-08-07 | 65d |  |  |  | 0% | 0% |

| ID | WBS | Task | Type | Duration | Start | Finish | Predecessors | Baseline 1 start | Baseline 1 finish | Total slack | Free slack | Constraint | % Planejado | % Realizado |
| --- | --- | --- | --- | --- | --- | --- | --- | --- | --- | --- | --- | --- | --- | --- |
| 561 | 5.4.1.2 | **Gestão de Metas VE** |  | 2d | 2015-06-11 | 2015-06-12 |  | 2012-08-07 | 2012-08-07 | 30d |  |  |  |  |
| 562 | 5.4.1.2.1 | Realizar Testes Funcionais - VE |  | 1d | 2015-06-11 | 2015-06-11 |  | 2012-08-07 | 2012-08-07 | 30d | 0d | start no earlier than 2015-06-11 |  |  |
| 563 | 5.4.1.2.2 | Ajustes Testes Funcionais - VE |  | 1d | 2015-06-12 | 2015-06-12 | 562 | 2012-08-07 | 2012-08-07 | 30d | 0d |  |  |  |
| 564 | 5.4.1.2.3 | Onda 2 - Entrega Testes Funcionais - VE | milestone | 0d | 2015-06-12 | 2015-06-12 | 563 | 2012-08-07 | 2012-08-07 | 30d |  |  | 0% | 0% |
| 565 | 5.4.2 | **Testes Unitários** |  | 41d | 2015-04-28 | 2015-06-26 |  | 2012-08-07 | 2012-08-07 | 20d |  |  |  |  |
| 566 | 5.4.2.1 | **Gestão de Competência VE** |  | 3d | 2015-04-28 | 2015-04-30 |  | 2012-08-07 | 2012-08-07 | 35d |  |  |  |  |
| 567 | 5.4.2.1.1 | Realizar Testes Unitários - VE |  | 1d | 2015-04-28 | 2015-04-28 |  | 2012-08-07 | 2012-08-07 | 35d | 0d | start no earlier than 2015-04-28 |  |  |
| 568 | 5.4.2.1.2 | Ajustes Testes Unitários - VE |  | 2d | 2015-04-29 | 2015-04-30 | 567 | 2012-08-07 | 2012-08-07 | 35d | 0d |  |  |  |
| 569 | 5.4.2.1.3 | Onda 1 - Entrega Testes Unitários - VE | milestone | 0d | 2015-04-30 | 2015-04-30 | 568 | 2012-08-07 | 2012-08-07 | 58d |  |  | 0% | 0% |
| 570 | 5.4.2.2 | **Gestão de Metas VE** |  | 4d | 2015-06-23 | 2015-06-26 |  | 2012-08-07 | 2012-08-07 | 0d |  |  |  |  |
| 571 | 5.4.2.2.1 | Realizar Testes Unitários - VE |  | 2d | 2015-06-23 | 2015-06-24 |  | 2012-08-07 | 2012-08-07 | 0d |  | start no earlier than 2015-06-23 |  |  |
| 572 | 5.4.2.2.2 | Ajustes de Testes Unitários - VE |  | 2d | 2015-06-25 | 2015-06-26 | 571 | 2012-08-07 | 2012-08-07 | 0d |  |  |  |  |
| 573 | 5.4.2.2.3 | Onda 2 - Entrega Testes Unitários - VE | milestone | 0d | 2015-06-26 | 2015-06-26 | 572 | 2012-08-07 | 2012-08-07 | 20d |  |  | 0% | 0% |
| 574 | 5.4.3 | **Testes Integrados** |  | 48d | 2015-05-04 | 2015-07-10 |  | 2012-08-07 | 2012-08-07 | 10d |  |  |  |  |
| 575 | 5.4.3.1 | **Gestão de Competência VE** |  | 10d | 2015-05-04 | 2015-05-15 |  | 2012-08-07 | 2012-08-07 | 35d |  |  |  |  |
| 576 | 5.4.3.1.1 | Testes Integrados VE |  | 5d | 2015-05-04 | 2015-05-08 | 568 | 2012-08-07 | 2012-08-07 | 35d | 0d |  |  |  |
| 577 | 5.4.3.1.2 | Ajustes Testes Integrados VE |  | 5d | 2015-05-11 | 2015-05-15 | 576 | 2012-08-07 | 2012-08-07 | 35d | 0d |  |  |  |
| 578 | 5.4.3.1.3 | **Onda 1 - Termo de Aceite Fase 4** |  | 0d | 2015-05-15 | 2015-05-15 |  | 2012-08-07 | 2012-08-07 | 48d |  |  | 0% | 0% |
| 579 | 5.4.3.1.3.1 | Onda 1 - Assinatura Fase 4 - Preparação Final - VE | milestone | 0d | 2015-05-15 | 2015-05-15 | 577 | 2012-08-07 | 2012-08-07 | 48d |  |  | 0% | 0% |
| 580 | 5.4.3.2 | **Gestão de Metas VE** |  | 10d | 2015-06-29 | 2015-07-10 |  | 2012-08-07 | 2012-08-07 | 0d |  |  |  |  |
| 581 | 5.4.3.2.1 | Testes Integrados VE |  | 5d | 2015-06-29 | 2015-07-03 | 572 | 2012-08-07 | 2012-08-07 | 0d |  |  |  |  |
| 582 | 5.4.3.2.2 | Ajustes Testes Integrados VE |  | 5d | 2015-07-06 | 2015-07-10 | 581 | 2012-08-07 | 2012-08-07 | 0d |  |  |  |  |
| 583 | 5.4.3.2.3 | **Termo de Aceite Fase 4** |  | 0d | 2015-07-10 | 2015-07-10 |  | 2012-08-07 | 2012-08-07 | 10d |  |  | 0% | 0% |
| 584 | 5.4.3.2.3.1 | Onda 2 - Assinatura Fase 4 - Preparação Final - VE | milestone | 0d | 2015-07-10 | 2015-07-10 | 582 | 2012-08-07 | 2012-08-07 | 10d |  |  | 0% | 0% |

| ID | WBS | Task | Type | Duration | Start | Finish | Predecessors | Baseline start | Baseline finish | Baseline duration | Baseline 1 start | Baseline 1 finish | Total slack | Free slack | Baseline cost | % Planejado | % Realizado |
| --- | --- | --- | --- | --- | --- | --- | --- | --- | --- | --- | --- | --- | --- | --- | --- | --- | --- |
| 585 | 5.5 | **Fase 5 - Go Live e Operacao Assistida** |  | 48d | 2015-05-18 | 2015-07-24 |  | 2013-11-22 | 2013-12-24 | 22d | 2012-08-07 | 2012-08-07 | 0d |  | 176 |  |  |
| 586 | 5.5.1 | **Go Live - Onda 1 - Gestão de Competência** |  | 13d | 2015-05-18 | 2015-06-03 |  |  |  |  | 2012-08-07 | 2012-08-07 | 35d |  |  |  |  |
| 587 | 5.5.1.1 | Treinamento |  | 5d | 2015-05-18 | 2015-05-22 | 577 |  |  |  | 2012-08-07 | 2012-08-07 | 35d | 0d |  |  |  |
| 588 | 5.5.1.2 | Cutover |  | 5d | 2015-05-25 | 2015-05-29 | 587 |  |  |  | 2012-08-07 | 2012-08-07 | 35d | 0d |  |  |  |
| 589 | 5.5.1.3 | Onda 1 - Go Live | milestone | 0d | 2015-05-29 | 2015-05-29 | 588 |  |  |  | 2012-08-07 | 2012-08-07 | 38d |  |  | 0% | 0% |
| 590 | 5.5.1.4 | Operação Assistida |  | 3d | 2015-06-01 | 2015-06-03 | 588 |  |  |  | 2012-08-07 | 2012-08-07 | 35d |  |  |  |  |
| 591 | 5.5.2 | **Go Live - Onda 2 - Gestão de Metas** |  | 10d | 2015-07-13 | 2015-07-24 |  |  |  |  | 2012-08-07 | 2012-08-07 | 0d |  |  |  |  |
| 592 | 5.5.2.1 | Treinamento |  | 5d | 2015-07-13 | 2015-07-17 | 582 |  |  |  | 2012-08-07 | 2012-08-07 | 5d |  |  |  |  |
| 593 | 5.5.2.2 | Cutover |  | 5d | 2015-07-13 | 2015-07-17 | 582 |  |  |  | 2012-08-07 | 2012-08-07 | 0d |  |  |  |  |
| 594 | 5.5.2.3 | Onda 2 - Go Live | milestone | 0d | 2015-07-17 | 2015-07-17 | 593 |  |  |  | 2012-08-07 | 2012-08-07 | 5d |  |  | 0% | 0% |
| 595 | 5.5.2.4 | Operação Assistida |  | 5d | 2015-07-20 | 2015-07-24 | 593 |  |  |  | 2012-08-07 | 2012-08-07 | 0d |  |  |  |  |
